# 0580-Security Technology Salutation after eliminating Passenger Checking Roles

Schedule from Primavera P6, 2026-11-01 to 2029-10-31, data date 2026-11-01, costs in SAR.
Must finish by 2029-10-31

## Calendars

- KSA Sun-Thu 8h (official holidays): Mon-Thu 08:00-12:00, 13:00-17:00; Fri-Sat off; Sun 08:00-12:00, 13:00-17:00. Exceptions (off unless hours are given): 2027-02-22, 2027-03-07 to 2027-03-11, 2027-05-16 to 2027-05-20, 2027-09-23, 2028-02-20 to 2028-02-24, 2028-04-30 to 2028-05-04, 2029-02-11 to 2029-02-15, 2029-02-22, 2029-04-22 to 2029-04-26, 2029-09-23.

## Resources

| Resource | Group | Unit | Rate |
| --- | --- | --- | --- |
| Contract cost (BOQ x payment milestones) | material | SAR |  |
| Progress weight (fair EPC distribution, SAR value) | material | SAR | 1 |

## Schedule

| ID | WBS | Activity | Type | Duration | Start | Finish | Predecessors | Total float | Free float | Resources | Cost | EPC phase | Area | Station | Railway | Discipline | Responsibility | Payment milestone | Design stage | Submittal or approval | Priority | Programme phase |
| --- | --- | --- | --- | --- | --- | --- | --- | --- | --- | --- | --- | --- | --- | --- | --- | --- | --- | --- | --- | --- | --- | --- |
|  | PM | **Project Management and Mobilization** |  |  | 2026-11-01 | 2029-10-31 |  |  |  |  |  |  |  |  |  |  |  |  |  |  |  |  |
|  | MOB | **Mobilization and baseline programme** |  |  | 2026-11-01 | 2027-01-14 |  |  |  |  |  |  |  |  |  |  |  |  |  |  |  |  |
| PRJ-A1010 |  | Performance security, insurance and key personnel approval |  | 10d | 2026-11-01 | 2026-11-12 | PRJ-M0000 | 335d | 20d | Contract cost (BOQ x payment milestones) [1860000 SAR]; Progress weight (fair EPC distribution, SAR value) [248000 SAR] | 248,000 | PMG | PRJ | PRJ | ALL | PM | ETECHS | MS1 | - | - | Standard | MOB |
| PRJ-A1020 |  | Initial baseline programme (Primavera) covering mobilization and survey |  | 7d | 2026-11-01 | 2026-11-09 | PRJ-M0000 | 323d | 0d | Contract cost (BOQ x payment milestones) [1240000 SAR]; Progress weight (fair EPC distribution, SAR value) [124000 SAR] | 124,000 | PMG | PRJ | PRJ | ALL | PM | ETECHS | MS1 | - | - | Standard | MOB |
| PRJ-A1040 |  | Mobilization: site establishment, offices, personnel and tools |  | 25d | 2026-11-08 | 2026-12-10 | PRJ-M0000 FS+5d | 315d | 0d | Contract cost (BOQ x payment milestones) [5579999 SAR]; Progress weight (fair EPC distribution, SAR value) [496000 SAR] | 496,000 | PMG | PRJ | PRJ | ALL | PM | ETECHS | MS1 | - | - | Standard | MOB |
| PRJ-A1050 |  | Mobilization submittals: QC programme and ITP, HSE, security, procurement and shipping plan |  | 20d | 2026-11-08 | 2026-12-03 | PRJ-M0000 FS+5d | 320d | 5d | Contract cost (BOQ x payment milestones) [3719999 SAR]; Progress weight (fair EPC distribution, SAR value) [372000 SAR] | 372,000 | PMG | PRJ | PRJ | ALL | PM | ETECHS | MS1 | - | Submittal | Standard | MOB |
| PRJ-A1030 |  | SAR review and approval of initial baseline |  | 15d | 2026-11-10 | 2026-11-30 | PRJ-A1020 | 323d | 8d | Contract cost (BOQ x payment milestones); Progress weight (fair EPC distribution, SAR value) [124000 SAR] | 124,000 | PMG | PRJ | PRJ | ALL | PM | SAR | MS1 | - | Approval | Standard | MOB |
| PRJ-A2010 |  | Detailed baseline programme (within 21 days after survey) |  | 15d | 2026-12-06 | 2026-12-24 | NRY-E1010, HMK-E1010, ERY-E1010 | 22d | 0d | Contract cost (BOQ x payment milestones); Progress weight (fair EPC distribution, SAR value) [186000 SAR] | 186,000 | PMG | PRJ | PRJ | ALL | PM | ETECHS | - | - | Submittal | Standard | PMG |
| PRJ-A2020 |  | SAR review and approval of detailed baseline |  | 15d | 2026-12-27 | 2027-01-14 | PRJ-A2010 | 22d | 0d | Contract cost (BOQ x payment milestones); Progress weight (fair EPC distribution, SAR value) [124000 SAR] | 124,000 | PMG | PRJ | PRJ | ALL | PM | SAR | - | - | Approval | Standard | PMG |
|  | MST | **Contract milestones** |  |  | 2026-11-01 | 2029-10-31 |  |  |  |  |  |  |  |  |  |  |  |  |  |  |  |  |
| PRJ-M0000 |  | Notice to Proceed - project start (1 Nov 2026, editable) | milestone | 0d | 2026-11-01 | 2026-11-01 |  | 0d |  |  |  | MS | PRJ | PRJ | ALL | PM | SAR | - | - | - | Standard | MS |
| PRJ-M1100 |  | MS1 Mobilization complete (payment milestone 20%) | milestone | 0d | 2026-12-10 | 2026-12-10 | PRJ-A1010, PRJ-A1030, PRJ-A1040, PRJ-A1050 | 315d | 15d |  |  | MS | PRJ | PRJ | ALL | PM | SAR | MS1 | - | - | Standard | MS |
| PRJ-M1150 |  | Mobilization and site survey complete (end of month 2) | milestone | 0d | 2026-12-31 | 2026-12-31 | PRJ-M1100, PRJ-M0000 FS+45d, NRY-E1020, HMK-E1020, ERY-E1020 | 300d | 0d |  |  | MS | PRJ | PRJ | ALL | PM | ETECHS | - | - | - | Standard | MS |
| PRJ-M2100 |  | Detailed baseline programme approved | milestone | 0d | 2027-01-14 | 2027-01-14 | PRJ-A2020 | 22d | 0d |  |  | MS | PRJ | PRJ | ALL | PM | SAR | - | - | - | Standard | MS |
| PRJ-M1250 |  | Design complete - priority stations (end of month 6) | milestone | 0d | 2027-04-29 | 2027-04-29 | NRY-E1100, NRY-E1120, HMK-E1100, HMK-E1120, ERY-E1100, ERY-E1120, NRY-POC4100 | 626d |  |  |  | MS | PRJ | PRJ | ALL | PM | SAR | - | - | - | Standard | MS |
| PRJ-MX99 |  | Contract completion - end of 36-month term | milestone | 0d | 2029-10-31 | 2029-10-31 | PRJ-C1010, PRJ-M1250, PRJ-M0000 FS+750d | 0d |  |  |  | MS | PRJ | PRJ | ALL | PM | SAR | - | - | - | Standard | MS |
|  | CLO | **Closeout** |  |  | 2029-09-17 | 2029-10-01 |  |  |  |  |  |  |  |  |  |  |  |  |  |  |  |  |
| PRJ-C1010 |  | Contract closeout pack and handover documentation |  | 10d | 2029-09-17 | 2029-10-01 | NRY-T3100, HMK-T3100, ERY-T3100, HJD-T3100, EDM-T3100, NQS-T3100, EHF-T3100, NMJ-T3100, HKA-T3100, HMD-T3100, EAB-T3100, NHL-T3100, NJF-T3100, NQR-T3100 | 22d |  | Contract cost (BOQ x payment milestones); Progress weight (fair EPC distribution, SAR value) [806620 SAR] | 806,620 | PMG | PRJ | PRJ | ALL | PM | ETECHS | - | - | Submittal | Standard | PMG |
|  | ENG | **Engineering** |  |  | 2026-11-08 | 2029-08-26 |  |  |  |  |  |  |  |  |  |  |  |  |  |  |  |  |
|  | NRY | **Riyadh (Thumamah) (NSR)** |  |  | 2026-11-08 | 2028-01-17 |  |  |  |  |  |  |  |  |  |  |  |  |  |  |  |  |
| NRY-POC4100 |  | POC approved - Riyadh (Thumamah) | milestone | 0d | 2027-03-25 | 2027-03-25 | NRY-POC4020 | 445d | 25d |  |  | MS | NSR | NRY | NSR | DOCS | SAR | - | POC | - | Priority 1 | POC |
| NRY-E1200 |  | MS2 Engineering submittal complete (10%) - Riyadh (Thumamah) | milestone | 0d | 2027-04-08 | 2027-04-08 | NRY-E1090, NRY-E1110, NRY-POC3020 | 435d | 15d |  |  | MS | NSR | NRY | NSR | DOCS | ETECHS | MS2 | - | - | Priority 1 | MS |
| NRY-E1210 |  | MS3 Engineering approved by SAR (10%) - Riyadh (Thumamah) | milestone | 0d | 2027-04-29 | 2027-04-29 | NRY-E1020, NRY-E1040, NRY-E1060, NRY-E1080, NRY-E1100, NRY-E1120, NRY-E1200, NRY-POC4100 | 420d | 0d |  |  | MS | NSR | NRY | NSR | DOCS | SAR | MS3 | - | - | Priority 1 | MS |
|  | SRV | **Site survey and as-found verification** |  |  | 2026-11-08 | 2026-12-10 |  |  |  |  |  |  |  |  |  |  |  |  |  |  |  |  |
|  | SUB | **Submittal** |  |  | 2026-11-08 | 2026-11-19 |  |  |  |  |  |  |  |  |  |  |  |  |  |  |  |  |
| NRY-E1010 |  | Survey: submittal of site survey and as-found report - Riyadh (Thumamah) |  | 10d | 2026-11-08 | 2026-11-19 | PRJ-M0000 FS+5d | 32d | 0d | Contract cost (BOQ x payment milestones) [14793 SAR]; Progress weight (fair EPC distribution, SAR value) [11780 SAR] | 11,780 | ENG | NSR | NRY | NSR | DOCS | ETECHS | MS2 | Survey | Submittal | Priority 1 | MOB |

| ID | WBS | Activity | Duration | Start | Finish | Predecessors | Total float | Free float | Resources | Cost | Area | Station | Railway | Priority | Responsibility | Design stage | Submittal or approval | EPC phase | Discipline | Programme phase | Payment milestone |
| --- | --- | --- | --- | --- | --- | --- | --- | --- | --- | --- | --- | --- | --- | --- | --- | --- | --- | --- | --- | --- | --- |
|  | APR | **Approval** |  | 2026-11-22 | 2026-12-10 |  |  |  |  |  |  |  |  |  |  |  |  |  |  |  |  |
| NRY-E1020 |  | Survey: SAR approval of survey report - Riyadh (Thumamah) | 15d | 2026-11-22 | 2026-12-10 | NRY-E1010 | 315d | 15d | Contract cost (BOQ x payment milestones) [14793 SAR]; Progress weight (fair EPC distribution, SAR value) [17360 SAR] | 17,360 | NSR | NRY | NSR | Priority 1 | SAR | Survey | Approval | ENG | DOCS | MOB | MS3 |
|  | CNC | **Concept design** |  | 2027-01-03 | 2027-02-04 |  |  |  |  |  |  |  |  |  |  |  |  |  |  |  |  |
|  | SUB | **Submittal** |  | 2027-01-03 | 2027-01-14 |  |  |  |  |  |  |  |  |  |  |  |  |  |  |  |  |
| NRY-E1030 |  | Concept design: submittal - Riyadh (Thumamah) | 10d | 2027-01-03 | 2027-01-14 | NRY-E1020, PRJ-M1150 | 420d | 0d | Contract cost (BOQ x payment milestones) [29587 SAR]; Progress weight (fair EPC distribution, SAR value) [14260 SAR] | 14,260 | NSR | NRY | NSR | Priority 1 | ETECHS | Concept | Submittal | ENG | DOCS | DES | MS2 |
|  | APR | **Approval** |  | 2027-01-17 | 2027-02-04 |  |  |  |  |  |  |  |  |  |  |  |  |  |  |  |  |
| NRY-E1040 |  | Concept design: SAR review and approval - Riyadh (Thumamah) | 15d | 2027-01-17 | 2027-02-04 | NRY-E1030 | 474d | 54d | Contract cost (BOQ x payment milestones) [29587 SAR]; Progress weight (fair EPC distribution, SAR value) [21700 SAR] | 21,700 | NSR | NRY | NSR | Priority 1 | SAR | Concept | Approval | ENG | DOCS | DES | MS3 |
|  | PRE | **Preliminary (schematic) design** |  | 2027-01-17 | 2027-03-01 |  |  |  |  |  |  |  |  |  |  |  |  |  |  |  |  |
|  | SUB | **Submittal** |  | 2027-01-17 | 2027-02-07 |  |  |  |  |  |  |  |  |  |  |  |  |  |  |  |  |
| NRY-E1050 |  | Preliminary design: submittal - Riyadh (Thumamah) | 16d | 2027-01-17 | 2027-02-07 | NRY-E1030 | 420d | 0d | Contract cost (BOQ x payment milestones) [59173 SAR]; Progress weight (fair EPC distribution, SAR value) [33480 SAR] | 33,480 | NSR | NRY | NSR | Priority 1 | ETECHS | Preliminary | Submittal | ENG | DOCS | DES | MS2 |
|  | APR | **Approval** |  | 2027-02-08 | 2027-03-01 |  |  |  |  |  |  |  |  |  |  |  |  |  |  |  |  |
| NRY-E1060 |  | Preliminary design: SAR review and approval - Riyadh (Thumamah) | 15d | 2027-02-08 | 2027-03-01 | NRY-E1050 | 458d | 38d | Contract cost (BOQ x payment milestones) [59173 SAR]; Progress weight (fair EPC distribution, SAR value) [31620 SAR] | 31,620 | NSR | NRY | NSR | Priority 1 | SAR | Preliminary | Approval | ENG | DOCS | DES | MS3 |
|  | DET | **Detailed design** |  | 2027-02-08 | 2027-04-13 |  |  |  |  |  |  |  |  |  |  |  |  |  |  |  |  |
|  | SUB | **Submittal** |  | 2027-02-08 | 2027-03-23 |  |  |  |  |  |  |  |  |  |  |  |  |  |  |  |  |
| NRY-E1070 |  | Detailed design: submittal (drawings, BOQ, data sheets) - Riyadh (Thumamah) | 26d | 2027-02-08 | 2027-03-23 | NRY-E1050 | 420d | 0d | Contract cost (BOQ x payment milestones) [118347 SAR]; Progress weight (fair EPC distribution, SAR value) [68820 SAR] | 68,820 | NSR | NRY | NSR | Priority 1 | ETECHS | Detailed | Submittal | ENG | DOCS | DES | MS2 |
|  | APR | **Approval** |  | 2027-03-24 | 2027-04-13 |  |  |  |  |  |  |  |  |  |  |  |  |  |  |  |  |
| NRY-E1080 |  | Detailed design: SAR review and approval - Riyadh (Thumamah) | 15d | 2027-03-24 | 2027-04-13 | NRY-E1070 | 432d | 12d | Contract cost (BOQ x payment milestones) [118347 SAR]; Progress weight (fair EPC distribution, SAR value) [39680 SAR] | 39,680 | NSR | NRY | NSR | Priority 1 | SAR | Detailed | Approval | ENG | DOCS | DES | MS3 |
|  | IFC | **IFC and shop drawings** |  | 2027-03-24 | 2027-04-29 |  |  |  |  |  |  |  |  |  |  |  |  |  |  |  |  |
|  | SUB | **Submittal** |  | 2027-03-24 | 2027-04-08 |  |  |  |  |  |  |  |  |  |  |  |  |  |  |  |  |
| NRY-E1090 |  | IFC and shop drawings: submittal - Riyadh (Thumamah) | 12d | 2027-03-24 | 2027-04-08 | NRY-E1070 | 420d | 0d | Contract cost (BOQ x payment milestones) [59173 SAR]; Progress weight (fair EPC distribution, SAR value) [29140 SAR] | 29,140 | NSR | NRY | NSR | Priority 1 | ETECHS | IFC | Submittal | ENG | DOCS | DES | MS2 |
|  | APR | **Approval** |  | 2027-04-11 | 2027-04-29 |  |  |  |  |  |  |  |  |  |  |  |  |  |  |  |  |
| NRY-E1100 |  | IFC and shop drawings: SAR approval and release - Riyadh (Thumamah) | 15d | 2027-04-11 | 2027-04-29 | NRY-E1090 | 420d | 0d | Contract cost (BOQ x payment milestones) [59173 SAR]; Progress weight (fair EPC distribution, SAR value) [35960 SAR] | 35,960 | NSR | NRY | NSR | Priority 1 | SAR | IFC | Approval | ENG | DOCS | DES | MS3 |
|  | HCS | **HCIS documentation (Stage 3 and 4)** |  | 2027-02-23 | 2027-04-29 |  |  |  |  |  |  |  |  |  |  |  |  |  |  |  |  |
|  | SUB | **Submittal** |  | 2027-02-23 | 2027-04-08 |  |  |  |  |  |  |  |  |  |  |  |  |  |  |  |  |
| NRY-E1110 |  | HCIS Stage 3 and 4 documents: preparation - Riyadh (Thumamah) | 28d | 2027-02-23 | 2027-04-08 | NRY-E1050 FS+10d, NRY-E1090 FF | 420d | 0d | Contract cost (BOQ x payment milestones) [14793 SAR]; Progress weight (fair EPC distribution, SAR value) [14260 SAR] | 14,260 | NSR | NRY | NSR | Priority 1 | ETECHS | HCIS | Submittal | ENG | DOCS | DES | MS2 |

| ID | WBS | Activity | Type | Duration | Start | Finish | Predecessors | Total float | Free float | Resources | Cost | Area | Station | Railway | Priority | Responsibility | Design stage | Submittal or approval | EPC phase | Discipline | Programme phase | Payment milestone |
| --- | --- | --- | --- | --- | --- | --- | --- | --- | --- | --- | --- | --- | --- | --- | --- | --- | --- | --- | --- | --- | --- | --- |
|  | APR | **Approval** |  |  | 2027-04-11 | 2027-04-29 |  |  |  |  |  |  |  |  |  |  |  |  |  |  |  |  |
| NRY-E1120 |  | HCIS Stage 3 and 4 documents: SAR final review and HCIS submission - Riyadh (Thumamah) |  | 15d | 2027-04-11 | 2027-04-29 | NRY-E1110 | 420d | 0d | Contract cost (BOQ x payment milestones) [14793 SAR]; Progress weight (fair EPC distribution, SAR value) [7440 SAR] | 7,440 | NSR | NRY | NSR | Priority 1 | SAR/HCIS | HCIS | Approval | ENG | DOCS | DES | MS3 |
|  | ASB | **As-built and O&M documentation** |  |  | 2027-11-16 | 2028-01-17 |  |  |  |  |  |  |  |  |  |  |  |  |  |  |  |  |
|  | SUB | **Submittal** |  |  | 2027-11-16 | 2027-12-27 |  |  |  |  |  |  |  |  |  |  |  |  |  |  |  |  |
| NRY-E1130 |  | As-built and O&M documentation: submittal - Riyadh (Thumamah) |  | 30d | 2027-11-16 | 2027-12-27 | NRY-C2100 | 420d | 0d | Contract cost (BOQ x payment milestones) [52212 SAR]; Progress weight (fair EPC distribution, SAR value) [24180 SAR] | 24,180 | NSR | NRY | NSR | Priority 1 | ETECHS | As-built | Submittal | ENG | DOCS | COM | MS7 |
|  | APR | **Approval** |  |  | 2027-12-28 | 2028-01-17 |  |  |  |  |  |  |  |  |  |  |  |  |  |  |  |  |
| NRY-E1140 |  | As-built and O&M documentation: SAR review and approval - Riyadh (Thumamah) |  | 15d | 2027-12-28 | 2028-01-17 | NRY-E1130 | 420d | 0d | Contract cost (BOQ x payment milestones) [17404 SAR]; Progress weight (fair EPC distribution, SAR value) [11780 SAR] | 11,780 | NSR | NRY | NSR | Priority 1 | SAR | As-built | Approval | ENG | DOCS | COM | MS7 |
|  | POC | **Proof of concept (POC)** |  |  | 2026-11-22 | 2027-03-25 |  |  |  |  |  |  |  |  |  |  |  |  |  |  |  |  |
|  | PLN | **POC plan and test procedure** |  |  | 2026-11-22 | 2026-12-21 |  |  |  |  |  |  |  |  |  |  |  |  |  |  |  |  |
| NRY-POC1010 |  | POC plan and test procedure: submittal - Riyadh (Thumamah) |  | 7d | 2026-11-22 | 2026-11-30 | NRY-E1010 | 445d | 0d | Contract cost (BOQ x payment milestones) [5221 SAR]; Progress weight (fair EPC distribution, SAR value) [3100 SAR] | 3,100 | NSR | NRY | NSR | Priority 1 | ETECHS | POC | Submittal | ENG | DOCS | POC | MS2 |
| NRY-POC1020 |  | POC plan: SAR and consultant review and approval (21 days) - Riyadh (Thumamah) |  | 15d | 2026-12-01 | 2026-12-21 | NRY-POC1010 | 445d | 0d | Contract cost (BOQ x payment milestones) [13923 SAR]; Progress weight (fair EPC distribution, SAR value) [6200 SAR] | 6,200 | NSR | NRY | NSR | Priority 1 | SAR | POC | Approval | ENG | DOCS | POC | MS3 |
|  | NET | **POC network** |  |  | 2026-12-22 | 2027-01-04 |  |  |  |  |  |  |  |  |  |  |  |  |  |  |  |  |
| NRY-POC2010 |  | POC network: install test bed and fibre/IP backbone - Riyadh (Thumamah) |  | 10d | 2026-12-22 | 2027-01-04 | NRY-POC1020 | 445d | 0d | Contract cost (BOQ x payment milestones) [6962 SAR]; Progress weight (fair EPC distribution, SAR value) [4340 SAR] | 4,340 | NSR | NRY | NSR | Priority 1 | ETECHS | POC | - | ENG | UPSNET | POC | MS2 |
|  | CAM | **POC CCTV** |  |  | 2027-01-05 | 2027-01-25 |  |  |  |  |  |  |  |  |  |  |  |  |  |  |  |  |
| NRY-POC2020 |  | POC CCTV: install and configure demonstration cameras and analytics - Riyadh (Thumamah) |  | 15d | 2027-01-05 | 2027-01-25 | NRY-POC2010 | 445d | 0d | Contract cost (BOQ x payment milestones) [10442 SAR]; Progress weight (fair EPC distribution, SAR value) [6200 SAR] | 6,200 | NSR | NRY | NSR | Priority 1 | ETECHS | POC | - | ENG | CCTV | POC | MS2 |
|  | INS | **POC inspection and access control** |  |  | 2027-01-05 | 2027-01-25 |  |  |  |  |  |  |  |  |  |  |  |  |  |  |  |  |
| NRY-POC2030 |  | POC inspection and access control: install and configure demonstration points - Riyadh (Thumamah) |  | 15d | 2027-01-05 | 2027-01-25 | NRY-POC2010 | 445d | 0d | Contract cost (BOQ x payment milestones) [10442 SAR]; Progress weight (fair EPC distribution, SAR value) [6200 SAR] | 6,200 | NSR | NRY | NSR | Priority 1 | ETECHS | POC | - | ENG | ACC | POC | MS2 |
|  | TST | **POC integrated test, inspection and approval** |  |  | 2027-01-26 | 2027-03-25 |  |  |  |  |  |  |  |  |  |  |  |  |  |  |  |  |
| NRY-POC3010 |  | POC integrated testing and demonstration (cameras, inspection, network) - Riyadh (Thumamah) |  | 10d | 2027-01-26 | 2027-02-08 | NRY-POC2020, NRY-POC2030 | 445d | 0d | Contract cost (BOQ x payment milestones) [12183 SAR]; Progress weight (fair EPC distribution, SAR value) [4340 SAR] | 4,340 | NSR | NRY | NSR | Priority 1 | ETECHS | POC | - | ENG | TC | POC | MS2 |
| NRY-POC3020 |  | POC test report: submittal - Riyadh (Thumamah) |  | 5d | 2027-02-09 | 2027-02-15 | NRY-POC3010 | 445d | 0d | Contract cost (BOQ x payment milestones) [6962 SAR]; Progress weight (fair EPC distribution, SAR value) [1860 SAR] | 1,860 | NSR | NRY | NSR | Priority 1 | ETECHS | POC | Submittal | ENG | DOCS | POC | MS2 |
| NRY-POC4010 |  | POC site inspection and witnessing with consultant - Riyadh (Thumamah) |  | 10d | 2027-02-16 | 2027-03-02 | NRY-POC3020 | 445d | 0d | Contract cost (BOQ x payment milestones) [17404 SAR]; Progress weight (fair EPC distribution, SAR value) [4340 SAR] | 4,340 | NSR | NRY | NSR | Priority 1 | SAR | POC | Approval | ENG | TC | POC | MS3 |
| NRY-POC4020 |  | POC approval by SAR and consultant (inspection and approval within one month) - Riyadh (Thumamah) |  | 12d | 2027-03-03 | 2027-03-25 | NRY-POC4010 | 445d | 0d | Contract cost (BOQ x payment milestones) [20885 SAR]; Progress weight (fair EPC distribution, SAR value) [4960 SAR] | 4,960 | NSR | NRY | NSR | Priority 1 | SAR | POC | Approval | ENG | DOCS | POC | MS3 |
|  | HMK | **Makkah (HHR)** |  |  | 2026-11-08 | 2028-07-17 |  |  |  |  |  |  |  |  |  |  |  |  |  |  |  |  |
| HMK-E1200 |  | MS2 Engineering submittal complete (10%) - Makkah | milestone | 0d | 2027-04-08 | 2027-04-08 | HMK-E1090, HMK-E1110 | 315d | 15d |  |  | HHR | HMK | HHR | Priority 1 | ETECHS | - | - | MS | DOCS | MS | MS2 |
| HMK-E1210 |  | MS3 Engineering approved by SAR (10%) - Makkah | milestone | 0d | 2027-04-29 | 2027-04-29 | HMK-E1020, HMK-E1040, HMK-E1060, HMK-E1080, HMK-E1100, HMK-E1120, HMK-E1200 | 300d | 0d |  |  | HHR | HMK | HHR | Priority 1 | SAR | - | - | MS | DOCS | MS | MS3 |

| ID | WBS | Activity | Duration | Start | Finish | Predecessors | Total float | Free float | Resources | Cost | Area | Station | Railway | Priority | Responsibility | Design stage | Submittal or approval | EPC phase | Discipline | Programme phase | Payment milestone |
| --- | --- | --- | --- | --- | --- | --- | --- | --- | --- | --- | --- | --- | --- | --- | --- | --- | --- | --- | --- | --- | --- |
|  | SRV | **Site survey and as-found verification** |  | 2026-11-08 | 2026-12-24 |  |  |  |  |  |  |  |  |  |  |  |  |  |  |  |  |
|  | SUB | **Submittal** |  | 2026-11-08 | 2026-12-03 |  |  |  |  |  |  |  |  |  |  |  |  |  |  |  |  |
| HMK-E1010 |  | Survey: submittal of site survey and as-found report - Makkah | 20d | 2026-11-08 | 2026-12-03 | PRJ-M0000 FS+5d | 22d | 0d | Contract cost (BOQ x payment milestones) [48550 SAR]; Progress weight (fair EPC distribution, SAR value) [50840 SAR] | 50,840 | HHR | HMK | HHR | Priority 1 | ETECHS | Survey | Submittal | ENG | DOCS | MOB | MS2 |
|  | APR | **Approval** |  | 2026-12-06 | 2026-12-24 |  |  |  |  |  |  |  |  |  |  |  |  |  |  |  |  |
| HMK-E1020 |  | Survey: SAR approval of survey report - Makkah | 15d | 2026-12-06 | 2026-12-24 | HMK-E1010 | 305d | 5d | Contract cost (BOQ x payment milestones) [48550 SAR]; Progress weight (fair EPC distribution, SAR value) [38440 SAR] | 38,440 | HHR | HMK | HHR | Priority 1 | SAR | Survey | Approval | ENG | DOCS | MOB | MS3 |
|  | CNC | **Concept design** |  | 2027-01-03 | 2027-02-04 |  |  |  |  |  |  |  |  |  |  |  |  |  |  |  |  |
|  | SUB | **Submittal** |  | 2027-01-03 | 2027-01-14 |  |  |  |  |  |  |  |  |  |  |  |  |  |  |  |  |
| HMK-E1030 |  | Concept design: submittal - Makkah | 10d | 2027-01-03 | 2027-01-14 | HMK-E1020, PRJ-M1150 | 300d | 0d | Contract cost (BOQ x payment milestones) [97101 SAR]; Progress weight (fair EPC distribution, SAR value) [44640 SAR] | 44,640 | HHR | HMK | HHR | Priority 1 | ETECHS | Concept | Submittal | ENG | DOCS | DES | MS2 |
|  | APR | **Approval** |  | 2027-01-17 | 2027-02-04 |  |  |  |  |  |  |  |  |  |  |  |  |  |  |  |  |
| HMK-E1040 |  | Concept design: SAR review and approval - Makkah | 15d | 2027-01-17 | 2027-02-04 | HMK-E1030 | 354d | 54d | Contract cost (BOQ x payment milestones) [97101 SAR]; Progress weight (fair EPC distribution, SAR value) [66960 SAR] | 66,960 | HHR | HMK | HHR | Priority 1 | SAR | Concept | Approval | ENG | DOCS | DES | MS3 |
|  | PRE | **Preliminary (schematic) design** |  | 2027-01-17 | 2027-03-01 |  |  |  |  |  |  |  |  |  |  |  |  |  |  |  |  |
|  | SUB | **Submittal** |  | 2027-01-17 | 2027-02-07 |  |  |  |  |  |  |  |  |  |  |  |  |  |  |  |  |
| HMK-E1050 |  | Preliminary design: submittal - Makkah | 16d | 2027-01-17 | 2027-02-07 | HMK-E1030 | 300d | 0d | Contract cost (BOQ x payment milestones) [194202 SAR]; Progress weight (fair EPC distribution, SAR value) [104160 SAR] | 104,160 | HHR | HMK | HHR | Priority 1 | ETECHS | Preliminary | Submittal | ENG | DOCS | DES | MS2 |
|  | APR | **Approval** |  | 2027-02-08 | 2027-03-01 |  |  |  |  |  |  |  |  |  |  |  |  |  |  |  |  |
| HMK-E1060 |  | Preliminary design: SAR review and approval - Makkah | 15d | 2027-02-08 | 2027-03-01 | HMK-E1050 | 338d | 38d | Contract cost (BOQ x payment milestones) [194202 SAR]; Progress weight (fair EPC distribution, SAR value) [97340 SAR] | 97,340 | HHR | HMK | HHR | Priority 1 | SAR | Preliminary | Approval | ENG | DOCS | DES | MS3 |
|  | DET | **Detailed design** |  | 2027-02-08 | 2027-04-13 |  |  |  |  |  |  |  |  |  |  |  |  |  |  |  |  |
|  | SUB | **Submittal** |  | 2027-02-08 | 2027-03-23 |  |  |  |  |  |  |  |  |  |  |  |  |  |  |  |  |
| HMK-E1070 |  | Detailed design: submittal (drawings, BOQ, data sheets) - Makkah | 26d | 2027-02-08 | 2027-03-23 | HMK-E1050 | 300d | 0d | Contract cost (BOQ x payment milestones) [388404 SAR]; Progress weight (fair EPC distribution, SAR value) [212660 SAR] | 212,660 | HHR | HMK | HHR | Priority 1 | ETECHS | Detailed | Submittal | ENG | DOCS | DES | MS2 |
|  | APR | **Approval** |  | 2027-03-24 | 2027-04-13 |  |  |  |  |  |  |  |  |  |  |  |  |  |  |  |  |
| HMK-E1080 |  | Detailed design: SAR review and approval - Makkah | 15d | 2027-03-24 | 2027-04-13 | HMK-E1070 | 312d | 12d | Contract cost (BOQ x payment milestones) [388404 SAR]; Progress weight (fair EPC distribution, SAR value) [122760 SAR] | 122,760 | HHR | HMK | HHR | Priority 1 | SAR | Detailed | Approval | ENG | DOCS | DES | MS3 |
|  | IFC | **IFC and shop drawings** |  | 2027-03-24 | 2027-04-29 |  |  |  |  |  |  |  |  |  |  |  |  |  |  |  |  |
|  | SUB | **Submittal** |  | 2027-03-24 | 2027-04-08 |  |  |  |  |  |  |  |  |  |  |  |  |  |  |  |  |
| HMK-E1090 |  | IFC and shop drawings: submittal - Makkah | 12d | 2027-03-24 | 2027-04-08 | HMK-E1070 | 300d | 0d | Contract cost (BOQ x payment milestones) [194202 SAR]; Progress weight (fair EPC distribution, SAR value) [89280 SAR] | 89,280 | HHR | HMK | HHR | Priority 1 | ETECHS | IFC | Submittal | ENG | DOCS | DES | MS2 |
|  | APR | **Approval** |  | 2027-04-11 | 2027-04-29 |  |  |  |  |  |  |  |  |  |  |  |  |  |  |  |  |
| HMK-E1100 |  | IFC and shop drawings: SAR approval and release - Makkah | 15d | 2027-04-11 | 2027-04-29 | HMK-E1090 | 300d | 0d | Contract cost (BOQ x payment milestones) [194202 SAR]; Progress weight (fair EPC distribution, SAR value) [111600 SAR] | 111,600 | HHR | HMK | HHR | Priority 1 | SAR | IFC | Approval | ENG | DOCS | DES | MS3 |

| ID | WBS | Activity | Type | Duration | Start | Finish | Predecessors | Total float | Free float | Resources | Cost | Area | Station | Railway | Priority | Responsibility | Design stage | Submittal or approval | EPC phase | Discipline | Programme phase | Payment milestone |
| --- | --- | --- | --- | --- | --- | --- | --- | --- | --- | --- | --- | --- | --- | --- | --- | --- | --- | --- | --- | --- | --- | --- |
|  | HCS | **HCIS documentation (Stage 3 and 4)** |  |  | 2027-02-23 | 2027-04-29 |  |  |  |  |  |  |  |  |  |  |  |  |  |  |  |  |
|  | SUB | **Submittal** |  |  | 2027-02-23 | 2027-04-08 |  |  |  |  |  |  |  |  |  |  |  |  |  |  |  |  |
| HMK-E1110 |  | HCIS Stage 3 and 4 documents: preparation - Makkah |  | 28d | 2027-02-23 | 2027-04-08 | HMK-E1050 FS+10d, HMK-E1090 FF | 300d | 0d | Contract cost (BOQ x payment milestones) [48550 SAR]; Progress weight (fair EPC distribution, SAR value) [43400 SAR] | 43,400 | HHR | HMK | HHR | Priority 1 | ETECHS | HCIS | Submittal | ENG | DOCS | DES | MS2 |
|  | APR | **Approval** |  |  | 2027-04-11 | 2027-04-29 |  |  |  |  |  |  |  |  |  |  |  |  |  |  |  |  |
| HMK-E1120 |  | HCIS Stage 3 and 4 documents: SAR final review and HCIS submission - Makkah |  | 15d | 2027-04-11 | 2027-04-29 | HMK-E1110 | 300d | 0d | Contract cost (BOQ x payment milestones) [48550 SAR]; Progress weight (fair EPC distribution, SAR value) [23560 SAR] | 23,560 | HHR | HMK | HHR | Priority 1 | SAR/HCIS | HCIS | Approval | ENG | DOCS | DES | MS3 |
|  | ASB | **As-built and O&M documentation** |  |  | 2028-04-25 | 2028-07-17 |  |  |  |  |  |  |  |  |  |  |  |  |  |  |  |  |
|  | SUB | **Submittal** |  |  | 2028-04-25 | 2028-06-26 |  |  |  |  |  |  |  |  |  |  |  |  |  |  |  |  |
| HMK-E1130 |  | As-built and O&M documentation: submittal - Makkah |  | 40d | 2028-04-25 | 2028-06-26 | HMK-C2100 | 300d | 0d | Contract cost (BOQ x payment milestones) [145651 SAR]; Progress weight (fair EPC distribution, SAR value) [81220 SAR] | 81,220 | HHR | HMK | HHR | Priority 1 | ETECHS | As-built | Submittal | ENG | DOCS | COM | MS7 |
|  | APR | **Approval** |  |  | 2028-06-27 | 2028-07-17 |  |  |  |  |  |  |  |  |  |  |  |  |  |  |  |  |
| HMK-E1140 |  | As-built and O&M documentation: SAR review and approval - Makkah |  | 15d | 2028-06-27 | 2028-07-17 | HMK-E1130 | 300d | 0d | Contract cost (BOQ x payment milestones) [48550 SAR]; Progress weight (fair EPC distribution, SAR value) [30380 SAR] | 30,380 | HHR | HMK | HHR | Priority 1 | SAR | As-built | Approval | ENG | DOCS | COM | MS7 |
|  | ERY | **Riyadh (Malaz) (EWR)** |  |  | 2026-11-15 | 2027-11-22 |  |  |  |  |  |  |  |  |  |  |  |  |  |  |  |  |
| ERY-E1200 |  | MS2 Engineering submittal complete (10%) - Riyadh (Malaz) | milestone | 0d | 2027-02-11 | 2027-02-11 | ERY-E1090, ERY-E1110 | 475d | 15d |  |  | EWR | ERY | EWR | Priority 2 | ETECHS | - | - | MS | DOCS | MS | MS2 |
| ERY-E1210 |  | MS3 Engineering approved by SAR (10%) - Riyadh (Malaz) | milestone | 0d | 2027-03-14 | 2027-03-14 | ERY-E1020, ERY-E1040, ERY-E1060, ERY-E1080, ERY-E1100, ERY-E1120, ERY-E1200 | 460d | 0d |  |  | EWR | ERY | EWR | Priority 2 | SAR | - | - | MS | DOCS | MS | MS3 |
|  | SRV | **Site survey and as-found verification** |  |  | 2026-11-15 | 2026-12-17 |  |  |  |  |  |  |  |  |  |  |  |  |  |  |  |  |
|  | SUB | **Submittal** |  |  | 2026-11-15 | 2026-11-26 |  |  |  |  |  |  |  |  |  |  |  |  |  |  |  |  |
| ERY-E1010 |  | Survey: submittal of site survey and as-found report - Riyadh (Malaz) |  | 10d | 2026-11-15 | 2026-11-26 | PRJ-M0000 FS+10d | 27d | 0d | Contract cost (BOQ x payment milestones) [15458 SAR]; Progress weight (fair EPC distribution, SAR value) [11160 SAR] | 11,160 | EWR | ERY | EWR | Priority 2 | ETECHS | Survey | Submittal | ENG | DOCS | MOB | MS2 |
|  | APR | **Approval** |  |  | 2026-11-29 | 2026-12-17 |  |  |  |  |  |  |  |  |  |  |  |  |  |  |  |  |
| ERY-E1020 |  | Survey: SAR approval of survey report - Riyadh (Malaz) |  | 15d | 2026-11-29 | 2026-12-17 | ERY-E1010 | 310d | 10d | Contract cost (BOQ x payment milestones) [15458 SAR]; Progress weight (fair EPC distribution, SAR value) [17360 SAR] | 17,360 | EWR | ERY | EWR | Priority 2 | SAR | Survey | Approval | ENG | DOCS | MOB | MS3 |
|  | CNC | **Concept design** |  |  | 2027-01-03 | 2027-01-28 |  |  |  |  |  |  |  |  |  |  |  |  |  |  |  |  |
|  | SUB | **Submittal** |  |  | 2027-01-03 | 2027-01-07 |  |  |  |  |  |  |  |  |  |  |  |  |  |  |  |  |
| ERY-E1030 |  | Concept design: submittal - Riyadh (Malaz) |  | 5d | 2027-01-03 | 2027-01-07 | ERY-E1020, PRJ-M1150 | 460d | 0d | Contract cost (BOQ x payment milestones) [30915 SAR]; Progress weight (fair EPC distribution, SAR value) [8680 SAR] | 8,680 | EWR | ERY | EWR | Priority 2 | ETECHS | Concept | Submittal | ENG | DOCS | DES | MS2 |
|  | APR | **Approval** |  |  | 2027-01-10 | 2027-01-28 |  |  |  |  |  |  |  |  |  |  |  |  |  |  |  |  |
| ERY-E1040 |  | Concept design: SAR review and approval - Riyadh (Malaz) |  | 15d | 2027-01-10 | 2027-01-28 | ERY-E1030 | 485d | 25d | Contract cost (BOQ x payment milestones) [30915 SAR]; Progress weight (fair EPC distribution, SAR value) [26660 SAR] | 26,660 | EWR | ERY | EWR | Priority 2 | SAR | Concept | Approval | ENG | DOCS | DES | MS3 |
|  | PRE | **Preliminary (schematic) design** |  |  | 2027-01-10 | 2027-02-09 |  |  |  |  |  |  |  |  |  |  |  |  |  |  |  |  |
|  | SUB | **Submittal** |  |  | 2027-01-10 | 2027-01-19 |  |  |  |  |  |  |  |  |  |  |  |  |  |  |  |  |
| ERY-E1050 |  | Preliminary design: submittal - Riyadh (Malaz) |  | 8d | 2027-01-10 | 2027-01-19 | ERY-E1030 | 460d | 0d | Contract cost (BOQ x payment milestones) [61830 SAR]; Progress weight (fair EPC distribution, SAR value) [22320 SAR] | 22,320 | EWR | ERY | EWR | Priority 2 | ETECHS | Preliminary | Submittal | ENG | DOCS | DES | MS2 |

| ID | WBS | Activity | Type | Duration | Start | Finish | Predecessors | Total float | Free float | Resources | Cost | Area | Station | Railway | Priority | Responsibility | Design stage | Submittal or approval | EPC phase | Discipline | Programme phase | Payment milestone |
| --- | --- | --- | --- | --- | --- | --- | --- | --- | --- | --- | --- | --- | --- | --- | --- | --- | --- | --- | --- | --- | --- | --- |
|  | APR | **Approval** |  |  | 2027-01-20 | 2027-02-09 |  |  |  |  |  |  |  |  |  |  |  |  |  |  |  |  |
| ERY-E1060 |  | Preliminary design: SAR review and approval - Riyadh (Malaz) |  | 15d | 2027-01-20 | 2027-02-09 | ERY-E1050 | 477d | 17d | Contract cost (BOQ x payment milestones) [61830 SAR]; Progress weight (fair EPC distribution, SAR value) [41540 SAR] | 41,540 | EWR | ERY | EWR | Priority 2 | SAR | Preliminary | Approval | ENG | DOCS | DES | MS3 |
|  | DET | **Detailed design** |  |  | 2027-01-20 | 2027-02-28 |  |  |  |  |  |  |  |  |  |  |  |  |  |  |  |  |
|  | SUB | **Submittal** |  |  | 2027-01-20 | 2027-02-04 |  |  |  |  |  |  |  |  |  |  |  |  |  |  |  |  |
| ERY-E1070 |  | Detailed design: submittal (drawings, BOQ, data sheets) - Riyadh (Malaz) |  | 12d | 2027-01-20 | 2027-02-04 | ERY-E1050 | 460d | 0d | Contract cost (BOQ x payment milestones) [123661 SAR]; Progress weight (fair EPC distribution, SAR value) [47740 SAR] | 47,740 | EWR | ERY | EWR | Priority 2 | ETECHS | Detailed | Submittal | ENG | DOCS | DES | MS2 |
|  | APR | **Approval** |  |  | 2027-02-07 | 2027-02-28 |  |  |  |  |  |  |  |  |  |  |  |  |  |  |  |  |
| ERY-E1080 |  | Detailed design: SAR review and approval - Riyadh (Malaz) |  | 15d | 2027-02-07 | 2027-02-28 | ERY-E1070 | 465d | 5d | Contract cost (BOQ x payment milestones) [123661 SAR]; Progress weight (fair EPC distribution, SAR value) [59520 SAR] | 59,520 | EWR | ERY | EWR | Priority 2 | SAR | Detailed | Approval | ENG | DOCS | DES | MS3 |
|  | IFC | **IFC and shop drawings** |  |  | 2027-02-07 | 2027-03-14 |  |  |  |  |  |  |  |  |  |  |  |  |  |  |  |  |
|  | SUB | **Submittal** |  |  | 2027-02-07 | 2027-02-11 |  |  |  |  |  |  |  |  |  |  |  |  |  |  |  |  |
| ERY-E1090 |  | IFC and shop drawings: submittal - Riyadh (Malaz) |  | 5d | 2027-02-07 | 2027-02-11 | ERY-E1070 | 460d | 0d | Contract cost (BOQ x payment milestones) [61830 SAR]; Progress weight (fair EPC distribution, SAR value) [16120 SAR] | 16,120 | EWR | ERY | EWR | Priority 2 | ETECHS | IFC | Submittal | ENG | DOCS | DES | MS2 |
|  | APR | **Approval** |  |  | 2027-02-14 | 2027-03-14 |  |  |  |  |  |  |  |  |  |  |  |  |  |  |  |  |
| ERY-E1100 |  | IFC and shop drawings: SAR approval and release - Riyadh (Malaz) |  | 15d | 2027-02-14 | 2027-03-14 | ERY-E1090 | 460d | 0d | Contract cost (BOQ x payment milestones) [61830 SAR]; Progress weight (fair EPC distribution, SAR value) [48360 SAR] | 48,360 | EWR | ERY | EWR | Priority 2 | SAR | IFC | Approval | ENG | DOCS | DES | MS3 |
|  | HCS | **HCIS documentation (Stage 3 and 4)** |  |  | 2027-01-27 | 2027-03-14 |  |  |  |  |  |  |  |  |  |  |  |  |  |  |  |  |
|  | SUB | **Submittal** |  |  | 2027-01-27 | 2027-02-11 |  |  |  |  |  |  |  |  |  |  |  |  |  |  |  |  |
| ERY-E1110 |  | HCIS Stage 3 and 4 documents: preparation - Riyadh (Malaz) |  | 12d | 2027-01-27 | 2027-02-11 | ERY-E1050 FS+5d, ERY-E1090 FF | 460d | 0d | Contract cost (BOQ x payment milestones) [15458 SAR]; Progress weight (fair EPC distribution, SAR value) [9300 SAR] | 9,300 | EWR | ERY | EWR | Priority 2 | ETECHS | HCIS | Submittal | ENG | DOCS | DES | MS2 |
|  | APR | **Approval** |  |  | 2027-02-14 | 2027-03-14 |  |  |  |  |  |  |  |  |  |  |  |  |  |  |  |  |
| ERY-E1120 |  | HCIS Stage 3 and 4 documents: SAR final review and HCIS submission - Riyadh (Malaz) |  | 15d | 2027-02-14 | 2027-03-14 | ERY-E1110 | 460d | 0d | Contract cost (BOQ x payment milestones) [15458 SAR]; Progress weight (fair EPC distribution, SAR value) [11780 SAR] | 11,780 | EWR | ERY | EWR | Priority 2 | SAR/HCIS | HCIS | Approval | ENG | DOCS | DES | MS3 |
|  | ASB | **As-built and O&M documentation** |  |  | 2027-09-20 | 2027-11-22 |  |  |  |  |  |  |  |  |  |  |  |  |  |  |  |  |
|  | SUB | **Submittal** |  |  | 2027-09-20 | 2027-11-01 |  |  |  |  |  |  |  |  |  |  |  |  |  |  |  |  |
| ERY-E1130 |  | As-built and O&M documentation: submittal - Riyadh (Malaz) |  | 30d | 2027-09-20 | 2027-11-01 | ERY-C2100 | 460d | 0d | Contract cost (BOQ x payment milestones) [46373 SAR]; Progress weight (fair EPC distribution, SAR value) [23560 SAR] | 23,560 | EWR | ERY | EWR | Priority 2 | ETECHS | As-built | Submittal | ENG | DOCS | COM | MS7 |
|  | APR | **Approval** |  |  | 2027-11-02 | 2027-11-22 |  |  |  |  |  |  |  |  |  |  |  |  |  |  |  |  |
| ERY-E1140 |  | As-built and O&M documentation: SAR review and approval - Riyadh (Malaz) |  | 15d | 2027-11-02 | 2027-11-22 | ERY-E1130 | 460d | 0d | Contract cost (BOQ x payment milestones) [15458 SAR]; Progress weight (fair EPC distribution, SAR value) [11780 SAR] | 11,780 | EWR | ERY | EWR | Priority 2 | SAR | As-built | Approval | ENG | DOCS | COM | MS7 |
|  | HJD | **Jeddah (HHR)** |  |  | 2027-03-03 | 2028-08-30 |  |  |  |  |  |  |  |  |  |  |  |  |  |  |  |  |
| HJD-E1200 |  | MS2 Engineering submittal complete (10%) - Jeddah | milestone | 0d | 2027-06-22 | 2027-06-22 | HJD-E1090, HJD-E1110 | 283d | 15d |  |  | HHR | HJD | HHR | Standard | ETECHS | - | - | MS | DOCS | MS | MS2 |
| HJD-E1210 |  | MS3 Engineering approved by SAR (10%) - Jeddah | milestone | 0d | 2027-07-13 | 2027-07-13 | HJD-E1020, HJD-E1040, HJD-E1060, HJD-E1080, HJD-E1100, HJD-E1120, HJD-E1200 | 268d | 0d |  |  | HHR | HJD | HHR | Standard | SAR | - | - | MS | DOCS | MS | MS3 |

| ID | WBS | Activity | Duration | Start | Finish | Predecessors | Total float | Free float | Resources | Cost | Area | Station | Railway | Priority | Responsibility | Design stage | Submittal or approval | EPC phase | Discipline | Programme phase | Payment milestone |
| --- | --- | --- | --- | --- | --- | --- | --- | --- | --- | --- | --- | --- | --- | --- | --- | --- | --- | --- | --- | --- | --- |
|  | SRV | **Site survey and as-found verification** |  | 2027-03-03 | 2027-04-27 |  |  |  |  |  |  |  |  |  |  |  |  |  |  |  |  |
|  | SUB | **Submittal** |  | 2027-03-03 | 2027-04-06 |  |  |  |  |  |  |  |  |  |  |  |  |  |  |  |  |
| HJD-E1010 |  | Survey: submittal of site survey and as-found report - Jeddah | 20d | 2027-03-03 | 2027-04-06 | PRJ-M2100 FS+32d | 268d | 0d | Contract cost (BOQ x payment milestones) [47754 SAR]; Progress weight (fair EPC distribution, SAR value) [50220 SAR] | 50,220 | HHR | HJD | HHR | Standard | ETECHS | Survey | Submittal | ENG | DOCS | MOB | MS2 |
|  | APR | **Approval** |  | 2027-04-07 | 2027-04-27 |  |  |  |  |  |  |  |  |  |  |  |  |  |  |  |  |
| HJD-E1020 |  | Survey: SAR approval of survey report - Jeddah | 15d | 2027-04-07 | 2027-04-27 | HJD-E1010 | 318d | 50d | Contract cost (BOQ x payment milestones) [47754 SAR]; Progress weight (fair EPC distribution, SAR value) [37820 SAR] | 37,820 | HHR | HJD | HHR | Standard | SAR | Survey | Approval | ENG | DOCS | MOB | MS3 |
|  | CNC | **Concept design** |  | 2027-04-07 | 2027-05-09 |  |  |  |  |  |  |  |  |  |  |  |  |  |  |  |  |
|  | SUB | **Submittal** |  | 2027-04-07 | 2027-04-18 |  |  |  |  |  |  |  |  |  |  |  |  |  |  |  |  |
| HJD-E1030 |  | Concept design: submittal - Jeddah | 8d | 2027-04-07 | 2027-04-18 | HJD-E1010 | 268d | 0d | Contract cost (BOQ x payment milestones) [95509 SAR]; Progress weight (fair EPC distribution, SAR value) [38440 SAR] | 38,440 | HHR | HJD | HHR | Standard | ETECHS | Concept | Submittal | ENG | DOCS | DES | MS2 |
|  | APR | **Approval** |  | 2027-04-19 | 2027-05-09 |  |  |  |  |  |  |  |  |  |  |  |  |  |  |  |  |
| HJD-E1040 |  | Concept design: SAR review and approval - Jeddah | 15d | 2027-04-19 | 2027-05-09 | HJD-E1030 | 310d | 42d | Contract cost (BOQ x payment milestones) [95509 SAR]; Progress weight (fair EPC distribution, SAR value) [71920 SAR] | 71,920 | HHR | HJD | HHR | Standard | SAR | Concept | Approval | ENG | DOCS | DES | MS3 |
|  | PRE | **Preliminary (schematic) design** |  | 2027-04-19 | 2027-06-02 |  |  |  |  |  |  |  |  |  |  |  |  |  |  |  |  |
|  | SUB | **Submittal** |  | 2027-04-19 | 2027-05-05 |  |  |  |  |  |  |  |  |  |  |  |  |  |  |  |  |
| HJD-E1050 |  | Preliminary design: submittal - Jeddah | 13d | 2027-04-19 | 2027-05-05 | HJD-E1030 | 268d | 0d | Contract cost (BOQ x payment milestones) [191018 SAR]; Progress weight (fair EPC distribution, SAR value) [91760 SAR] | 91,760 | HHR | HJD | HHR | Standard | ETECHS | Preliminary | Submittal | ENG | DOCS | DES | MS2 |
|  | APR | **Approval** |  | 2027-05-06 | 2027-06-02 |  |  |  |  |  |  |  |  |  |  |  |  |  |  |  |  |
| HJD-E1060 |  | Preliminary design: SAR review and approval - Jeddah | 15d | 2027-05-06 | 2027-06-02 | HJD-E1050 | 297d | 29d | Contract cost (BOQ x payment milestones) [191018 SAR]; Progress weight (fair EPC distribution, SAR value) [106020 SAR] | 106,020 | HHR | HJD | HHR | Standard | SAR | Preliminary | Approval | ENG | DOCS | DES | MS3 |
|  | DET | **Detailed design** |  | 2027-05-06 | 2027-06-30 |  |  |  |  |  |  |  |  |  |  |  |  |  |  |  |  |
|  | SUB | **Submittal** |  | 2027-05-06 | 2027-06-09 |  |  |  |  |  |  |  |  |  |  |  |  |  |  |  |  |
| HJD-E1070 |  | Detailed design: submittal (drawings, BOQ, data sheets) - Jeddah | 20d | 2027-05-06 | 2027-06-09 | HJD-E1050 | 268d | 0d | Contract cost (BOQ x payment milestones) [382035 SAR]; Progress weight (fair EPC distribution, SAR value) [188480 SAR] | 188,480 | HHR | HJD | HHR | Standard | ETECHS | Detailed | Submittal | ENG | DOCS | DES | MS2 |
|  | APR | **Approval** |  | 2027-06-10 | 2027-06-30 |  |  |  |  |  |  |  |  |  |  |  |  |  |  |  |  |
| HJD-E1080 |  | Detailed design: SAR review and approval - Jeddah | 15d | 2027-06-10 | 2027-06-30 | HJD-E1070 | 277d | 9d | Contract cost (BOQ x payment milestones) [382035 SAR]; Progress weight (fair EPC distribution, SAR value) [141360 SAR] | 141,360 | HHR | HJD | HHR | Standard | SAR | Detailed | Approval | ENG | DOCS | DES | MS3 |
|  | IFC | **IFC and shop drawings** |  | 2027-06-10 | 2027-07-13 |  |  |  |  |  |  |  |  |  |  |  |  |  |  |  |  |
|  | SUB | **Submittal** |  | 2027-06-10 | 2027-06-22 |  |  |  |  |  |  |  |  |  |  |  |  |  |  |  |  |
| HJD-E1090 |  | IFC and shop drawings: submittal - Jeddah | 9d | 2027-06-10 | 2027-06-22 | HJD-E1070 | 268d | 0d | Contract cost (BOQ x payment milestones) [191018 SAR]; Progress weight (fair EPC distribution, SAR value) [74400 SAR] | 74,400 | HHR | HJD | HHR | Standard | ETECHS | IFC | Submittal | ENG | DOCS | DES | MS2 |
|  | APR | **Approval** |  | 2027-06-23 | 2027-07-13 |  |  |  |  |  |  |  |  |  |  |  |  |  |  |  |  |
| HJD-E1100 |  | IFC and shop drawings: SAR approval and release - Jeddah | 15d | 2027-06-23 | 2027-07-13 | HJD-E1090 | 268d | 0d | Contract cost (BOQ x payment milestones) [191018 SAR]; Progress weight (fair EPC distribution, SAR value) [124000 SAR] | 124,000 | HHR | HJD | HHR | Standard | SAR | IFC | Approval | ENG | DOCS | DES | MS3 |

| ID | WBS | Activity | Type | Duration | Start | Finish | Predecessors | Total float | Free float | Resources | Cost | Area | Station | Railway | Priority | Responsibility | Design stage | Submittal or approval | EPC phase | Discipline | Programme phase | Payment milestone |
| --- | --- | --- | --- | --- | --- | --- | --- | --- | --- | --- | --- | --- | --- | --- | --- | --- | --- | --- | --- | --- | --- | --- |
|  | HCS | **HCIS documentation (Stage 3 and 4)** |  |  | 2027-05-25 | 2027-07-13 |  |  |  |  |  |  |  |  |  |  |  |  |  |  |  |  |
|  | SUB | **Submittal** |  |  | 2027-05-25 | 2027-06-22 |  |  |  |  |  |  |  |  |  |  |  |  |  |  |  |  |
| HJD-E1110 |  | HCIS Stage 3 and 4 documents: preparation - Jeddah |  | 21d | 2027-05-25 | 2027-06-22 | HJD-E1050 FS+8d, HJD-E1090 FF | 268d | 0d | Contract cost (BOQ x payment milestones) [47754 SAR]; Progress weight (fair EPC distribution, SAR value) [38440 SAR] | 38,440 | HHR | HJD | HHR | Standard | ETECHS | HCIS | Submittal | ENG | DOCS | DES | MS2 |
|  | APR | **Approval** |  |  | 2027-06-23 | 2027-07-13 |  |  |  |  |  |  |  |  |  |  |  |  |  |  |  |  |
| HJD-E1120 |  | HCIS Stage 3 and 4 documents: SAR final review and HCIS submission - Jeddah |  | 15d | 2027-06-23 | 2027-07-13 | HJD-E1110 | 268d | 0d | Contract cost (BOQ x payment milestones) [47754 SAR]; Progress weight (fair EPC distribution, SAR value) [27280 SAR] | 27,280 | HHR | HJD | HHR | Standard | SAR/HCIS | HCIS | Approval | ENG | DOCS | DES | MS3 |
|  | ASB | **As-built and O&M documentation** |  |  | 2028-06-15 | 2028-08-30 |  |  |  |  |  |  |  |  |  |  |  |  |  |  |  |  |
|  | SUB | **Submittal** |  |  | 2028-06-15 | 2028-08-09 |  |  |  |  |  |  |  |  |  |  |  |  |  |  |  |  |
| HJD-E1130 |  | As-built and O&M documentation: submittal - Jeddah |  | 40d | 2028-06-15 | 2028-08-09 | HJD-C2100 | 268d | 0d | Contract cost (BOQ x payment milestones) [143263 SAR]; Progress weight (fair EPC distribution, SAR value) [79980 SAR] | 79,980 | HHR | HJD | HHR | Standard | ETECHS | As-built | Submittal | ENG | DOCS | COM | MS7 |
|  | APR | **Approval** |  |  | 2028-08-10 | 2028-08-30 |  |  |  |  |  |  |  |  |  |  |  |  |  |  |  |  |
| HJD-E1140 |  | As-built and O&M documentation: SAR review and approval - Jeddah |  | 15d | 2028-08-10 | 2028-08-30 | HJD-E1130 | 268d | 0d | Contract cost (BOQ x payment milestones) [47754 SAR]; Progress weight (fair EPC distribution, SAR value) [29760 SAR] | 29,760 | HHR | HJD | HHR | Standard | SAR | As-built | Approval | ENG | DOCS | COM | MS7 |
|  | EDM | **Dammam (EWR)** |  |  | 2027-06-23 | 2028-06-07 |  |  |  |  |  |  |  |  |  |  |  |  |  |  |  |  |
| EDM-E1200 |  | MS2 Engineering submittal complete (10%) - Dammam | milestone | 0d | 2027-08-17 | 2027-08-17 | EDM-E1090, EDM-E1110 | 343d | 15d |  |  | EWR | EDM | EWR | Standard | ETECHS | - | - | MS | DOCS | MS | MS2 |
| EDM-E1210 |  | MS3 Engineering approved by SAR (10%) - Dammam | milestone | 0d | 2027-09-07 | 2027-09-07 | EDM-E1020, EDM-E1040, EDM-E1060, EDM-E1080, EDM-E1100, EDM-E1120, EDM-E1200 | 328d | 0d |  |  | EWR | EDM | EWR | Standard | SAR | - | - | MS | DOCS | MS | MS3 |
|  | SRV | **Site survey and as-found verification** |  |  | 2027-06-23 | 2027-07-27 |  |  |  |  |  |  |  |  |  |  |  |  |  |  |  |  |
|  | SUB | **Submittal** |  |  | 2027-06-23 | 2027-07-06 |  |  |  |  |  |  |  |  |  |  |  |  |  |  |  |  |
| EDM-E1010 |  | Survey: submittal of site survey and as-found report - Dammam |  | 10d | 2027-06-23 | 2027-07-06 | PRJ-M2100 FS+102d | 328d | 0d | Contract cost (BOQ x payment milestones) [15938 SAR]; Progress weight (fair EPC distribution, SAR value) [11780 SAR] | 11,780 | EWR | EDM | EWR | Standard | ETECHS | Survey | Submittal | ENG | DOCS | MOB | MS2 |
|  | APR | **Approval** |  |  | 2027-07-07 | 2027-07-27 |  |  |  |  |  |  |  |  |  |  |  |  |  |  |  |  |
| EDM-E1020 |  | Survey: SAR approval of survey report - Dammam |  | 15d | 2027-07-07 | 2027-07-27 | EDM-E1010 | 358d | 30d | Contract cost (BOQ x payment milestones) [15938 SAR]; Progress weight (fair EPC distribution, SAR value) [17360 SAR] | 17,360 | EWR | EDM | EWR | Standard | SAR | Survey | Approval | ENG | DOCS | MOB | MS3 |
|  | CNC | **Concept design** |  |  | 2027-07-07 | 2027-08-03 |  |  |  |  |  |  |  |  |  |  |  |  |  |  |  |  |
|  | SUB | **Submittal** |  |  | 2027-07-07 | 2027-07-13 |  |  |  |  |  |  |  |  |  |  |  |  |  |  |  |  |
| EDM-E1030 |  | Concept design: submittal - Dammam |  | 5d | 2027-07-07 | 2027-07-13 | EDM-E1010 | 328d | 0d | Contract cost (BOQ x payment milestones) [31875 SAR]; Progress weight (fair EPC distribution, SAR value) [9300 SAR] | 9,300 | EWR | EDM | EWR | Standard | ETECHS | Concept | Submittal | ENG | DOCS | DES | MS2 |
|  | APR | **Approval** |  |  | 2027-07-14 | 2027-08-03 |  |  |  |  |  |  |  |  |  |  |  |  |  |  |  |  |
| EDM-E1040 |  | Concept design: SAR review and approval - Dammam |  | 15d | 2027-07-14 | 2027-08-03 | EDM-E1030 | 353d | 25d | Contract cost (BOQ x payment milestones) [31875 SAR]; Progress weight (fair EPC distribution, SAR value) [27280 SAR] | 27,280 | EWR | EDM | EWR | Standard | SAR | Concept | Approval | ENG | DOCS | DES | MS3 |
|  | PRE | **Preliminary (schematic) design** |  |  | 2027-07-14 | 2027-08-15 |  |  |  |  |  |  |  |  |  |  |  |  |  |  |  |  |
|  | SUB | **Submittal** |  |  | 2027-07-14 | 2027-07-25 |  |  |  |  |  |  |  |  |  |  |  |  |  |  |  |  |
| EDM-E1050 |  | Preliminary design: submittal - Dammam |  | 8d | 2027-07-14 | 2027-07-25 | EDM-E1030 | 328d | 0d | Contract cost (BOQ x payment milestones) [63750 SAR]; Progress weight (fair EPC distribution, SAR value) [22940 SAR] | 22,940 | EWR | EDM | EWR | Standard | ETECHS | Preliminary | Submittal | ENG | DOCS | DES | MS2 |

| ID | WBS | Activity | Type | Duration | Start | Finish | Predecessors | Total float | Free float | Resources | Cost | Area | Station | Railway | Priority | Responsibility | Design stage | Submittal or approval | EPC phase | Discipline | Programme phase | Payment milestone |
| --- | --- | --- | --- | --- | --- | --- | --- | --- | --- | --- | --- | --- | --- | --- | --- | --- | --- | --- | --- | --- | --- | --- |
|  | APR | **Approval** |  |  | 2027-07-26 | 2027-08-15 |  |  |  |  |  |  |  |  |  |  |  |  |  |  |  |  |
| EDM-E1060 |  | Preliminary design: SAR review and approval - Dammam |  | 15d | 2027-07-26 | 2027-08-15 | EDM-E1050 | 345d | 17d | Contract cost (BOQ x payment milestones) [63750 SAR]; Progress weight (fair EPC distribution, SAR value) [43400 SAR] | 43,400 | EWR | EDM | EWR | Standard | SAR | Preliminary | Approval | ENG | DOCS | DES | MS3 |
|  | DET | **Detailed design** |  |  | 2027-07-26 | 2027-08-31 |  |  |  |  |  |  |  |  |  |  |  |  |  |  |  |  |
|  | SUB | **Submittal** |  |  | 2027-07-26 | 2027-08-10 |  |  |  |  |  |  |  |  |  |  |  |  |  |  |  |  |
| EDM-E1070 |  | Detailed design: submittal (drawings, BOQ, data sheets) - Dammam |  | 12d | 2027-07-26 | 2027-08-10 | EDM-E1050 | 328d | 0d | Contract cost (BOQ x payment milestones) [127500 SAR]; Progress weight (fair EPC distribution, SAR value) [48980 SAR] | 48,980 | EWR | EDM | EWR | Standard | ETECHS | Detailed | Submittal | ENG | DOCS | DES | MS2 |
|  | APR | **Approval** |  |  | 2027-08-11 | 2027-08-31 |  |  |  |  |  |  |  |  |  |  |  |  |  |  |  |  |
| EDM-E1080 |  | Detailed design: SAR review and approval - Dammam |  | 15d | 2027-08-11 | 2027-08-31 | EDM-E1070 | 333d | 5d | Contract cost (BOQ x payment milestones) [127500 SAR]; Progress weight (fair EPC distribution, SAR value) [61380 SAR] | 61,380 | EWR | EDM | EWR | Standard | SAR | Detailed | Approval | ENG | DOCS | DES | MS3 |
|  | IFC | **IFC and shop drawings** |  |  | 2027-08-11 | 2027-09-07 |  |  |  |  |  |  |  |  |  |  |  |  |  |  |  |  |
|  | SUB | **Submittal** |  |  | 2027-08-11 | 2027-08-17 |  |  |  |  |  |  |  |  |  |  |  |  |  |  |  |  |
| EDM-E1090 |  | IFC and shop drawings: submittal - Dammam |  | 5d | 2027-08-11 | 2027-08-17 | EDM-E1070 | 328d | 0d | Contract cost (BOQ x payment milestones) [63750 SAR]; Progress weight (fair EPC distribution, SAR value) [16740 SAR] | 16,740 | EWR | EDM | EWR | Standard | ETECHS | IFC | Submittal | ENG | DOCS | DES | MS2 |
|  | APR | **Approval** |  |  | 2027-08-18 | 2027-09-07 |  |  |  |  |  |  |  |  |  |  |  |  |  |  |  |  |
| EDM-E1100 |  | IFC and shop drawings: SAR approval and release - Dammam |  | 15d | 2027-08-18 | 2027-09-07 | EDM-E1090 | 328d | 0d | Contract cost (BOQ x payment milestones) [63750 SAR]; Progress weight (fair EPC distribution, SAR value) [49600 SAR] | 49,600 | EWR | EDM | EWR | Standard | SAR | IFC | Approval | ENG | DOCS | DES | MS3 |
|  | HCS | **HCIS documentation (Stage 3 and 4)** |  |  | 2027-08-02 | 2027-09-07 |  |  |  |  |  |  |  |  |  |  |  |  |  |  |  |  |
|  | SUB | **Submittal** |  |  | 2027-08-02 | 2027-08-17 |  |  |  |  |  |  |  |  |  |  |  |  |  |  |  |  |
| EDM-E1110 |  | HCIS Stage 3 and 4 documents: preparation - Dammam |  | 12d | 2027-08-02 | 2027-08-17 | EDM-E1050 FS+5d, EDM-E1090 FF | 328d | 0d | Contract cost (BOQ x payment milestones) [15938 SAR]; Progress weight (fair EPC distribution, SAR value) [9920 SAR] | 9,920 | EWR | EDM | EWR | Standard | ETECHS | HCIS | Submittal | ENG | DOCS | DES | MS2 |
|  | APR | **Approval** |  |  | 2027-08-18 | 2027-09-07 |  |  |  |  |  |  |  |  |  |  |  |  |  |  |  |  |
| EDM-E1120 |  | HCIS Stage 3 and 4 documents: SAR final review and HCIS submission - Dammam |  | 15d | 2027-08-18 | 2027-09-07 | EDM-E1110 | 328d | 0d | Contract cost (BOQ x payment milestones) [15938 SAR]; Progress weight (fair EPC distribution, SAR value) [12400 SAR] | 12,400 | EWR | EDM | EWR | Standard | SAR/HCIS | HCIS | Approval | ENG | DOCS | DES | MS3 |
|  | ASB | **As-built and O&M documentation** |  |  | 2028-03-30 | 2028-06-07 |  |  |  |  |  |  |  |  |  |  |  |  |  |  |  |  |
|  | SUB | **Submittal** |  |  | 2028-03-30 | 2028-05-17 |  |  |  |  |  |  |  |  |  |  |  |  |  |  |  |  |
| EDM-E1130 |  | As-built and O&M documentation: submittal - Dammam |  | 30d | 2028-03-30 | 2028-05-17 | EDM-C2100 | 328d | 0d | Contract cost (BOQ x payment milestones) [47813 SAR]; Progress weight (fair EPC distribution, SAR value) [24180 SAR] | 24,180 | EWR | EDM | EWR | Standard | ETECHS | As-built | Submittal | ENG | DOCS | COM | MS7 |
|  | APR | **Approval** |  |  | 2028-05-18 | 2028-06-07 |  |  |  |  |  |  |  |  |  |  |  |  |  |  |  |  |
| EDM-E1140 |  | As-built and O&M documentation: SAR review and approval - Dammam |  | 15d | 2028-05-18 | 2028-06-07 | EDM-E1130 | 328d | 0d | Contract cost (BOQ x payment milestones) [15938 SAR]; Progress weight (fair EPC distribution, SAR value) [12400 SAR] | 12,400 | EWR | EDM | EWR | Standard | SAR | As-built | Approval | ENG | DOCS | COM | MS7 |
|  | NQS | **Al Qassim (NSR)** |  |  | 2027-08-17 | 2028-08-09 |  |  |  |  |  |  |  |  |  |  |  |  |  |  |  |  |
| NQS-E1200 |  | MS2 Engineering submittal complete (10%) - Al Qassim | milestone | 0d | 2027-10-12 | 2027-10-12 | NQS-E1090, NQS-E1110 | 298d | 15d |  |  | NSR | NQS | NSR | Standard | ETECHS | - | - | MS | DOCS | MS | MS2 |
| NQS-E1210 |  | MS3 Engineering approved by SAR (10%) - Al Qassim | milestone | 0d | 2027-11-02 | 2027-11-02 | NQS-E1020, NQS-E1040, NQS-E1060, NQS-E1080, NQS-E1100, NQS-E1120, NQS-E1200 | 283d | 0d |  |  | NSR | NQS | NSR | Standard | SAR | - | - | MS | DOCS | MS | MS3 |

| ID | WBS | Activity | Duration | Start | Finish | Predecessors | Total float | Free float | Resources | Cost | Area | Station | Railway | Priority | Responsibility | Design stage | Submittal or approval | EPC phase | Discipline | Programme phase | Payment milestone |
| --- | --- | --- | --- | --- | --- | --- | --- | --- | --- | --- | --- | --- | --- | --- | --- | --- | --- | --- | --- | --- | --- |
|  | SRV | **Site survey and as-found verification** |  | 2027-08-17 | 2027-09-20 |  |  |  |  |  |  |  |  |  |  |  |  |  |  |  |  |
|  | SUB | **Submittal** |  | 2027-08-17 | 2027-08-30 |  |  |  |  |  |  |  |  |  |  |  |  |  |  |  |  |
| NQS-E1010 |  | Survey: submittal of site survey and as-found report - Al Qassim | 10d | 2027-08-17 | 2027-08-30 | PRJ-M2100 FS+141d | 283d | 0d | Contract cost (BOQ x payment milestones) [16995 SAR]; Progress weight (fair EPC distribution, SAR value) [12400 SAR] | 12,400 | NSR | NQS | NSR | Standard | ETECHS | Survey | Submittal | ENG | DOCS | MOB | MS2 |
|  | APR | **Approval** |  | 2027-08-31 | 2027-09-20 |  |  |  |  |  |  |  |  |  |  |  |  |  |  |  |  |
| NQS-E1020 |  | Survey: SAR approval of survey report - Al Qassim | 15d | 2027-08-31 | 2027-09-20 | NQS-E1010 | 313d | 30d | Contract cost (BOQ x payment milestones) [16995 SAR]; Progress weight (fair EPC distribution, SAR value) [18600 SAR] | 18,600 | NSR | NQS | NSR | Standard | SAR | Survey | Approval | ENG | DOCS | MOB | MS3 |
|  | CNC | **Concept design** |  | 2027-08-31 | 2027-09-28 |  |  |  |  |  |  |  |  |  |  |  |  |  |  |  |  |
|  | SUB | **Submittal** |  | 2027-08-31 | 2027-09-06 |  |  |  |  |  |  |  |  |  |  |  |  |  |  |  |  |
| NQS-E1030 |  | Concept design: submittal - Al Qassim | 5d | 2027-08-31 | 2027-09-06 | NQS-E1010 | 283d | 0d | Contract cost (BOQ x payment milestones) [33989 SAR]; Progress weight (fair EPC distribution, SAR value) [9920 SAR] | 9,920 | NSR | NQS | NSR | Standard | ETECHS | Concept | Submittal | ENG | DOCS | DES | MS2 |
|  | APR | **Approval** |  | 2027-09-07 | 2027-09-28 |  |  |  |  |  |  |  |  |  |  |  |  |  |  |  |  |
| NQS-E1040 |  | Concept design: SAR review and approval - Al Qassim | 15d | 2027-09-07 | 2027-09-28 | NQS-E1030 | 308d | 25d | Contract cost (BOQ x payment milestones) [33989 SAR]; Progress weight (fair EPC distribution, SAR value) [29140 SAR] | 29,140 | NSR | NQS | NSR | Standard | SAR | Concept | Approval | ENG | DOCS | DES | MS3 |
|  | PRE | **Preliminary (schematic) design** |  | 2027-09-07 | 2027-10-10 |  |  |  |  |  |  |  |  |  |  |  |  |  |  |  |  |
|  | SUB | **Submittal** |  | 2027-09-07 | 2027-09-16 |  |  |  |  |  |  |  |  |  |  |  |  |  |  |  |  |
| NQS-E1050 |  | Preliminary design: submittal - Al Qassim | 8d | 2027-09-07 | 2027-09-16 | NQS-E1030 | 283d | 0d | Contract cost (BOQ x payment milestones) [67978 SAR]; Progress weight (fair EPC distribution, SAR value) [24800 SAR] | 24,800 | NSR | NQS | NSR | Standard | ETECHS | Preliminary | Submittal | ENG | DOCS | DES | MS2 |
|  | APR | **Approval** |  | 2027-09-19 | 2027-10-10 |  |  |  |  |  |  |  |  |  |  |  |  |  |  |  |  |
| NQS-E1060 |  | Preliminary design: SAR review and approval - Al Qassim | 15d | 2027-09-19 | 2027-10-10 | NQS-E1050 | 300d | 17d | Contract cost (BOQ x payment milestones) [67978 SAR]; Progress weight (fair EPC distribution, SAR value) [45880 SAR] | 45,880 | NSR | NQS | NSR | Standard | SAR | Preliminary | Approval | ENG | DOCS | DES | MS3 |
|  | DET | **Detailed design** |  | 2027-09-19 | 2027-10-26 |  |  |  |  |  |  |  |  |  |  |  |  |  |  |  |  |
|  | SUB | **Submittal** |  | 2027-09-19 | 2027-10-05 |  |  |  |  |  |  |  |  |  |  |  |  |  |  |  |  |
| NQS-E1070 |  | Detailed design: submittal (drawings, BOQ, data sheets) - Al Qassim | 12d | 2027-09-19 | 2027-10-05 | NQS-E1050 | 283d | 0d | Contract cost (BOQ x payment milestones) [135957 SAR]; Progress weight (fair EPC distribution, SAR value) [52080 SAR] | 52,080 | NSR | NQS | NSR | Standard | ETECHS | Detailed | Submittal | ENG | DOCS | DES | MS2 |
|  | APR | **Approval** |  | 2027-10-06 | 2027-10-26 |  |  |  |  |  |  |  |  |  |  |  |  |  |  |  |  |
| NQS-E1080 |  | Detailed design: SAR review and approval - Al Qassim | 15d | 2027-10-06 | 2027-10-26 | NQS-E1070 | 288d | 5d | Contract cost (BOQ x payment milestones) [135957 SAR]; Progress weight (fair EPC distribution, SAR value) [65100 SAR] | 65,100 | NSR | NQS | NSR | Standard | SAR | Detailed | Approval | ENG | DOCS | DES | MS3 |
|  | IFC | **IFC and shop drawings** |  | 2027-10-06 | 2027-11-02 |  |  |  |  |  |  |  |  |  |  |  |  |  |  |  |  |
|  | SUB | **Submittal** |  | 2027-10-06 | 2027-10-12 |  |  |  |  |  |  |  |  |  |  |  |  |  |  |  |  |
| NQS-E1090 |  | IFC and shop drawings: submittal - Al Qassim | 5d | 2027-10-06 | 2027-10-12 | NQS-E1070 | 283d | 0d | Contract cost (BOQ x payment milestones) [67978 SAR]; Progress weight (fair EPC distribution, SAR value) [17360 SAR] | 17,360 | NSR | NQS | NSR | Standard | ETECHS | IFC | Submittal | ENG | DOCS | DES | MS2 |
|  | APR | **Approval** |  | 2027-10-13 | 2027-11-02 |  |  |  |  |  |  |  |  |  |  |  |  |  |  |  |  |
| NQS-E1100 |  | IFC and shop drawings: SAR approval and release - Al Qassim | 15d | 2027-10-13 | 2027-11-02 | NQS-E1090 | 283d | 0d | Contract cost (BOQ x payment milestones) [67978 SAR]; Progress weight (fair EPC distribution, SAR value) [52700 SAR] | 52,700 | NSR | NQS | NSR | Standard | SAR | IFC | Approval | ENG | DOCS | DES | MS3 |

| ID | WBS | Activity | Type | Duration | Start | Finish | Predecessors | Total float | Free float | Resources | Cost | Area | Station | Railway | Priority | Responsibility | Design stage | Submittal or approval | EPC phase | Discipline | Programme phase | Payment milestone |
| --- | --- | --- | --- | --- | --- | --- | --- | --- | --- | --- | --- | --- | --- | --- | --- | --- | --- | --- | --- | --- | --- | --- |
|  | HCS | **HCIS documentation (Stage 3 and 4)** |  |  | 2027-09-27 | 2027-11-02 |  |  |  |  |  |  |  |  |  |  |  |  |  |  |  |  |
|  | SUB | **Submittal** |  |  | 2027-09-27 | 2027-10-12 |  |  |  |  |  |  |  |  |  |  |  |  |  |  |  |  |
| NQS-E1110 |  | HCIS Stage 3 and 4 documents: preparation - Al Qassim |  | 12d | 2027-09-27 | 2027-10-12 | NQS-E1050 FS+5d, NQS-E1090 FF | 283d | 0d | Contract cost (BOQ x payment milestones) [16995 SAR]; Progress weight (fair EPC distribution, SAR value) [10540 SAR] | 10,540 | NSR | NQS | NSR | Standard | ETECHS | HCIS | Submittal | ENG | DOCS | DES | MS2 |
|  | APR | **Approval** |  |  | 2027-10-13 | 2027-11-02 |  |  |  |  |  |  |  |  |  |  |  |  |  |  |  |  |
| NQS-E1120 |  | HCIS Stage 3 and 4 documents: SAR final review and HCIS submission - Al Qassim |  | 15d | 2027-10-13 | 2027-11-02 | NQS-E1110 | 283d | 0d | Contract cost (BOQ x payment milestones) [16995 SAR]; Progress weight (fair EPC distribution, SAR value) [13020 SAR] | 13,020 | NSR | NQS | NSR | Standard | SAR/HCIS | HCIS | Approval | ENG | DOCS | DES | MS3 |
|  | ASB | **As-built and O&M documentation** |  |  | 2028-06-08 | 2028-08-09 |  |  |  |  |  |  |  |  |  |  |  |  |  |  |  |  |
|  | SUB | **Submittal** |  |  | 2028-06-08 | 2028-07-19 |  |  |  |  |  |  |  |  |  |  |  |  |  |  |  |  |
| NQS-E1130 |  | As-built and O&M documentation: submittal - Al Qassim |  | 30d | 2028-06-08 | 2028-07-19 | NQS-C2100 | 283d | 0d | Contract cost (BOQ x payment milestones) [50984 SAR]; Progress weight (fair EPC distribution, SAR value) [26040 SAR] | 26,040 | NSR | NQS | NSR | Standard | ETECHS | As-built | Submittal | ENG | DOCS | COM | MS7 |
|  | APR | **Approval** |  |  | 2028-07-20 | 2028-08-09 |  |  |  |  |  |  |  |  |  |  |  |  |  |  |  |  |
| NQS-E1140 |  | As-built and O&M documentation: SAR review and approval - Al Qassim |  | 15d | 2028-07-20 | 2028-08-09 | NQS-E1130 | 283d | 0d | Contract cost (BOQ x payment milestones) [16995 SAR]; Progress weight (fair EPC distribution, SAR value) [13020 SAR] | 13,020 | NSR | NQS | NSR | Standard | SAR | As-built | Approval | ENG | DOCS | COM | MS7 |
|  | EHF | **Hufuf (EWR)** |  |  | 2027-08-17 | 2028-08-01 |  |  |  |  |  |  |  |  |  |  |  |  |  |  |  |  |
| EHF-E1200 |  | MS2 Engineering submittal complete (10%) - Hufuf | milestone | 0d | 2027-10-12 | 2027-10-12 | EHF-E1090, EHF-E1110 | 304d | 15d |  |  | EWR | EHF | EWR | Standard | ETECHS | - | - | MS | DOCS | MS | MS2 |
| EHF-E1210 |  | MS3 Engineering approved by SAR (10%) - Hufuf | milestone | 0d | 2027-11-02 | 2027-11-02 | EHF-E1020, EHF-E1040, EHF-E1060, EHF-E1080, EHF-E1100, EHF-E1120, EHF-E1200 | 289d | 0d |  |  | EWR | EHF | EWR | Standard | SAR | - | - | MS | DOCS | MS | MS3 |
|  | SRV | **Site survey and as-found verification** |  |  | 2027-08-17 | 2027-09-20 |  |  |  |  |  |  |  |  |  |  |  |  |  |  |  |  |
|  | SUB | **Submittal** |  |  | 2027-08-17 | 2027-08-30 |  |  |  |  |  |  |  |  |  |  |  |  |  |  |  |  |
| EHF-E1010 |  | Survey: submittal of site survey and as-found report - Hufuf |  | 10d | 2027-08-17 | 2027-08-30 | PRJ-M2100 FS+141d | 289d | 0d | Contract cost (BOQ x payment milestones) [14143 SAR]; Progress weight (fair EPC distribution, SAR value) [10540 SAR] | 10,540 | EWR | EHF | EWR | Standard | ETECHS | Survey | Submittal | ENG | DOCS | MOB | MS2 |
|  | APR | **Approval** |  |  | 2027-08-31 | 2027-09-20 |  |  |  |  |  |  |  |  |  |  |  |  |  |  |  |  |
| EHF-E1020 |  | Survey: SAR approval of survey report - Hufuf |  | 15d | 2027-08-31 | 2027-09-20 | EHF-E1010 | 319d | 30d | Contract cost (BOQ x payment milestones) [14143 SAR]; Progress weight (fair EPC distribution, SAR value) [15500 SAR] | 15,500 | EWR | EHF | EWR | Standard | SAR | Survey | Approval | ENG | DOCS | MOB | MS3 |
|  | CNC | **Concept design** |  |  | 2027-08-31 | 2027-09-28 |  |  |  |  |  |  |  |  |  |  |  |  |  |  |  |  |
|  | SUB | **Submittal** |  |  | 2027-08-31 | 2027-09-06 |  |  |  |  |  |  |  |  |  |  |  |  |  |  |  |  |
| EHF-E1030 |  | Concept design: submittal - Hufuf |  | 5d | 2027-08-31 | 2027-09-06 | EHF-E1010 | 289d | 0d | Contract cost (BOQ x payment milestones) [28285 SAR]; Progress weight (fair EPC distribution, SAR value) [8060 SAR] | 8,060 | EWR | EHF | EWR | Standard | ETECHS | Concept | Submittal | ENG | DOCS | DES | MS2 |
|  | APR | **Approval** |  |  | 2027-09-07 | 2027-09-28 |  |  |  |  |  |  |  |  |  |  |  |  |  |  |  |  |
| EHF-E1040 |  | Concept design: SAR review and approval - Hufuf |  | 15d | 2027-09-07 | 2027-09-28 | EHF-E1030 | 314d | 25d | Contract cost (BOQ x payment milestones) [28285 SAR]; Progress weight (fair EPC distribution, SAR value) [24180 SAR] | 24,180 | EWR | EHF | EWR | Standard | SAR | Concept | Approval | ENG | DOCS | DES | MS3 |
|  | PRE | **Preliminary (schematic) design** |  |  | 2027-09-07 | 2027-10-10 |  |  |  |  |  |  |  |  |  |  |  |  |  |  |  |  |
|  | SUB | **Submittal** |  |  | 2027-09-07 | 2027-09-16 |  |  |  |  |  |  |  |  |  |  |  |  |  |  |  |  |
| EHF-E1050 |  | Preliminary design: submittal - Hufuf |  | 8d | 2027-09-07 | 2027-09-16 | EHF-E1030 | 289d | 0d | Contract cost (BOQ x payment milestones) [56570 SAR]; Progress weight (fair EPC distribution, SAR value) [20460 SAR] | 20,460 | EWR | EHF | EWR | Standard | ETECHS | Preliminary | Submittal | ENG | DOCS | DES | MS2 |

| ID | WBS | Activity | Type | Duration | Start | Finish | Predecessors | Total float | Free float | Resources | Cost | Area | Station | Railway | Priority | Responsibility | Design stage | Submittal or approval | EPC phase | Discipline | Programme phase | Payment milestone |
| --- | --- | --- | --- | --- | --- | --- | --- | --- | --- | --- | --- | --- | --- | --- | --- | --- | --- | --- | --- | --- | --- | --- |
|  | APR | **Approval** |  |  | 2027-09-19 | 2027-10-10 |  |  |  |  |  |  |  |  |  |  |  |  |  |  |  |  |
| EHF-E1060 |  | Preliminary design: SAR review and approval - Hufuf |  | 15d | 2027-09-19 | 2027-10-10 | EHF-E1050 | 306d | 17d | Contract cost (BOQ x payment milestones) [56570 SAR]; Progress weight (fair EPC distribution, SAR value) [38440 SAR] | 38,440 | EWR | EHF | EWR | Standard | SAR | Preliminary | Approval | ENG | DOCS | DES | MS3 |
|  | DET | **Detailed design** |  |  | 2027-09-19 | 2027-10-26 |  |  |  |  |  |  |  |  |  |  |  |  |  |  |  |  |
|  | SUB | **Submittal** |  |  | 2027-09-19 | 2027-10-05 |  |  |  |  |  |  |  |  |  |  |  |  |  |  |  |  |
| EHF-E1070 |  | Detailed design: submittal (drawings, BOQ, data sheets) - Hufuf |  | 12d | 2027-09-19 | 2027-10-05 | EHF-E1050 | 289d | 0d | Contract cost (BOQ x payment milestones) [113140 SAR]; Progress weight (fair EPC distribution, SAR value) [43400 SAR] | 43,400 | EWR | EHF | EWR | Standard | ETECHS | Detailed | Submittal | ENG | DOCS | DES | MS2 |
|  | APR | **Approval** |  |  | 2027-10-06 | 2027-10-26 |  |  |  |  |  |  |  |  |  |  |  |  |  |  |  |  |
| EHF-E1080 |  | Detailed design: SAR review and approval - Hufuf |  | 15d | 2027-10-06 | 2027-10-26 | EHF-E1070 | 294d | 5d | Contract cost (BOQ x payment milestones) [113140 SAR]; Progress weight (fair EPC distribution, SAR value) [54560 SAR] | 54,560 | EWR | EHF | EWR | Standard | SAR | Detailed | Approval | ENG | DOCS | DES | MS3 |
|  | IFC | **IFC and shop drawings** |  |  | 2027-10-06 | 2027-11-02 |  |  |  |  |  |  |  |  |  |  |  |  |  |  |  |  |
|  | SUB | **Submittal** |  |  | 2027-10-06 | 2027-10-12 |  |  |  |  |  |  |  |  |  |  |  |  |  |  |  |  |
| EHF-E1090 |  | IFC and shop drawings: submittal - Hufuf |  | 5d | 2027-10-06 | 2027-10-12 | EHF-E1070 | 289d | 0d | Contract cost (BOQ x payment milestones) [56570 SAR]; Progress weight (fair EPC distribution, SAR value) [14880 SAR] | 14,880 | EWR | EHF | EWR | Standard | ETECHS | IFC | Submittal | ENG | DOCS | DES | MS2 |
|  | APR | **Approval** |  |  | 2027-10-13 | 2027-11-02 |  |  |  |  |  |  |  |  |  |  |  |  |  |  |  |  |
| EHF-E1100 |  | IFC and shop drawings: SAR approval and release - Hufuf |  | 15d | 2027-10-13 | 2027-11-02 | EHF-E1090 | 289d | 0d | Contract cost (BOQ x payment milestones) [56570 SAR]; Progress weight (fair EPC distribution, SAR value) [44020 SAR] | 44,020 | EWR | EHF | EWR | Standard | SAR | IFC | Approval | ENG | DOCS | DES | MS3 |
|  | HCS | **HCIS documentation (Stage 3 and 4)** |  |  | 2027-09-27 | 2027-11-02 |  |  |  |  |  |  |  |  |  |  |  |  |  |  |  |  |
|  | SUB | **Submittal** |  |  | 2027-09-27 | 2027-10-12 |  |  |  |  |  |  |  |  |  |  |  |  |  |  |  |  |
| EHF-E1110 |  | HCIS Stage 3 and 4 documents: preparation - Hufuf |  | 12d | 2027-09-27 | 2027-10-12 | EHF-E1050 FS+5d, EHF-E1090 FF | 289d | 0d | Contract cost (BOQ x payment milestones) [14143 SAR]; Progress weight (fair EPC distribution, SAR value) [8680 SAR] | 8,680 | EWR | EHF | EWR | Standard | ETECHS | HCIS | Submittal | ENG | DOCS | DES | MS2 |
|  | APR | **Approval** |  |  | 2027-10-13 | 2027-11-02 |  |  |  |  |  |  |  |  |  |  |  |  |  |  |  |  |
| EHF-E1120 |  | HCIS Stage 3 and 4 documents: SAR final review and HCIS submission - Hufuf |  | 15d | 2027-10-13 | 2027-11-02 | EHF-E1110 | 289d | 0d | Contract cost (BOQ x payment milestones) [14143 SAR]; Progress weight (fair EPC distribution, SAR value) [11160 SAR] | 11,160 | EWR | EHF | EWR | Standard | SAR/HCIS | HCIS | Approval | ENG | DOCS | DES | MS3 |
|  | ASB | **As-built and O&M documentation** |  |  | 2028-05-31 | 2028-08-01 |  |  |  |  |  |  |  |  |  |  |  |  |  |  |  |  |
|  | SUB | **Submittal** |  |  | 2028-05-31 | 2028-07-11 |  |  |  |  |  |  |  |  |  |  |  |  |  |  |  |  |
| EHF-E1130 |  | As-built and O&M documentation: submittal - Hufuf |  | 30d | 2028-05-31 | 2028-07-11 | EHF-C2100 | 289d | 0d | Contract cost (BOQ x payment milestones) [42428 SAR]; Progress weight (fair EPC distribution, SAR value) [21700 SAR] | 21,700 | EWR | EHF | EWR | Standard | ETECHS | As-built | Submittal | ENG | DOCS | COM | MS7 |
|  | APR | **Approval** |  |  | 2028-07-12 | 2028-08-01 |  |  |  |  |  |  |  |  |  |  |  |  |  |  |  |  |
| EHF-E1140 |  | As-built and O&M documentation: SAR review and approval - Hufuf |  | 15d | 2028-07-12 | 2028-08-01 | EHF-E1130 | 289d | 0d | Contract cost (BOQ x payment milestones) [14143 SAR]; Progress weight (fair EPC distribution, SAR value) [11160 SAR] | 11,160 | EWR | EHF | EWR | Standard | SAR | As-built | Approval | ENG | DOCS | COM | MS7 |
|  | NMJ | **Al Majma'ah (NSR)** |  |  | 2027-10-06 | 2028-09-27 |  |  |  |  |  |  |  |  |  |  |  |  |  |  |  |  |
| NMJ-E1200 |  | MS2 Engineering submittal complete (10%) - Al Majma'ah | milestone | 0d | 2027-11-30 | 2027-11-30 | NMJ-E1090, NMJ-E1110 | 263d | 15d |  |  | NSR | NMJ | NSR | Standard | ETECHS | - | - | MS | DOCS | MS | MS2 |
| NMJ-E1210 |  | MS3 Engineering approved by SAR (10%) - Al Majma'ah | milestone | 0d | 2027-12-21 | 2027-12-21 | NMJ-E1020, NMJ-E1040, NMJ-E1060, NMJ-E1080, NMJ-E1100, NMJ-E1120, NMJ-E1200 | 248d | 0d |  |  | NSR | NMJ | NSR | Standard | SAR | - | - | MS | DOCS | MS | MS3 |

| ID | WBS | Activity | Duration | Start | Finish | Predecessors | Total float | Free float | Resources | Cost | Area | Station | Railway | Priority | Responsibility | Design stage | Submittal or approval | EPC phase | Discipline | Programme phase | Payment milestone |
| --- | --- | --- | --- | --- | --- | --- | --- | --- | --- | --- | --- | --- | --- | --- | --- | --- | --- | --- | --- | --- | --- |
|  | SRV | **Site survey and as-found verification** |  | 2027-10-06 | 2027-11-09 |  |  |  |  |  |  |  |  |  |  |  |  |  |  |  |  |
|  | SUB | **Submittal** |  | 2027-10-06 | 2027-10-19 |  |  |  |  |  |  |  |  |  |  |  |  |  |  |  |  |
| NMJ-E1010 |  | Survey: submittal of site survey and as-found report - Al Majma'ah | 10d | 2027-10-06 | 2027-10-19 | PRJ-M2100 FS+176d | 248d | 0d | Contract cost (BOQ x payment milestones) [16995 SAR]; Progress weight (fair EPC distribution, SAR value) [12400 SAR] | 12,400 | NSR | NMJ | NSR | Standard | ETECHS | Survey | Submittal | ENG | DOCS | MOB | MS2 |
|  | APR | **Approval** |  | 2027-10-20 | 2027-11-09 |  |  |  |  |  |  |  |  |  |  |  |  |  |  |  |  |
| NMJ-E1020 |  | Survey: SAR approval of survey report - Al Majma'ah | 15d | 2027-10-20 | 2027-11-09 | NMJ-E1010 | 278d | 30d | Contract cost (BOQ x payment milestones) [16995 SAR]; Progress weight (fair EPC distribution, SAR value) [18600 SAR] | 18,600 | NSR | NMJ | NSR | Standard | SAR | Survey | Approval | ENG | DOCS | MOB | MS3 |
|  | CNC | **Concept design** |  | 2027-10-20 | 2027-11-16 |  |  |  |  |  |  |  |  |  |  |  |  |  |  |  |  |
|  | SUB | **Submittal** |  | 2027-10-20 | 2027-10-26 |  |  |  |  |  |  |  |  |  |  |  |  |  |  |  |  |
| NMJ-E1030 |  | Concept design: submittal - Al Majma'ah | 5d | 2027-10-20 | 2027-10-26 | NMJ-E1010 | 248d | 0d | Contract cost (BOQ x payment milestones) [33989 SAR]; Progress weight (fair EPC distribution, SAR value) [9920 SAR] | 9,920 | NSR | NMJ | NSR | Standard | ETECHS | Concept | Submittal | ENG | DOCS | DES | MS2 |
|  | APR | **Approval** |  | 2027-10-27 | 2027-11-16 |  |  |  |  |  |  |  |  |  |  |  |  |  |  |  |  |
| NMJ-E1040 |  | Concept design: SAR review and approval - Al Majma'ah | 15d | 2027-10-27 | 2027-11-16 | NMJ-E1030 | 273d | 25d | Contract cost (BOQ x payment milestones) [33989 SAR]; Progress weight (fair EPC distribution, SAR value) [29140 SAR] | 29,140 | NSR | NMJ | NSR | Standard | SAR | Concept | Approval | ENG | DOCS | DES | MS3 |
|  | PRE | **Preliminary (schematic) design** |  | 2027-10-27 | 2027-11-28 |  |  |  |  |  |  |  |  |  |  |  |  |  |  |  |  |
|  | SUB | **Submittal** |  | 2027-10-27 | 2027-11-07 |  |  |  |  |  |  |  |  |  |  |  |  |  |  |  |  |
| NMJ-E1050 |  | Preliminary design: submittal - Al Majma'ah | 8d | 2027-10-27 | 2027-11-07 | NMJ-E1030 | 248d | 0d | Contract cost (BOQ x payment milestones) [67978 SAR]; Progress weight (fair EPC distribution, SAR value) [24800 SAR] | 24,800 | NSR | NMJ | NSR | Standard | ETECHS | Preliminary | Submittal | ENG | DOCS | DES | MS2 |
|  | APR | **Approval** |  | 2027-11-08 | 2027-11-28 |  |  |  |  |  |  |  |  |  |  |  |  |  |  |  |  |
| NMJ-E1060 |  | Preliminary design: SAR review and approval - Al Majma'ah | 15d | 2027-11-08 | 2027-11-28 | NMJ-E1050 | 265d | 17d | Contract cost (BOQ x payment milestones) [67978 SAR]; Progress weight (fair EPC distribution, SAR value) [45880 SAR] | 45,880 | NSR | NMJ | NSR | Standard | SAR | Preliminary | Approval | ENG | DOCS | DES | MS3 |
|  | DET | **Detailed design** |  | 2027-11-08 | 2027-12-14 |  |  |  |  |  |  |  |  |  |  |  |  |  |  |  |  |
|  | SUB | **Submittal** |  | 2027-11-08 | 2027-11-23 |  |  |  |  |  |  |  |  |  |  |  |  |  |  |  |  |
| NMJ-E1070 |  | Detailed design: submittal (drawings, BOQ, data sheets) - Al Majma'ah | 12d | 2027-11-08 | 2027-11-23 | NMJ-E1050 | 248d | 0d | Contract cost (BOQ x payment milestones) [135957 SAR]; Progress weight (fair EPC distribution, SAR value) [52080 SAR] | 52,080 | NSR | NMJ | NSR | Standard | ETECHS | Detailed | Submittal | ENG | DOCS | DES | MS2 |
|  | APR | **Approval** |  | 2027-11-24 | 2027-12-14 |  |  |  |  |  |  |  |  |  |  |  |  |  |  |  |  |
| NMJ-E1080 |  | Detailed design: SAR review and approval - Al Majma'ah | 15d | 2027-11-24 | 2027-12-14 | NMJ-E1070 | 253d | 5d | Contract cost (BOQ x payment milestones) [135957 SAR]; Progress weight (fair EPC distribution, SAR value) [65100 SAR] | 65,100 | NSR | NMJ | NSR | Standard | SAR | Detailed | Approval | ENG | DOCS | DES | MS3 |
|  | IFC | **IFC and shop drawings** |  | 2027-11-24 | 2027-12-21 |  |  |  |  |  |  |  |  |  |  |  |  |  |  |  |  |
|  | SUB | **Submittal** |  | 2027-11-24 | 2027-11-30 |  |  |  |  |  |  |  |  |  |  |  |  |  |  |  |  |
| NMJ-E1090 |  | IFC and shop drawings: submittal - Al Majma'ah | 5d | 2027-11-24 | 2027-11-30 | NMJ-E1070 | 248d | 0d | Contract cost (BOQ x payment milestones) [67978 SAR]; Progress weight (fair EPC distribution, SAR value) [17360 SAR] | 17,360 | NSR | NMJ | NSR | Standard | ETECHS | IFC | Submittal | ENG | DOCS | DES | MS2 |
|  | APR | **Approval** |  | 2027-12-01 | 2027-12-21 |  |  |  |  |  |  |  |  |  |  |  |  |  |  |  |  |
| NMJ-E1100 |  | IFC and shop drawings: SAR approval and release - Al Majma'ah | 15d | 2027-12-01 | 2027-12-21 | NMJ-E1090 | 248d | 0d | Contract cost (BOQ x payment milestones) [67978 SAR]; Progress weight (fair EPC distribution, SAR value) [52700 SAR] | 52,700 | NSR | NMJ | NSR | Standard | SAR | IFC | Approval | ENG | DOCS | DES | MS3 |

| ID | WBS | Activity | Type | Duration | Start | Finish | Predecessors | Total float | Free float | Resources | Cost | Area | Station | Railway | Priority | Responsibility | Design stage | Submittal or approval | EPC phase | Discipline | Programme phase | Payment milestone |
| --- | --- | --- | --- | --- | --- | --- | --- | --- | --- | --- | --- | --- | --- | --- | --- | --- | --- | --- | --- | --- | --- | --- |
|  | HCS | **HCIS documentation (Stage 3 and 4)** |  |  | 2027-11-15 | 2027-12-21 |  |  |  |  |  |  |  |  |  |  |  |  |  |  |  |  |
|  | SUB | **Submittal** |  |  | 2027-11-15 | 2027-11-30 |  |  |  |  |  |  |  |  |  |  |  |  |  |  |  |  |
| NMJ-E1110 |  | HCIS Stage 3 and 4 documents: preparation - Al Majma'ah |  | 12d | 2027-11-15 | 2027-11-30 | NMJ-E1050 FS+5d, NMJ-E1090 FF | 248d | 0d | Contract cost (BOQ x payment milestones) [16995 SAR]; Progress weight (fair EPC distribution, SAR value) [10540 SAR] | 10,540 | NSR | NMJ | NSR | Standard | ETECHS | HCIS | Submittal | ENG | DOCS | DES | MS2 |
|  | APR | **Approval** |  |  | 2027-12-01 | 2027-12-21 |  |  |  |  |  |  |  |  |  |  |  |  |  |  |  |  |
| NMJ-E1120 |  | HCIS Stage 3 and 4 documents: SAR final review and HCIS submission - Al Majma'ah |  | 15d | 2027-12-01 | 2027-12-21 | NMJ-E1110 | 248d | 0d | Contract cost (BOQ x payment milestones) [16995 SAR]; Progress weight (fair EPC distribution, SAR value) [13020 SAR] | 13,020 | NSR | NMJ | NSR | Standard | SAR/HCIS | HCIS | Approval | ENG | DOCS | DES | MS3 |
|  | ASB | **As-built and O&M documentation** |  |  | 2028-07-27 | 2028-09-27 |  |  |  |  |  |  |  |  |  |  |  |  |  |  |  |  |
|  | SUB | **Submittal** |  |  | 2028-07-27 | 2028-09-06 |  |  |  |  |  |  |  |  |  |  |  |  |  |  |  |  |
| NMJ-E1130 |  | As-built and O&M documentation: submittal - Al Majma'ah |  | 30d | 2028-07-27 | 2028-09-06 | NMJ-C2100 | 248d | 0d | Contract cost (BOQ x payment milestones) [50984 SAR]; Progress weight (fair EPC distribution, SAR value) [26040 SAR] | 26,040 | NSR | NMJ | NSR | Standard | ETECHS | As-built | Submittal | ENG | DOCS | COM | MS7 |
|  | APR | **Approval** |  |  | 2028-09-07 | 2028-09-27 |  |  |  |  |  |  |  |  |  |  |  |  |  |  |  |  |
| NMJ-E1140 |  | As-built and O&M documentation: SAR review and approval - Al Majma'ah |  | 15d | 2028-09-07 | 2028-09-27 | NMJ-E1130 | 248d | 0d | Contract cost (BOQ x payment milestones) [16995 SAR]; Progress weight (fair EPC distribution, SAR value) [13020 SAR] | 13,020 | NSR | NMJ | NSR | Standard | SAR | As-built | Approval | ENG | DOCS | COM | MS7 |
|  | HKA | **KAEC (HHR)** |  |  | 2028-02-06 | 2029-07-02 |  |  |  |  |  |  |  |  |  |  |  |  |  |  |  |  |
| HKA-E1200 |  | MS2 Engineering submittal complete (10%) - KAEC | milestone | 0d | 2028-05-25 | 2028-05-25 | HKA-E1090, HKA-E1110 | 76d | 15d |  |  | HHR | HKA | HHR | Standard | ETECHS | - | - | MS | DOCS | MS | MS2 |
| HKA-E1210 |  | MS3 Engineering approved by SAR (10%) - KAEC | milestone | 0d | 2028-06-15 | 2028-06-15 | HKA-E1020, HKA-E1040, HKA-E1060, HKA-E1080, HKA-E1100, HKA-E1120, HKA-E1200 | 61d | 0d |  |  | HHR | HKA | HHR | Standard | SAR | - | - | MS | DOCS | MS | MS3 |
|  | SRV | **Site survey and as-found verification** |  |  | 2028-02-06 | 2028-03-30 |  |  |  |  |  |  |  |  |  |  |  |  |  |  |  |  |
|  | SUB | **Submittal** |  |  | 2028-02-06 | 2028-03-09 |  |  |  |  |  |  |  |  |  |  |  |  |  |  |  |  |
| HKA-E1010 |  | Survey: submittal of site survey and as-found report - KAEC |  | 20d | 2028-02-06 | 2028-03-09 | PRJ-M2100 FS+263d | 61d | 0d | Contract cost (BOQ x payment milestones) [27822 SAR]; Progress weight (fair EPC distribution, SAR value) [29140 SAR] | 29,140 | HHR | HKA | HHR | Standard | ETECHS | Survey | Submittal | ENG | DOCS | MOB | MS2 |
|  | APR | **Approval** |  |  | 2028-03-12 | 2028-03-30 |  |  |  |  |  |  |  |  |  |  |  |  |  |  |  |  |
| HKA-E1020 |  | Survey: SAR approval of survey report - KAEC |  | 15d | 2028-03-12 | 2028-03-30 | HKA-E1010 | 111d | 50d | Contract cost (BOQ x payment milestones) [27822 SAR]; Progress weight (fair EPC distribution, SAR value) [21700 SAR] | 21,700 | HHR | HKA | HHR | Standard | SAR | Survey | Approval | ENG | DOCS | MOB | MS3 |
|  | CNC | **Concept design** |  |  | 2028-03-12 | 2028-04-11 |  |  |  |  |  |  |  |  |  |  |  |  |  |  |  |  |
|  | SUB | **Submittal** |  |  | 2028-03-12 | 2028-03-21 |  |  |  |  |  |  |  |  |  |  |  |  |  |  |  |  |
| HKA-E1030 |  | Concept design: submittal - KAEC |  | 8d | 2028-03-12 | 2028-03-21 | HKA-E1010 | 61d | 0d | Contract cost (BOQ x payment milestones) [55644 SAR]; Progress weight (fair EPC distribution, SAR value) [22320 SAR] | 22,320 | HHR | HKA | HHR | Standard | ETECHS | Concept | Submittal | ENG | DOCS | DES | MS2 |
|  | APR | **Approval** |  |  | 2028-03-22 | 2028-04-11 |  |  |  |  |  |  |  |  |  |  |  |  |  |  |  |  |
| HKA-E1040 |  | Concept design: SAR review and approval - KAEC |  | 15d | 2028-03-22 | 2028-04-11 | HKA-E1030 | 103d | 42d | Contract cost (BOQ x payment milestones) [55644 SAR]; Progress weight (fair EPC distribution, SAR value) [41540 SAR] | 41,540 | HHR | HKA | HHR | Standard | SAR | Concept | Approval | ENG | DOCS | DES | MS3 |
|  | PRE | **Preliminary (schematic) design** |  |  | 2028-03-22 | 2028-05-07 |  |  |  |  |  |  |  |  |  |  |  |  |  |  |  |  |
|  | SUB | **Submittal** |  |  | 2028-03-22 | 2028-04-09 |  |  |  |  |  |  |  |  |  |  |  |  |  |  |  |  |
| HKA-E1050 |  | Preliminary design: submittal - KAEC |  | 13d | 2028-03-22 | 2028-04-09 | HKA-E1030 | 61d | 0d | Contract cost (BOQ x payment milestones) [111288 SAR]; Progress weight (fair EPC distribution, SAR value) [53320 SAR] | 53,320 | HHR | HKA | HHR | Standard | ETECHS | Preliminary | Submittal | ENG | DOCS | DES | MS2 |

| ID | WBS | Activity | Type | Duration | Start | Finish | Predecessors | Total float | Free float | Resources | Cost | Area | Station | Railway | Priority | Responsibility | Design stage | Submittal or approval | EPC phase | Discipline | Programme phase | Payment milestone |
| --- | --- | --- | --- | --- | --- | --- | --- | --- | --- | --- | --- | --- | --- | --- | --- | --- | --- | --- | --- | --- | --- | --- |
|  | APR | **Approval** |  |  | 2028-04-10 | 2028-05-07 |  |  |  |  |  |  |  |  |  |  |  |  |  |  |  |  |
| HKA-E1060 |  | Preliminary design: SAR review and approval - KAEC |  | 15d | 2028-04-10 | 2028-05-07 | HKA-E1050 | 90d | 29d | Contract cost (BOQ x payment milestones) [111288 SAR]; Progress weight (fair EPC distribution, SAR value) [62000 SAR] | 62,000 | HHR | HKA | HHR | Standard | SAR | Preliminary | Approval | ENG | DOCS | DES | MS3 |
|  | DET | **Detailed design** |  |  | 2028-04-10 | 2028-06-04 |  |  |  |  |  |  |  |  |  |  |  |  |  |  |  |  |
|  | SUB | **Submittal** |  |  | 2028-04-10 | 2028-05-14 |  |  |  |  |  |  |  |  |  |  |  |  |  |  |  |  |
| HKA-E1070 |  | Detailed design: submittal (drawings, BOQ, data sheets) - KAEC |  | 20d | 2028-04-10 | 2028-05-14 | HKA-E1050 | 61d | 0d | Contract cost (BOQ x payment milestones) [222575 SAR]; Progress weight (fair EPC distribution, SAR value) [109740 SAR] | 109,740 | HHR | HKA | HHR | Standard | ETECHS | Detailed | Submittal | ENG | DOCS | DES | MS2 |
|  | APR | **Approval** |  |  | 2028-05-15 | 2028-06-04 |  |  |  |  |  |  |  |  |  |  |  |  |  |  |  |  |
| HKA-E1080 |  | Detailed design: SAR review and approval - KAEC |  | 15d | 2028-05-15 | 2028-06-04 | HKA-E1070 | 70d | 9d | Contract cost (BOQ x payment milestones) [222575 SAR]; Progress weight (fair EPC distribution, SAR value) [82460 SAR] | 82,460 | HHR | HKA | HHR | Standard | SAR | Detailed | Approval | ENG | DOCS | DES | MS3 |
|  | IFC | **IFC and shop drawings** |  |  | 2028-05-15 | 2028-06-15 |  |  |  |  |  |  |  |  |  |  |  |  |  |  |  |  |
|  | SUB | **Submittal** |  |  | 2028-05-15 | 2028-05-25 |  |  |  |  |  |  |  |  |  |  |  |  |  |  |  |  |
| HKA-E1090 |  | IFC and shop drawings: submittal - KAEC |  | 9d | 2028-05-15 | 2028-05-25 | HKA-E1070 | 61d | 0d | Contract cost (BOQ x payment milestones) [111288 SAR]; Progress weight (fair EPC distribution, SAR value) [43400 SAR] | 43,400 | HHR | HKA | HHR | Standard | ETECHS | IFC | Submittal | ENG | DOCS | DES | MS2 |
|  | APR | **Approval** |  |  | 2028-05-28 | 2028-06-15 |  |  |  |  |  |  |  |  |  |  |  |  |  |  |  |  |
| HKA-E1100 |  | IFC and shop drawings: SAR approval and release - KAEC |  | 15d | 2028-05-28 | 2028-06-15 | HKA-E1090 | 61d | 0d | Contract cost (BOQ x payment milestones) [111288 SAR]; Progress weight (fair EPC distribution, SAR value) [71920 SAR] | 71,920 | HHR | HKA | HHR | Standard | SAR | IFC | Approval | ENG | DOCS | DES | MS3 |
|  | HCS | **HCIS documentation (Stage 3 and 4)** |  |  | 2028-04-20 | 2028-06-15 |  |  |  |  |  |  |  |  |  |  |  |  |  |  |  |  |
|  | SUB | **Submittal** |  |  | 2028-04-20 | 2028-05-25 |  |  |  |  |  |  |  |  |  |  |  |  |  |  |  |  |
| HKA-E1110 |  | HCIS Stage 3 and 4 documents: preparation - KAEC |  | 21d | 2028-04-20 | 2028-05-25 | HKA-E1050 FS+8d, HKA-E1090 FF | 61d | 0d | Contract cost (BOQ x payment milestones) [27822 SAR]; Progress weight (fair EPC distribution, SAR value) [22320 SAR] | 22,320 | HHR | HKA | HHR | Standard | ETECHS | HCIS | Submittal | ENG | DOCS | DES | MS2 |
|  | APR | **Approval** |  |  | 2028-05-28 | 2028-06-15 |  |  |  |  |  |  |  |  |  |  |  |  |  |  |  |  |
| HKA-E1120 |  | HCIS Stage 3 and 4 documents: SAR final review and HCIS submission - KAEC |  | 15d | 2028-05-28 | 2028-06-15 | HKA-E1110 | 61d | 0d | Contract cost (BOQ x payment milestones) [27822 SAR]; Progress weight (fair EPC distribution, SAR value) [16120 SAR] | 16,120 | HHR | HKA | HHR | Standard | SAR/HCIS | HCIS | Approval | ENG | DOCS | DES | MS3 |
|  | ASB | **As-built and O&M documentation** |  |  | 2029-04-10 | 2029-07-02 |  |  |  |  |  |  |  |  |  |  |  |  |  |  |  |  |
|  | SUB | **Submittal** |  |  | 2029-04-10 | 2029-06-11 |  |  |  |  |  |  |  |  |  |  |  |  |  |  |  |  |
| HKA-E1130 |  | As-built and O&M documentation: submittal - KAEC |  | 40d | 2029-04-10 | 2029-06-11 | HKA-C2100 | 61d | 0d | Contract cost (BOQ x payment milestones) [83466 SAR]; Progress weight (fair EPC distribution, SAR value) [46500 SAR] | 46,500 | HHR | HKA | HHR | Standard | ETECHS | As-built | Submittal | ENG | DOCS | COM | MS7 |
|  | APR | **Approval** |  |  | 2029-06-12 | 2029-07-02 |  |  |  |  |  |  |  |  |  |  |  |  |  |  |  |  |
| HKA-E1140 |  | As-built and O&M documentation: SAR review and approval - KAEC |  | 15d | 2029-06-12 | 2029-07-02 | HKA-E1130 | 61d | 0d | Contract cost (BOQ x payment milestones) [27822 SAR]; Progress weight (fair EPC distribution, SAR value) [17360 SAR] | 17,360 | HHR | HKA | HHR | Standard | SAR | As-built | Approval | ENG | DOCS | COM | MS7 |
|  | HMD | **Madinah (HHR)** |  |  | 2028-02-06 | 2029-07-08 |  |  |  |  |  |  |  |  |  |  |  |  |  |  |  |  |
| HMD-E1200 |  | MS2 Engineering submittal complete (10%) - Madinah | milestone | 0d | 2028-05-25 | 2028-05-25 | HMD-E1090, HMD-E1110 | 72d | 15d |  |  | HHR | HMD | HHR | Standard | ETECHS | - | - | MS | DOCS | MS | MS2 |
| HMD-E1210 |  | MS3 Engineering approved by SAR (10%) - Madinah | milestone | 0d | 2028-06-15 | 2028-06-15 | HMD-E1020, HMD-E1040, HMD-E1060, HMD-E1080, HMD-E1100, HMD-E1120, HMD-E1200 | 57d | 0d |  |  | HHR | HMD | HHR | Standard | SAR | - | - | MS | DOCS | MS | MS3 |

| ID | WBS | Activity | Duration | Start | Finish | Predecessors | Total float | Free float | Resources | Cost | Area | Station | Railway | Priority | Responsibility | Design stage | Submittal or approval | EPC phase | Discipline | Programme phase | Payment milestone |
| --- | --- | --- | --- | --- | --- | --- | --- | --- | --- | --- | --- | --- | --- | --- | --- | --- | --- | --- | --- | --- | --- |
|  | SRV | **Site survey and as-found verification** |  | 2028-02-06 | 2028-03-30 |  |  |  |  |  |  |  |  |  |  |  |  |  |  |  |  |
|  | SUB | **Submittal** |  | 2028-02-06 | 2028-03-09 |  |  |  |  |  |  |  |  |  |  |  |  |  |  |  |  |
| HMD-E1010 |  | Survey: submittal of site survey and as-found report - Madinah | 20d | 2028-02-06 | 2028-03-09 | PRJ-M2100 FS+263d | 57d | 0d | Contract cost (BOQ x payment milestones) [27811 SAR]; Progress weight (fair EPC distribution, SAR value) [29140 SAR] | 29,140 | HHR | HMD | HHR | Standard | ETECHS | Survey | Submittal | ENG | DOCS | MOB | MS2 |
|  | APR | **Approval** |  | 2028-03-12 | 2028-03-30 |  |  |  |  |  |  |  |  |  |  |  |  |  |  |  |  |
| HMD-E1020 |  | Survey: SAR approval of survey report - Madinah | 15d | 2028-03-12 | 2028-03-30 | HMD-E1010 | 107d | 50d | Contract cost (BOQ x payment milestones) [27811 SAR]; Progress weight (fair EPC distribution, SAR value) [21700 SAR] | 21,700 | HHR | HMD | HHR | Standard | SAR | Survey | Approval | ENG | DOCS | MOB | MS3 |
|  | CNC | **Concept design** |  | 2028-03-12 | 2028-04-11 |  |  |  |  |  |  |  |  |  |  |  |  |  |  |  |  |
|  | SUB | **Submittal** |  | 2028-03-12 | 2028-03-21 |  |  |  |  |  |  |  |  |  |  |  |  |  |  |  |  |
| HMD-E1030 |  | Concept design: submittal - Madinah | 8d | 2028-03-12 | 2028-03-21 | HMD-E1010 | 57d | 0d | Contract cost (BOQ x payment milestones) [55621 SAR]; Progress weight (fair EPC distribution, SAR value) [22320 SAR] | 22,320 | HHR | HMD | HHR | Standard | ETECHS | Concept | Submittal | ENG | DOCS | DES | MS2 |
|  | APR | **Approval** |  | 2028-03-22 | 2028-04-11 |  |  |  |  |  |  |  |  |  |  |  |  |  |  |  |  |
| HMD-E1040 |  | Concept design: SAR review and approval - Madinah | 15d | 2028-03-22 | 2028-04-11 | HMD-E1030 | 99d | 42d | Contract cost (BOQ x payment milestones) [55621 SAR]; Progress weight (fair EPC distribution, SAR value) [41540 SAR] | 41,540 | HHR | HMD | HHR | Standard | SAR | Concept | Approval | ENG | DOCS | DES | MS3 |
|  | PRE | **Preliminary (schematic) design** |  | 2028-03-22 | 2028-05-07 |  |  |  |  |  |  |  |  |  |  |  |  |  |  |  |  |
|  | SUB | **Submittal** |  | 2028-03-22 | 2028-04-09 |  |  |  |  |  |  |  |  |  |  |  |  |  |  |  |  |
| HMD-E1050 |  | Preliminary design: submittal - Madinah | 13d | 2028-03-22 | 2028-04-09 | HMD-E1030 | 57d | 0d | Contract cost (BOQ x payment milestones) [111243 SAR]; Progress weight (fair EPC distribution, SAR value) [53320 SAR] | 53,320 | HHR | HMD | HHR | Standard | ETECHS | Preliminary | Submittal | ENG | DOCS | DES | MS2 |
|  | APR | **Approval** |  | 2028-04-10 | 2028-05-07 |  |  |  |  |  |  |  |  |  |  |  |  |  |  |  |  |
| HMD-E1060 |  | Preliminary design: SAR review and approval - Madinah | 15d | 2028-04-10 | 2028-05-07 | HMD-E1050 | 86d | 29d | Contract cost (BOQ x payment milestones) [111243 SAR]; Progress weight (fair EPC distribution, SAR value) [62000 SAR] | 62,000 | HHR | HMD | HHR | Standard | SAR | Preliminary | Approval | ENG | DOCS | DES | MS3 |
|  | DET | **Detailed design** |  | 2028-04-10 | 2028-06-04 |  |  |  |  |  |  |  |  |  |  |  |  |  |  |  |  |
|  | SUB | **Submittal** |  | 2028-04-10 | 2028-05-14 |  |  |  |  |  |  |  |  |  |  |  |  |  |  |  |  |
| HMD-E1070 |  | Detailed design: submittal (drawings, BOQ, data sheets) - Madinah | 20d | 2028-04-10 | 2028-05-14 | HMD-E1050 | 57d | 0d | Contract cost (BOQ x payment milestones) [222485 SAR]; Progress weight (fair EPC distribution, SAR value) [109740 SAR] | 109,740 | HHR | HMD | HHR | Standard | ETECHS | Detailed | Submittal | ENG | DOCS | DES | MS2 |
|  | APR | **Approval** |  | 2028-05-15 | 2028-06-04 |  |  |  |  |  |  |  |  |  |  |  |  |  |  |  |  |
| HMD-E1080 |  | Detailed design: SAR review and approval - Madinah | 15d | 2028-05-15 | 2028-06-04 | HMD-E1070 | 66d | 9d | Contract cost (BOQ x payment milestones) [222485 SAR]; Progress weight (fair EPC distribution, SAR value) [82460 SAR] | 82,460 | HHR | HMD | HHR | Standard | SAR | Detailed | Approval | ENG | DOCS | DES | MS3 |
|  | IFC | **IFC and shop drawings** |  | 2028-05-15 | 2028-06-15 |  |  |  |  |  |  |  |  |  |  |  |  |  |  |  |  |
|  | SUB | **Submittal** |  | 2028-05-15 | 2028-05-25 |  |  |  |  |  |  |  |  |  |  |  |  |  |  |  |  |
| HMD-E1090 |  | IFC and shop drawings: submittal - Madinah | 9d | 2028-05-15 | 2028-05-25 | HMD-E1070 | 57d | 0d | Contract cost (BOQ x payment milestones) [111243 SAR]; Progress weight (fair EPC distribution, SAR value) [43400 SAR] | 43,400 | HHR | HMD | HHR | Standard | ETECHS | IFC | Submittal | ENG | DOCS | DES | MS2 |
|  | APR | **Approval** |  | 2028-05-28 | 2028-06-15 |  |  |  |  |  |  |  |  |  |  |  |  |  |  |  |  |
| HMD-E1100 |  | IFC and shop drawings: SAR approval and release - Madinah | 15d | 2028-05-28 | 2028-06-15 | HMD-E1090 | 57d | 0d | Contract cost (BOQ x payment milestones) [111243 SAR]; Progress weight (fair EPC distribution, SAR value) [71920 SAR] | 71,920 | HHR | HMD | HHR | Standard | SAR | IFC | Approval | ENG | DOCS | DES | MS3 |

| ID | WBS | Activity | Type | Duration | Start | Finish | Predecessors | Total float | Free float | Resources | Cost | Area | Station | Railway | Priority | Responsibility | Design stage | Submittal or approval | EPC phase | Discipline | Programme phase | Payment milestone |
| --- | --- | --- | --- | --- | --- | --- | --- | --- | --- | --- | --- | --- | --- | --- | --- | --- | --- | --- | --- | --- | --- | --- |
|  | HCS | **HCIS documentation (Stage 3 and 4)** |  |  | 2028-04-20 | 2028-06-15 |  |  |  |  |  |  |  |  |  |  |  |  |  |  |  |  |
|  | SUB | **Submittal** |  |  | 2028-04-20 | 2028-05-25 |  |  |  |  |  |  |  |  |  |  |  |  |  |  |  |  |
| HMD-E1110 |  | HCIS Stage 3 and 4 documents: preparation - Madinah |  | 21d | 2028-04-20 | 2028-05-25 | HMD-E1050 FS+8d, HMD-E1090 FF | 57d | 0d | Contract cost (BOQ x payment milestones) [27811 SAR]; Progress weight (fair EPC distribution, SAR value) [22320 SAR] | 22,320 | HHR | HMD | HHR | Standard | ETECHS | HCIS | Submittal | ENG | DOCS | DES | MS2 |
|  | APR | **Approval** |  |  | 2028-05-28 | 2028-06-15 |  |  |  |  |  |  |  |  |  |  |  |  |  |  |  |  |
| HMD-E1120 |  | HCIS Stage 3 and 4 documents: SAR final review and HCIS submission - Madinah |  | 15d | 2028-05-28 | 2028-06-15 | HMD-E1110 | 57d | 0d | Contract cost (BOQ x payment milestones) [27811 SAR]; Progress weight (fair EPC distribution, SAR value) [16120 SAR] | 16,120 | HHR | HMD | HHR | Standard | SAR/HCIS | HCIS | Approval | ENG | DOCS | DES | MS3 |
|  | ASB | **As-built and O&M documentation** |  |  | 2029-04-16 | 2029-07-08 |  |  |  |  |  |  |  |  |  |  |  |  |  |  |  |  |
|  | SUB | **Submittal** |  |  | 2029-04-16 | 2029-06-17 |  |  |  |  |  |  |  |  |  |  |  |  |  |  |  |  |
| HMD-E1130 |  | As-built and O&M documentation: submittal - Madinah |  | 40d | 2029-04-16 | 2029-06-17 | HMD-C2100 | 57d | 0d | Contract cost (BOQ x payment milestones) [83432 SAR]; Progress weight (fair EPC distribution, SAR value) [46500 SAR] | 46,500 | HHR | HMD | HHR | Standard | ETECHS | As-built | Submittal | ENG | DOCS | COM | MS7 |
|  | APR | **Approval** |  |  | 2029-06-18 | 2029-07-08 |  |  |  |  |  |  |  |  |  |  |  |  |  |  |  |  |
| HMD-E1140 |  | As-built and O&M documentation: SAR review and approval - Madinah |  | 15d | 2029-06-18 | 2029-07-08 | HMD-E1130 | 57d | 0d | Contract cost (BOQ x payment milestones) [27811 SAR]; Progress weight (fair EPC distribution, SAR value) [17360 SAR] | 17,360 | HHR | HMD | HHR | Standard | SAR | As-built | Approval | ENG | DOCS | COM | MS7 |
|  | EAB | **Abqaiq (EWR)** |  |  | 2028-03-30 | 2029-03-11 |  |  |  |  |  |  |  |  |  |  |  |  |  |  |  |  |
| EAB-E1200 |  | MS2 Engineering submittal complete (10%) - Abqaiq | milestone | 0d | 2028-05-31 | 2028-05-31 | EAB-E1090, EAB-E1110 | 152d | 15d |  |  | EWR | EAB | EWR | Standard | ETECHS | - | - | MS | DOCS | MS | MS2 |
| EAB-E1210 |  | MS3 Engineering approved by SAR (10%) - Abqaiq | milestone | 0d | 2028-06-21 | 2028-06-21 | EAB-E1020, EAB-E1040, EAB-E1060, EAB-E1080, EAB-E1100, EAB-E1120, EAB-E1200 | 137d | 0d |  |  | EWR | EAB | EWR | Standard | SAR | - | - | MS | DOCS | MS | MS3 |
|  | SRV | **Site survey and as-found verification** |  |  | 2028-03-30 | 2028-05-10 |  |  |  |  |  |  |  |  |  |  |  |  |  |  |  |  |
|  | SUB | **Submittal** |  |  | 2028-03-30 | 2028-04-12 |  |  |  |  |  |  |  |  |  |  |  |  |  |  |  |  |
| EAB-E1010 |  | Survey: submittal of site survey and as-found report - Abqaiq |  | 10d | 2028-03-30 | 2028-04-12 | PRJ-M2100 FS+297d | 137d | 0d | Contract cost (BOQ x payment milestones) [10028 SAR]; Progress weight (fair EPC distribution, SAR value) [7440 SAR] | 7,440 | EWR | EAB | EWR | Standard | ETECHS | Survey | Submittal | ENG | DOCS | MOB | MS2 |
|  | APR | **Approval** |  |  | 2028-04-13 | 2028-05-10 |  |  |  |  |  |  |  |  |  |  |  |  |  |  |  |  |
| EAB-E1020 |  | Survey: SAR approval of survey report - Abqaiq |  | 15d | 2028-04-13 | 2028-05-10 | EAB-E1010 | 167d | 30d | Contract cost (BOQ x payment milestones) [10028 SAR]; Progress weight (fair EPC distribution, SAR value) [11160 SAR] | 11,160 | EWR | EAB | EWR | Standard | SAR | Survey | Approval | ENG | DOCS | MOB | MS3 |
|  | CNC | **Concept design** |  |  | 2028-04-13 | 2028-05-17 |  |  |  |  |  |  |  |  |  |  |  |  |  |  |  |  |
|  | SUB | **Submittal** |  |  | 2028-04-13 | 2028-04-19 |  |  |  |  |  |  |  |  |  |  |  |  |  |  |  |  |
| EAB-E1030 |  | Concept design: submittal - Abqaiq |  | 5d | 2028-04-13 | 2028-04-19 | EAB-E1010 | 137d | 0d | Contract cost (BOQ x payment milestones) [20057 SAR]; Progress weight (fair EPC distribution, SAR value) [5580 SAR] | 5,580 | EWR | EAB | EWR | Standard | ETECHS | Concept | Submittal | ENG | DOCS | DES | MS2 |
|  | APR | **Approval** |  |  | 2028-04-20 | 2028-05-17 |  |  |  |  |  |  |  |  |  |  |  |  |  |  |  |  |
| EAB-E1040 |  | Concept design: SAR review and approval - Abqaiq |  | 15d | 2028-04-20 | 2028-05-17 | EAB-E1030 | 162d | 25d | Contract cost (BOQ x payment milestones) [20057 SAR]; Progress weight (fair EPC distribution, SAR value) [17360 SAR] | 17,360 | EWR | EAB | EWR | Standard | SAR | Concept | Approval | ENG | DOCS | DES | MS3 |
|  | PRE | **Preliminary (schematic) design** |  |  | 2028-04-20 | 2028-05-29 |  |  |  |  |  |  |  |  |  |  |  |  |  |  |  |  |
|  | SUB | **Submittal** |  |  | 2028-04-20 | 2028-05-08 |  |  |  |  |  |  |  |  |  |  |  |  |  |  |  |  |
| EAB-E1050 |  | Preliminary design: submittal - Abqaiq |  | 8d | 2028-04-20 | 2028-05-08 | EAB-E1030 | 137d | 0d | Contract cost (BOQ x payment milestones) [40114 SAR]; Progress weight (fair EPC distribution, SAR value) [14260 SAR] | 14,260 | EWR | EAB | EWR | Standard | ETECHS | Preliminary | Submittal | ENG | DOCS | DES | MS2 |

| ID | WBS | Activity | Type | Duration | Start | Finish | Predecessors | Total float | Free float | Resources | Cost | Area | Station | Railway | Priority | Responsibility | Design stage | Submittal or approval | EPC phase | Discipline | Programme phase | Payment milestone |
| --- | --- | --- | --- | --- | --- | --- | --- | --- | --- | --- | --- | --- | --- | --- | --- | --- | --- | --- | --- | --- | --- | --- |
|  | APR | **Approval** |  |  | 2028-05-09 | 2028-05-29 |  |  |  |  |  |  |  |  |  |  |  |  |  |  |  |  |
| EAB-E1060 |  | Preliminary design: SAR review and approval - Abqaiq |  | 15d | 2028-05-09 | 2028-05-29 | EAB-E1050 | 154d | 17d | Contract cost (BOQ x payment milestones) [40114 SAR]; Progress weight (fair EPC distribution, SAR value) [27280 SAR] | 27,280 | EWR | EAB | EWR | Standard | SAR | Preliminary | Approval | ENG | DOCS | DES | MS3 |
|  | DET | **Detailed design** |  |  | 2028-05-09 | 2028-06-14 |  |  |  |  |  |  |  |  |  |  |  |  |  |  |  |  |
|  | SUB | **Submittal** |  |  | 2028-05-09 | 2028-05-24 |  |  |  |  |  |  |  |  |  |  |  |  |  |  |  |  |
| EAB-E1070 |  | Detailed design: submittal (drawings, BOQ, data sheets) - Abqaiq |  | 12d | 2028-05-09 | 2028-05-24 | EAB-E1050 | 137d | 0d | Contract cost (BOQ x payment milestones) [80227 SAR]; Progress weight (fair EPC distribution, SAR value) [31000 SAR] | 31,000 | EWR | EAB | EWR | Standard | ETECHS | Detailed | Submittal | ENG | DOCS | DES | MS2 |
|  | APR | **Approval** |  |  | 2028-05-25 | 2028-06-14 |  |  |  |  |  |  |  |  |  |  |  |  |  |  |  |  |
| EAB-E1080 |  | Detailed design: SAR review and approval - Abqaiq |  | 15d | 2028-05-25 | 2028-06-14 | EAB-E1070 | 142d | 5d | Contract cost (BOQ x payment milestones) [80227 SAR]; Progress weight (fair EPC distribution, SAR value) [38440 SAR] | 38,440 | EWR | EAB | EWR | Standard | SAR | Detailed | Approval | ENG | DOCS | DES | MS3 |
|  | IFC | **IFC and shop drawings** |  |  | 2028-05-25 | 2028-06-21 |  |  |  |  |  |  |  |  |  |  |  |  |  |  |  |  |
|  | SUB | **Submittal** |  |  | 2028-05-25 | 2028-05-31 |  |  |  |  |  |  |  |  |  |  |  |  |  |  |  |  |
| EAB-E1090 |  | IFC and shop drawings: submittal - Abqaiq |  | 5d | 2028-05-25 | 2028-05-31 | EAB-E1070 | 137d | 0d | Contract cost (BOQ x payment milestones) [40114 SAR]; Progress weight (fair EPC distribution, SAR value) [10540 SAR] | 10,540 | EWR | EAB | EWR | Standard | ETECHS | IFC | Submittal | ENG | DOCS | DES | MS2 |
|  | APR | **Approval** |  |  | 2028-06-01 | 2028-06-21 |  |  |  |  |  |  |  |  |  |  |  |  |  |  |  |  |
| EAB-E1100 |  | IFC and shop drawings: SAR approval and release - Abqaiq |  | 15d | 2028-06-01 | 2028-06-21 | EAB-E1090 | 137d | 0d | Contract cost (BOQ x payment milestones) [40114 SAR]; Progress weight (fair EPC distribution, SAR value) [31000 SAR] | 31,000 | EWR | EAB | EWR | Standard | SAR | IFC | Approval | ENG | DOCS | DES | MS3 |
|  | HCS | **HCIS documentation (Stage 3 and 4)** |  |  | 2028-05-16 | 2028-06-21 |  |  |  |  |  |  |  |  |  |  |  |  |  |  |  |  |
|  | SUB | **Submittal** |  |  | 2028-05-16 | 2028-05-31 |  |  |  |  |  |  |  |  |  |  |  |  |  |  |  |  |
| EAB-E1110 |  | HCIS Stage 3 and 4 documents: preparation - Abqaiq |  | 12d | 2028-05-16 | 2028-05-31 | EAB-E1050 FS+5d, EAB-E1090 FF | 137d | 0d | Contract cost (BOQ x payment milestones) [10028 SAR]; Progress weight (fair EPC distribution, SAR value) [6200 SAR] | 6,200 | EWR | EAB | EWR | Standard | ETECHS | HCIS | Submittal | ENG | DOCS | DES | MS2 |
|  | APR | **Approval** |  |  | 2028-06-01 | 2028-06-21 |  |  |  |  |  |  |  |  |  |  |  |  |  |  |  |  |
| EAB-E1120 |  | HCIS Stage 3 and 4 documents: SAR final review and HCIS submission - Abqaiq |  | 15d | 2028-06-01 | 2028-06-21 | EAB-E1110 | 137d | 0d | Contract cost (BOQ x payment milestones) [10028 SAR]; Progress weight (fair EPC distribution, SAR value) [7440 SAR] | 7,440 | EWR | EAB | EWR | Standard | SAR/HCIS | HCIS | Approval | ENG | DOCS | DES | MS3 |
|  | ASB | **As-built and O&M documentation** |  |  | 2028-12-31 | 2029-03-11 |  |  |  |  |  |  |  |  |  |  |  |  |  |  |  |  |
|  | SUB | **Submittal** |  |  | 2028-12-31 | 2029-02-08 |  |  |  |  |  |  |  |  |  |  |  |  |  |  |  |  |
| EAB-E1130 |  | As-built and O&M documentation: submittal - Abqaiq |  | 30d | 2028-12-31 | 2029-02-08 | EAB-C2100 | 137d | 0d | Contract cost (BOQ x payment milestones) [30085 SAR]; Progress weight (fair EPC distribution, SAR value) [15500 SAR] | 15,500 | EWR | EAB | EWR | Standard | ETECHS | As-built | Submittal | ENG | DOCS | COM | MS7 |
|  | APR | **Approval** |  |  | 2029-02-18 | 2029-03-11 |  |  |  |  |  |  |  |  |  |  |  |  |  |  |  |  |
| EAB-E1140 |  | As-built and O&M documentation: SAR review and approval - Abqaiq |  | 15d | 2029-02-18 | 2029-03-11 | EAB-E1130 | 137d | 0d | Contract cost (BOQ x payment milestones) [10028 SAR]; Progress weight (fair EPC distribution, SAR value) [7440 SAR] | 7,440 | EWR | EAB | EWR | Standard | SAR | As-built | Approval | ENG | DOCS | COM | MS7 |
|  | NHL | **Hail (NSR)** |  |  | 2028-04-25 | 2029-04-18 |  |  |  |  |  |  |  |  |  |  |  |  |  |  |  |  |
| NHL-E1200 |  | MS2 Engineering submittal complete (10%) - Hail | milestone | 0d | 2028-06-26 | 2028-06-26 | NHL-E1090, NHL-E1110 | 124d | 15d |  |  | NSR | NHL | NSR | Standard | ETECHS | - | - | MS | DOCS | MS | MS2 |
| NHL-E1210 |  | MS3 Engineering approved by SAR (10%) - Hail | milestone | 0d | 2028-07-17 | 2028-07-17 | NHL-E1020, NHL-E1040, NHL-E1060, NHL-E1080, NHL-E1100, NHL-E1120, NHL-E1200 | 109d | 0d |  |  | NSR | NHL | NSR | Standard | SAR | - | - | MS | DOCS | MS | MS3 |

| ID | WBS | Activity | Duration | Start | Finish | Predecessors | Total float | Free float | Resources | Cost | Area | Station | Railway | Priority | Responsibility | Design stage | Submittal or approval | EPC phase | Discipline | Programme phase | Payment milestone |
| --- | --- | --- | --- | --- | --- | --- | --- | --- | --- | --- | --- | --- | --- | --- | --- | --- | --- | --- | --- | --- | --- |
|  | SRV | **Site survey and as-found verification** |  | 2028-04-25 | 2028-06-05 |  |  |  |  |  |  |  |  |  |  |  |  |  |  |  |  |
|  | SUB | **Submittal** |  | 2028-04-25 | 2028-05-15 |  |  |  |  |  |  |  |  |  |  |  |  |  |  |  |  |
| NHL-E1010 |  | Survey: submittal of site survey and as-found report - Hail | 10d | 2028-04-25 | 2028-05-15 | PRJ-M2100 FS+315d | 109d | 0d | Contract cost (BOQ x payment milestones) [16995 SAR]; Progress weight (fair EPC distribution, SAR value) [12400 SAR] | 12,400 | NSR | NHL | NSR | Standard | ETECHS | Survey | Submittal | ENG | DOCS | MOB | MS2 |
|  | APR | **Approval** |  | 2028-05-16 | 2028-06-05 |  |  |  |  |  |  |  |  |  |  |  |  |  |  |  |  |
| NHL-E1020 |  | Survey: SAR approval of survey report - Hail | 15d | 2028-05-16 | 2028-06-05 | NHL-E1010 | 139d | 30d | Contract cost (BOQ x payment milestones) [16995 SAR]; Progress weight (fair EPC distribution, SAR value) [18600 SAR] | 18,600 | NSR | NHL | NSR | Standard | SAR | Survey | Approval | ENG | DOCS | MOB | MS3 |
|  | CNC | **Concept design** |  | 2028-05-16 | 2028-06-12 |  |  |  |  |  |  |  |  |  |  |  |  |  |  |  |  |
|  | SUB | **Submittal** |  | 2028-05-16 | 2028-05-22 |  |  |  |  |  |  |  |  |  |  |  |  |  |  |  |  |
| NHL-E1030 |  | Concept design: submittal - Hail | 5d | 2028-05-16 | 2028-05-22 | NHL-E1010 | 109d | 0d | Contract cost (BOQ x payment milestones) [33989 SAR]; Progress weight (fair EPC distribution, SAR value) [9920 SAR] | 9,920 | NSR | NHL | NSR | Standard | ETECHS | Concept | Submittal | ENG | DOCS | DES | MS2 |
|  | APR | **Approval** |  | 2028-05-23 | 2028-06-12 |  |  |  |  |  |  |  |  |  |  |  |  |  |  |  |  |
| NHL-E1040 |  | Concept design: SAR review and approval - Hail | 15d | 2028-05-23 | 2028-06-12 | NHL-E1030 | 134d | 25d | Contract cost (BOQ x payment milestones) [33989 SAR]; Progress weight (fair EPC distribution, SAR value) [29140 SAR] | 29,140 | NSR | NHL | NSR | Standard | SAR | Concept | Approval | ENG | DOCS | DES | MS3 |
|  | PRE | **Preliminary (schematic) design** |  | 2028-05-23 | 2028-06-22 |  |  |  |  |  |  |  |  |  |  |  |  |  |  |  |  |
|  | SUB | **Submittal** |  | 2028-05-23 | 2028-06-01 |  |  |  |  |  |  |  |  |  |  |  |  |  |  |  |  |
| NHL-E1050 |  | Preliminary design: submittal - Hail | 8d | 2028-05-23 | 2028-06-01 | NHL-E1030 | 109d | 0d | Contract cost (BOQ x payment milestones) [67978 SAR]; Progress weight (fair EPC distribution, SAR value) [24800 SAR] | 24,800 | NSR | NHL | NSR | Standard | ETECHS | Preliminary | Submittal | ENG | DOCS | DES | MS2 |
|  | APR | **Approval** |  | 2028-06-04 | 2028-06-22 |  |  |  |  |  |  |  |  |  |  |  |  |  |  |  |  |
| NHL-E1060 |  | Preliminary design: SAR review and approval - Hail | 15d | 2028-06-04 | 2028-06-22 | NHL-E1050 | 126d | 17d | Contract cost (BOQ x payment milestones) [67978 SAR]; Progress weight (fair EPC distribution, SAR value) [45880 SAR] | 45,880 | NSR | NHL | NSR | Standard | SAR | Preliminary | Approval | ENG | DOCS | DES | MS3 |
|  | DET | **Detailed design** |  | 2028-06-04 | 2028-07-10 |  |  |  |  |  |  |  |  |  |  |  |  |  |  |  |  |
|  | SUB | **Submittal** |  | 2028-06-04 | 2028-06-19 |  |  |  |  |  |  |  |  |  |  |  |  |  |  |  |  |
| NHL-E1070 |  | Detailed design: submittal (drawings, BOQ, data sheets) - Hail | 12d | 2028-06-04 | 2028-06-19 | NHL-E1050 | 109d | 0d | Contract cost (BOQ x payment milestones) [135957 SAR]; Progress weight (fair EPC distribution, SAR value) [52080 SAR] | 52,080 | NSR | NHL | NSR | Standard | ETECHS | Detailed | Submittal | ENG | DOCS | DES | MS2 |
|  | APR | **Approval** |  | 2028-06-20 | 2028-07-10 |  |  |  |  |  |  |  |  |  |  |  |  |  |  |  |  |
| NHL-E1080 |  | Detailed design: SAR review and approval - Hail | 15d | 2028-06-20 | 2028-07-10 | NHL-E1070 | 114d | 5d | Contract cost (BOQ x payment milestones) [135957 SAR]; Progress weight (fair EPC distribution, SAR value) [65100 SAR] | 65,100 | NSR | NHL | NSR | Standard | SAR | Detailed | Approval | ENG | DOCS | DES | MS3 |
|  | IFC | **IFC and shop drawings** |  | 2028-06-20 | 2028-07-17 |  |  |  |  |  |  |  |  |  |  |  |  |  |  |  |  |
|  | SUB | **Submittal** |  | 2028-06-20 | 2028-06-26 |  |  |  |  |  |  |  |  |  |  |  |  |  |  |  |  |
| NHL-E1090 |  | IFC and shop drawings: submittal - Hail | 5d | 2028-06-20 | 2028-06-26 | NHL-E1070 | 109d | 0d | Contract cost (BOQ x payment milestones) [67978 SAR]; Progress weight (fair EPC distribution, SAR value) [17360 SAR] | 17,360 | NSR | NHL | NSR | Standard | ETECHS | IFC | Submittal | ENG | DOCS | DES | MS2 |
|  | APR | **Approval** |  | 2028-06-27 | 2028-07-17 |  |  |  |  |  |  |  |  |  |  |  |  |  |  |  |  |
| NHL-E1100 |  | IFC and shop drawings: SAR approval and release - Hail | 15d | 2028-06-27 | 2028-07-17 | NHL-E1090 | 109d | 0d | Contract cost (BOQ x payment milestones) [67978 SAR]; Progress weight (fair EPC distribution, SAR value) [52700 SAR] | 52,700 | NSR | NHL | NSR | Standard | SAR | IFC | Approval | ENG | DOCS | DES | MS3 |

| ID | WBS | Activity | Type | Duration | Start | Finish | Predecessors | Total float | Free float | Resources | Cost | Area | Station | Railway | Priority | Responsibility | Design stage | Submittal or approval | EPC phase | Discipline | Programme phase | Payment milestone |
| --- | --- | --- | --- | --- | --- | --- | --- | --- | --- | --- | --- | --- | --- | --- | --- | --- | --- | --- | --- | --- | --- | --- |
|  | HCS | **HCIS documentation (Stage 3 and 4)** |  |  | 2028-06-11 | 2028-07-17 |  |  |  |  |  |  |  |  |  |  |  |  |  |  |  |  |
|  | SUB | **Submittal** |  |  | 2028-06-11 | 2028-06-26 |  |  |  |  |  |  |  |  |  |  |  |  |  |  |  |  |
| NHL-E1110 |  | HCIS Stage 3 and 4 documents: preparation - Hail |  | 12d | 2028-06-11 | 2028-06-26 | NHL-E1050 FS+5d, NHL-E1090 FF | 109d | 0d | Contract cost (BOQ x payment milestones) [16995 SAR]; Progress weight (fair EPC distribution, SAR value) [10540 SAR] | 10,540 | NSR | NHL | NSR | Standard | ETECHS | HCIS | Submittal | ENG | DOCS | DES | MS2 |
|  | APR | **Approval** |  |  | 2028-06-27 | 2028-07-17 |  |  |  |  |  |  |  |  |  |  |  |  |  |  |  |  |
| NHL-E1120 |  | HCIS Stage 3 and 4 documents: SAR final review and HCIS submission - Hail |  | 15d | 2028-06-27 | 2028-07-17 | NHL-E1110 | 109d | 0d | Contract cost (BOQ x payment milestones) [16995 SAR]; Progress weight (fair EPC distribution, SAR value) [13020 SAR] | 13,020 | NSR | NHL | NSR | Standard | SAR/HCIS | HCIS | Approval | ENG | DOCS | DES | MS3 |
|  | ASB | **As-built and O&M documentation** |  |  | 2029-02-07 | 2029-04-18 |  |  |  |  |  |  |  |  |  |  |  |  |  |  |  |  |
|  | SUB | **Submittal** |  |  | 2029-02-07 | 2029-03-28 |  |  |  |  |  |  |  |  |  |  |  |  |  |  |  |  |
| NHL-E1130 |  | As-built and O&M documentation: submittal - Hail |  | 30d | 2029-02-07 | 2029-03-28 | NHL-C2100 | 109d | 0d | Contract cost (BOQ x payment milestones) [50984 SAR]; Progress weight (fair EPC distribution, SAR value) [26040 SAR] | 26,040 | NSR | NHL | NSR | Standard | ETECHS | As-built | Submittal | ENG | DOCS | COM | MS7 |
|  | APR | **Approval** |  |  | 2029-03-29 | 2029-04-18 |  |  |  |  |  |  |  |  |  |  |  |  |  |  |  |  |
| NHL-E1140 |  | As-built and O&M documentation: SAR review and approval - Hail |  | 15d | 2029-03-29 | 2029-04-18 | NHL-E1130 | 109d | 0d | Contract cost (BOQ x payment milestones) [16995 SAR]; Progress weight (fair EPC distribution, SAR value) [13020 SAR] | 13,020 | NSR | NHL | NSR | Standard | SAR | As-built | Approval | ENG | DOCS | COM | MS7 |
|  | NJF | **Al Jouf (NSR)** |  |  | 2028-07-13 | 2029-07-08 |  |  |  |  |  |  |  |  |  |  |  |  |  |  |  |  |
| NJF-E1200 |  | MS2 Engineering submittal complete (10%) - Al Jouf | milestone | 0d | 2028-09-06 | 2028-09-06 | NJF-E1090, NJF-E1110 | 72d | 15d |  |  | NSR | NJF | NSR | Standard | ETECHS | - | - | MS | DOCS | MS | MS2 |
| NJF-E1210 |  | MS3 Engineering approved by SAR (10%) - Al Jouf | milestone | 0d | 2028-09-27 | 2028-09-27 | NJF-E1020, NJF-E1040, NJF-E1060, NJF-E1080, NJF-E1100, NJF-E1120, NJF-E1200 | 57d | 0d |  |  | NSR | NJF | NSR | Standard | SAR | - | - | MS | DOCS | MS | MS3 |
|  | SRV | **Site survey and as-found verification** |  |  | 2028-07-13 | 2028-08-16 |  |  |  |  |  |  |  |  |  |  |  |  |  |  |  |  |
|  | SUB | **Submittal** |  |  | 2028-07-13 | 2028-07-26 |  |  |  |  |  |  |  |  |  |  |  |  |  |  |  |  |
| NJF-E1010 |  | Survey: submittal of site survey and as-found report - Al Jouf |  | 10d | 2028-07-13 | 2028-07-26 | PRJ-M2100 FS+367d | 57d | 0d | Contract cost (BOQ x payment milestones) [17114 SAR]; Progress weight (fair EPC distribution, SAR value) [12400 SAR] | 12,400 | NSR | NJF | NSR | Standard | ETECHS | Survey | Submittal | ENG | DOCS | MOB | MS2 |
|  | APR | **Approval** |  |  | 2028-07-27 | 2028-08-16 |  |  |  |  |  |  |  |  |  |  |  |  |  |  |  |  |
| NJF-E1020 |  | Survey: SAR approval of survey report - Al Jouf |  | 15d | 2028-07-27 | 2028-08-16 | NJF-E1010 | 87d | 30d | Contract cost (BOQ x payment milestones) [17114 SAR]; Progress weight (fair EPC distribution, SAR value) [19220 SAR] | 19,220 | NSR | NJF | NSR | Standard | SAR | Survey | Approval | ENG | DOCS | MOB | MS3 |
|  | CNC | **Concept design** |  |  | 2028-07-27 | 2028-08-23 |  |  |  |  |  |  |  |  |  |  |  |  |  |  |  |  |
|  | SUB | **Submittal** |  |  | 2028-07-27 | 2028-08-02 |  |  |  |  |  |  |  |  |  |  |  |  |  |  |  |  |
| NJF-E1030 |  | Concept design: submittal - Al Jouf |  | 5d | 2028-07-27 | 2028-08-02 | NJF-E1010 | 57d | 0d | Contract cost (BOQ x payment milestones) [34228 SAR]; Progress weight (fair EPC distribution, SAR value) [9920 SAR] | 9,920 | NSR | NJF | NSR | Standard | ETECHS | Concept | Submittal | ENG | DOCS | DES | MS2 |
|  | APR | **Approval** |  |  | 2028-08-03 | 2028-08-23 |  |  |  |  |  |  |  |  |  |  |  |  |  |  |  |  |
| NJF-E1040 |  | Concept design: SAR review and approval - Al Jouf |  | 15d | 2028-08-03 | 2028-08-23 | NJF-E1030 | 82d | 25d | Contract cost (BOQ x payment milestones) [34228 SAR]; Progress weight (fair EPC distribution, SAR value) [29760 SAR] | 29,760 | NSR | NJF | NSR | Standard | SAR | Concept | Approval | ENG | DOCS | DES | MS3 |
|  | PRE | **Preliminary (schematic) design** |  |  | 2028-08-03 | 2028-09-04 |  |  |  |  |  |  |  |  |  |  |  |  |  |  |  |  |
|  | SUB | **Submittal** |  |  | 2028-08-03 | 2028-08-14 |  |  |  |  |  |  |  |  |  |  |  |  |  |  |  |  |
| NJF-E1050 |  | Preliminary design: submittal - Al Jouf |  | 8d | 2028-08-03 | 2028-08-14 | NJF-E1030 | 57d | 0d | Contract cost (BOQ x payment milestones) [68457 SAR]; Progress weight (fair EPC distribution, SAR value) [24800 SAR] | 24,800 | NSR | NJF | NSR | Standard | ETECHS | Preliminary | Submittal | ENG | DOCS | DES | MS2 |

| ID | WBS | Activity | Type | Duration | Start | Finish | Predecessors | Total float | Free float | Resources | Cost | Area | Station | Railway | Priority | Responsibility | Design stage | Submittal or approval | EPC phase | Discipline | Programme phase | Payment milestone |
| --- | --- | --- | --- | --- | --- | --- | --- | --- | --- | --- | --- | --- | --- | --- | --- | --- | --- | --- | --- | --- | --- | --- |
|  | APR | **Approval** |  |  | 2028-08-15 | 2028-09-04 |  |  |  |  |  |  |  |  |  |  |  |  |  |  |  |  |
| NJF-E1060 |  | Preliminary design: SAR review and approval - Al Jouf |  | 15d | 2028-08-15 | 2028-09-04 | NJF-E1050 | 74d | 17d | Contract cost (BOQ x payment milestones) [68457 SAR]; Progress weight (fair EPC distribution, SAR value) [46500 SAR] | 46,500 | NSR | NJF | NSR | Standard | SAR | Preliminary | Approval | ENG | DOCS | DES | MS3 |
|  | DET | **Detailed design** |  |  | 2028-08-15 | 2028-09-20 |  |  |  |  |  |  |  |  |  |  |  |  |  |  |  |  |
|  | SUB | **Submittal** |  |  | 2028-08-15 | 2028-08-30 |  |  |  |  |  |  |  |  |  |  |  |  |  |  |  |  |
| NJF-E1070 |  | Detailed design: submittal (drawings, BOQ, data sheets) - Al Jouf |  | 12d | 2028-08-15 | 2028-08-30 | NJF-E1050 | 57d | 0d | Contract cost (BOQ x payment milestones) [136914 SAR]; Progress weight (fair EPC distribution, SAR value) [52700 SAR] | 52,700 | NSR | NJF | NSR | Standard | ETECHS | Detailed | Submittal | ENG | DOCS | DES | MS2 |
|  | APR | **Approval** |  |  | 2028-08-31 | 2028-09-20 |  |  |  |  |  |  |  |  |  |  |  |  |  |  |  |  |
| NJF-E1080 |  | Detailed design: SAR review and approval - Al Jouf |  | 15d | 2028-08-31 | 2028-09-20 | NJF-E1070 | 62d | 5d | Contract cost (BOQ x payment milestones) [136914 SAR]; Progress weight (fair EPC distribution, SAR value) [65720 SAR] | 65,720 | NSR | NJF | NSR | Standard | SAR | Detailed | Approval | ENG | DOCS | DES | MS3 |
|  | IFC | **IFC and shop drawings** |  |  | 2028-08-31 | 2028-09-27 |  |  |  |  |  |  |  |  |  |  |  |  |  |  |  |  |
|  | SUB | **Submittal** |  |  | 2028-08-31 | 2028-09-06 |  |  |  |  |  |  |  |  |  |  |  |  |  |  |  |  |
| NJF-E1090 |  | IFC and shop drawings: submittal - Al Jouf |  | 5d | 2028-08-31 | 2028-09-06 | NJF-E1070 | 57d | 0d | Contract cost (BOQ x payment milestones) [68457 SAR]; Progress weight (fair EPC distribution, SAR value) [17980 SAR] | 17,980 | NSR | NJF | NSR | Standard | ETECHS | IFC | Submittal | ENG | DOCS | DES | MS2 |
|  | APR | **Approval** |  |  | 2028-09-07 | 2028-09-27 |  |  |  |  |  |  |  |  |  |  |  |  |  |  |  |  |
| NJF-E1100 |  | IFC and shop drawings: SAR approval and release - Al Jouf |  | 15d | 2028-09-07 | 2028-09-27 | NJF-E1090 | 57d | 0d | Contract cost (BOQ x payment milestones) [68457 SAR]; Progress weight (fair EPC distribution, SAR value) [53320 SAR] | 53,320 | NSR | NJF | NSR | Standard | SAR | IFC | Approval | ENG | DOCS | DES | MS3 |
|  | HCS | **HCIS documentation (Stage 3 and 4)** |  |  | 2028-08-22 | 2028-09-27 |  |  |  |  |  |  |  |  |  |  |  |  |  |  |  |  |
|  | SUB | **Submittal** |  |  | 2028-08-22 | 2028-09-06 |  |  |  |  |  |  |  |  |  |  |  |  |  |  |  |  |
| NJF-E1110 |  | HCIS Stage 3 and 4 documents: preparation - Al Jouf |  | 12d | 2028-08-22 | 2028-09-06 | NJF-E1050 FS+5d, NJF-E1090 FF | 57d | 0d | Contract cost (BOQ x payment milestones) [17114 SAR]; Progress weight (fair EPC distribution, SAR value) [10540 SAR] | 10,540 | NSR | NJF | NSR | Standard | ETECHS | HCIS | Submittal | ENG | DOCS | DES | MS2 |
|  | APR | **Approval** |  |  | 2028-09-07 | 2028-09-27 |  |  |  |  |  |  |  |  |  |  |  |  |  |  |  |  |
| NJF-E1120 |  | HCIS Stage 3 and 4 documents: SAR final review and HCIS submission - Al Jouf |  | 15d | 2028-09-07 | 2028-09-27 | NJF-E1110 | 57d | 0d | Contract cost (BOQ x payment milestones) [17114 SAR]; Progress weight (fair EPC distribution, SAR value) [13020 SAR] | 13,020 | NSR | NJF | NSR | Standard | SAR/HCIS | HCIS | Approval | ENG | DOCS | DES | MS3 |
|  | ASB | **As-built and O&M documentation** |  |  | 2029-05-07 | 2029-07-08 |  |  |  |  |  |  |  |  |  |  |  |  |  |  |  |  |
|  | SUB | **Submittal** |  |  | 2029-05-07 | 2029-06-17 |  |  |  |  |  |  |  |  |  |  |  |  |  |  |  |  |
| NJF-E1130 |  | As-built and O&M documentation: submittal - Al Jouf |  | 30d | 2029-05-07 | 2029-06-17 | NJF-C2100 | 57d | 0d | Contract cost (BOQ x payment milestones) [51343 SAR]; Progress weight (fair EPC distribution, SAR value) [26040 SAR] | 26,040 | NSR | NJF | NSR | Standard | ETECHS | As-built | Submittal | ENG | DOCS | COM | MS7 |
|  | APR | **Approval** |  |  | 2029-06-18 | 2029-07-08 |  |  |  |  |  |  |  |  |  |  |  |  |  |  |  |  |
| NJF-E1140 |  | As-built and O&M documentation: SAR review and approval - Al Jouf |  | 15d | 2029-06-18 | 2029-07-08 | NJF-E1130 | 57d | 0d | Contract cost (BOQ x payment milestones) [17114 SAR]; Progress weight (fair EPC distribution, SAR value) [13020 SAR] | 13,020 | NSR | NJF | NSR | Standard | SAR | As-built | Approval | ENG | DOCS | COM | MS7 |
|  | NQR | **Al Qurayyat (NSR)** |  |  | 2028-08-31 | 2029-08-26 |  |  |  |  |  |  |  |  |  |  |  |  |  |  |  |  |
| NQR-E1200 |  | MS2 Engineering submittal complete (10%) - Al Qurayyat | milestone | 0d | 2028-10-25 | 2028-10-25 | NQR-E1090, NQR-E1110 | 37d | 15d |  |  | NSR | NQR | NSR | Standard | ETECHS | - | - | MS | DOCS | MS | MS2 |
| NQR-E1210 |  | MS3 Engineering approved by SAR (10%) - Al Qurayyat | milestone | 0d | 2028-11-15 | 2028-11-15 | NQR-E1020, NQR-E1040, NQR-E1060, NQR-E1080, NQR-E1100, NQR-E1120, NQR-E1200 | 22d | 0d |  |  | NSR | NQR | NSR | Standard | SAR | - | - | MS | DOCS | MS | MS3 |

| ID | WBS | Activity | Duration | Start | Finish | Predecessors | Total float | Free float | Resources | Cost | Area | Station | Railway | Priority | Responsibility | Design stage | Submittal or approval | EPC phase | Discipline | Programme phase | Payment milestone |
| --- | --- | --- | --- | --- | --- | --- | --- | --- | --- | --- | --- | --- | --- | --- | --- | --- | --- | --- | --- | --- | --- |
|  | SRV | **Site survey and as-found verification** |  | 2028-08-31 | 2028-10-04 |  |  |  |  |  |  |  |  |  |  |  |  |  |  |  |  |
|  | SUB | **Submittal** |  | 2028-08-31 | 2028-09-13 |  |  |  |  |  |  |  |  |  |  |  |  |  |  |  |  |
| NQR-E1010 |  | Survey: submittal of site survey and as-found report - Al Qurayyat | 10d | 2028-08-31 | 2028-09-13 | PRJ-M2100 FS+402d | 22d | 0d | Contract cost (BOQ x payment milestones) [16995 SAR]; Progress weight (fair EPC distribution, SAR value) [12400 SAR] | 12,400 | NSR | NQR | NSR | Standard | ETECHS | Survey | Submittal | ENG | DOCS | MOB | MS2 |
|  | APR | **Approval** |  | 2028-09-14 | 2028-10-04 |  |  |  |  |  |  |  |  |  |  |  |  |  |  |  |  |
| NQR-E1020 |  | Survey: SAR approval of survey report - Al Qurayyat | 15d | 2028-09-14 | 2028-10-04 | NQR-E1010 | 52d | 30d | Contract cost (BOQ x payment milestones) [16995 SAR]; Progress weight (fair EPC distribution, SAR value) [18600 SAR] | 18,600 | NSR | NQR | NSR | Standard | SAR | Survey | Approval | ENG | DOCS | MOB | MS3 |
|  | CNC | **Concept design** |  | 2028-09-14 | 2028-10-11 |  |  |  |  |  |  |  |  |  |  |  |  |  |  |  |  |
|  | SUB | **Submittal** |  | 2028-09-14 | 2028-09-20 |  |  |  |  |  |  |  |  |  |  |  |  |  |  |  |  |
| NQR-E1030 |  | Concept design: submittal - Al Qurayyat | 5d | 2028-09-14 | 2028-09-20 | NQR-E1010 | 22d | 0d | Contract cost (BOQ x payment milestones) [33989 SAR]; Progress weight (fair EPC distribution, SAR value) [9920 SAR] | 9,920 | NSR | NQR | NSR | Standard | ETECHS | Concept | Submittal | ENG | DOCS | DES | MS2 |
|  | APR | **Approval** |  | 2028-09-21 | 2028-10-11 |  |  |  |  |  |  |  |  |  |  |  |  |  |  |  |  |
| NQR-E1040 |  | Concept design: SAR review and approval - Al Qurayyat | 15d | 2028-09-21 | 2028-10-11 | NQR-E1030 | 47d | 25d | Contract cost (BOQ x payment milestones) [33989 SAR]; Progress weight (fair EPC distribution, SAR value) [29140 SAR] | 29,140 | NSR | NQR | NSR | Standard | SAR | Concept | Approval | ENG | DOCS | DES | MS3 |
|  | PRE | **Preliminary (schematic) design** |  | 2028-09-21 | 2028-10-23 |  |  |  |  |  |  |  |  |  |  |  |  |  |  |  |  |
|  | SUB | **Submittal** |  | 2028-09-21 | 2028-10-02 |  |  |  |  |  |  |  |  |  |  |  |  |  |  |  |  |
| NQR-E1050 |  | Preliminary design: submittal - Al Qurayyat | 8d | 2028-09-21 | 2028-10-02 | NQR-E1030 | 22d | 0d | Contract cost (BOQ x payment milestones) [67978 SAR]; Progress weight (fair EPC distribution, SAR value) [24800 SAR] | 24,800 | NSR | NQR | NSR | Standard | ETECHS | Preliminary | Submittal | ENG | DOCS | DES | MS2 |
|  | APR | **Approval** |  | 2028-10-03 | 2028-10-23 |  |  |  |  |  |  |  |  |  |  |  |  |  |  |  |  |
| NQR-E1060 |  | Preliminary design: SAR review and approval - Al Qurayyat | 15d | 2028-10-03 | 2028-10-23 | NQR-E1050 | 39d | 17d | Contract cost (BOQ x payment milestones) [67978 SAR]; Progress weight (fair EPC distribution, SAR value) [45880 SAR] | 45,880 | NSR | NQR | NSR | Standard | SAR | Preliminary | Approval | ENG | DOCS | DES | MS3 |
|  | DET | **Detailed design** |  | 2028-10-03 | 2028-11-08 |  |  |  |  |  |  |  |  |  |  |  |  |  |  |  |  |
|  | SUB | **Submittal** |  | 2028-10-03 | 2028-10-18 |  |  |  |  |  |  |  |  |  |  |  |  |  |  |  |  |
| NQR-E1070 |  | Detailed design: submittal (drawings, BOQ, data sheets) - Al Qurayyat | 12d | 2028-10-03 | 2028-10-18 | NQR-E1050 | 22d | 0d | Contract cost (BOQ x payment milestones) [135957 SAR]; Progress weight (fair EPC distribution, SAR value) [52080 SAR] | 52,080 | NSR | NQR | NSR | Standard | ETECHS | Detailed | Submittal | ENG | DOCS | DES | MS2 |
|  | APR | **Approval** |  | 2028-10-19 | 2028-11-08 |  |  |  |  |  |  |  |  |  |  |  |  |  |  |  |  |
| NQR-E1080 |  | Detailed design: SAR review and approval - Al Qurayyat | 15d | 2028-10-19 | 2028-11-08 | NQR-E1070 | 27d | 5d | Contract cost (BOQ x payment milestones) [135957 SAR]; Progress weight (fair EPC distribution, SAR value) [65100 SAR] | 65,100 | NSR | NQR | NSR | Standard | SAR | Detailed | Approval | ENG | DOCS | DES | MS3 |
|  | IFC | **IFC and shop drawings** |  | 2028-10-19 | 2028-11-15 |  |  |  |  |  |  |  |  |  |  |  |  |  |  |  |  |
|  | SUB | **Submittal** |  | 2028-10-19 | 2028-10-25 |  |  |  |  |  |  |  |  |  |  |  |  |  |  |  |  |
| NQR-E1090 |  | IFC and shop drawings: submittal - Al Qurayyat | 5d | 2028-10-19 | 2028-10-25 | NQR-E1070 | 22d | 0d | Contract cost (BOQ x payment milestones) [67978 SAR]; Progress weight (fair EPC distribution, SAR value) [17360 SAR] | 17,360 | NSR | NQR | NSR | Standard | ETECHS | IFC | Submittal | ENG | DOCS | DES | MS2 |
|  | APR | **Approval** |  | 2028-10-26 | 2028-11-15 |  |  |  |  |  |  |  |  |  |  |  |  |  |  |  |  |
| NQR-E1100 |  | IFC and shop drawings: SAR approval and release - Al Qurayyat | 15d | 2028-10-26 | 2028-11-15 | NQR-E1090 | 22d | 0d | Contract cost (BOQ x payment milestones) [67978 SAR]; Progress weight (fair EPC distribution, SAR value) [52700 SAR] | 52,700 | NSR | NQR | NSR | Standard | SAR | IFC | Approval | ENG | DOCS | DES | MS3 |

| ID | WBS | Activity | Type | Duration | Start | Finish | Predecessors | Total float | Free float | Resources | Cost | Area | Station | Railway | Priority | Responsibility | Design stage | Submittal or approval | EPC phase | Discipline | Programme phase | Payment milestone |
| --- | --- | --- | --- | --- | --- | --- | --- | --- | --- | --- | --- | --- | --- | --- | --- | --- | --- | --- | --- | --- | --- | --- |
|  | HCS | **HCIS documentation (Stage 3 and 4)** |  |  | 2028-10-10 | 2028-11-15 |  |  |  |  |  |  |  |  |  |  |  |  |  |  |  |  |
|  | SUB | **Submittal** |  |  | 2028-10-10 | 2028-10-25 |  |  |  |  |  |  |  |  |  |  |  |  |  |  |  |  |
| NQR-E1110 |  | HCIS Stage 3 and 4 documents: preparation - Al Qurayyat |  | 12d | 2028-10-10 | 2028-10-25 | NQR-E1050 FS+5d, NQR-E1090 FF | 22d | 0d | Contract cost (BOQ x payment milestones) [16995 SAR]; Progress weight (fair EPC distribution, SAR value) [10540 SAR] | 10,540 | NSR | NQR | NSR | Standard | ETECHS | HCIS | Submittal | ENG | DOCS | DES | MS2 |
|  | APR | **Approval** |  |  | 2028-10-26 | 2028-11-15 |  |  |  |  |  |  |  |  |  |  |  |  |  |  |  |  |
| NQR-E1120 |  | HCIS Stage 3 and 4 documents: SAR final review and HCIS submission - Al Qurayyat |  | 15d | 2028-10-26 | 2028-11-15 | NQR-E1110 | 22d | 0d | Contract cost (BOQ x payment milestones) [16995 SAR]; Progress weight (fair EPC distribution, SAR value) [13020 SAR] | 13,020 | NSR | NQR | NSR | Standard | SAR/HCIS | HCIS | Approval | ENG | DOCS | DES | MS3 |
|  | ASB | **As-built and O&M documentation** |  |  | 2029-06-25 | 2029-08-26 |  |  |  |  |  |  |  |  |  |  |  |  |  |  |  |  |
|  | SUB | **Submittal** |  |  | 2029-06-25 | 2029-08-05 |  |  |  |  |  |  |  |  |  |  |  |  |  |  |  |  |
| NQR-E1130 |  | As-built and O&M documentation: submittal - Al Qurayyat |  | 30d | 2029-06-25 | 2029-08-05 | NQR-C2100 | 22d | 0d | Contract cost (BOQ x payment milestones) [50984 SAR]; Progress weight (fair EPC distribution, SAR value) [26040 SAR] | 26,040 | NSR | NQR | NSR | Standard | ETECHS | As-built | Submittal | ENG | DOCS | COM | MS7 |
|  | APR | **Approval** |  |  | 2029-08-06 | 2029-08-26 |  |  |  |  |  |  |  |  |  |  |  |  |  |  |  |  |
| NQR-E1140 |  | As-built and O&M documentation: SAR review and approval - Al Qurayyat |  | 15d | 2029-08-06 | 2029-08-26 | NQR-E1130 | 22d | 0d | Contract cost (BOQ x payment milestones) [16995 SAR]; Progress weight (fair EPC distribution, SAR value) [13020 SAR] | 13,020 | NSR | NQR | NSR | Standard | SAR | As-built | Approval | ENG | DOCS | COM | MS7 |
|  | PRO | **Procurement** |  |  | 2027-03-15 | 2029-05-03 |  |  |  |  |  |  |  |  |  |  |  |  |  |  |  |  |
|  | NRY | **Riyadh (Thumamah) (NSR)** |  |  | 2027-05-02 | 2027-09-26 |  |  |  |  |  |  |  |  |  |  |  |  |  |  |  |  |
| NRY-P1100 |  | MS4 Material delivered (20%) - Riyadh (Thumamah) | milestone | 0d | 2027-09-26 | 2027-09-26 | NRY-P1070 | 420d | 0d |  |  | NSR | NRY | NSR | Priority 1 | ETECHS | - | - | MS | PM | MS | MS4 |
|  | CCT | **CCTV system** |  |  | 2027-05-02 | 2027-07-29 |  |  |  |  |  |  |  |  |  |  |  |  |  |  |  |  |
| NRY-P1010 |  | Manufacture CCTV cameras and analytics - Riyadh (Thumamah) |  | 60d | 2027-05-02 | 2027-07-29 | NRY-E1210 | 420d | 0d | Contract cost (BOQ x payment milestones) [103080 SAR]; Progress weight (fair EPC distribution, SAR value) [158100 SAR] | 158,100 | NSR | NRY | NSR | Priority 1 | Vendor | - | - | PRO | CCTV | PRO | MS4 |
|  | VMS | **Video management and video wall** |  |  | 2027-05-02 | 2027-07-29 |  |  |  |  |  |  |  |  |  |  |  |  |  |  |  |  |
| NRY-P1020 |  | Manufacture video management servers, storage and video wall - Riyadh (Thumamah) |  | 60d | 2027-05-02 | 2027-07-29 | NRY-E1210 | 420d | 0d | Contract cost (BOQ x payment milestones) [126844 SAR]; Progress weight (fair EPC distribution, SAR value) [194680 SAR] | 194,680 | NSR | NRY | NSR | Priority 1 | Vendor | - | - | PRO | VMS | PRO | MS4 |
|  | ACC | **Access control and intercom** |  |  | 2027-05-02 | 2027-07-29 |  |  |  |  |  |  |  |  |  |  |  |  |  |  |  |  |
| NRY-P1030 |  | Manufacture access control and intercom equipment - Riyadh (Thumamah) |  | 60d | 2027-05-02 | 2027-07-29 | NRY-E1210 | 420d | 0d | Contract cost (BOQ x payment milestones) [13405 SAR]; Progress weight (fair EPC distribution, SAR value) [20460 SAR] | 20,460 | NSR | NRY | NSR | Priority 1 | Vendor | - | - | PRO | ACC | PRO | MS4 |
|  | UPN | **UPS, network and cabinets** |  |  | 2027-05-02 | 2027-07-29 |  |  |  |  |  |  |  |  |  |  |  |  |  |  |  |  |
| NRY-P1040 |  | Manufacture UPS, network switches and field cabinets - Riyadh (Thumamah) |  | 60d | 2027-05-02 | 2027-07-29 | NRY-E1210 | 420d | 0d | Contract cost (BOQ x payment milestones) [278789 SAR]; Progress weight (fair EPC distribution, SAR value) [428420 SAR] | 428,420 | NSR | NRY | NSR | Priority 1 | Vendor | - | - | PRO | UPSNET | PRO | MS4 |
|  | LOG | **FAT and logistics** |  |  | 2027-08-01 | 2027-09-26 |  |  |  |  |  |  |  |  |  |  |  |  |  |  |  |  |
| NRY-P1050 |  | Factory acceptance test at vendor premises - Riyadh (Thumamah) |  | 10d | 2027-08-01 | 2027-08-12 | NRY-P1010, NRY-P1020, NRY-P1030, NRY-P1040 | 420d | 0d | Contract cost (BOQ x payment milestones) [34808 SAR]; Progress weight (fair EPC distribution, SAR value) [133920 SAR] | 133,920 | NSR | NRY | NSR | Priority 1 | ETECHS | - | - | PRO | PM | PRO | MS4 |
| NRY-P1060 |  | Shipping and customs clearance - Riyadh (Thumamah) |  | 25d | 2027-08-15 | 2027-09-16 | NRY-P1050 | 420d | 0d | Contract cost (BOQ x payment milestones) [104424 SAR]; Progress weight (fair EPC distribution, SAR value) [267220 SAR] | 267,220 | NSR | NRY | NSR | Priority 1 | Vendor | - | - | PRO | PM | PRO | MS4 |
| NRY-P1070 |  | Delivery to station and receiving inspection - Riyadh (Thumamah) |  | 5d | 2027-09-19 | 2027-09-26 | NRY-P1060 | 420d | 0d | Contract cost (BOQ x payment milestones) [34808 SAR]; Progress weight (fair EPC distribution, SAR value) [133920 SAR] | 133,920 | NSR | NRY | NSR | Priority 1 | ETECHS | - | - | PRO | PM | PRO | MS4 |

| ID | WBS | Activity | Type | Duration | Start | Finish | Predecessors | Total float | Free float | Resources | Cost | Area | Station | Railway | Priority | EPC phase | Discipline | Responsibility | Design stage | Submittal or approval | Payment milestone | Programme phase |
| --- | --- | --- | --- | --- | --- | --- | --- | --- | --- | --- | --- | --- | --- | --- | --- | --- | --- | --- | --- | --- | --- | --- |
|  | HMK | **Makkah (HHR)** |  |  | 2027-05-02 | 2027-11-21 |  |  |  |  |  |  |  |  |  |  |  |  |  |  |  |  |
| HMK-P1100 |  | MS4 Material delivered (20%) - Makkah | milestone | 0d | 2027-11-21 | 2027-11-21 | HMK-P1070 | 300d | 0d |  |  | HHR | HMK | HHR | Priority 1 | MS | PM | ETECHS | - | - | MS4 | MS |
|  | CCT | **CCTV system** |  |  | 2027-05-02 | 2027-09-09 |  |  |  |  |  |  |  |  |  |  |  |  |  |  |  |  |
| HMK-P1010 |  | Manufacture CCTV cameras and analytics - Makkah |  | 90d | 2027-05-02 | 2027-09-09 | HMK-E1210 | 300d | 0d | Contract cost (BOQ x payment milestones) [473780 SAR]; Progress weight (fair EPC distribution, SAR value) [728500 SAR] | 728,500 | HHR | HMK | HHR | Priority 1 | PRO | CCTV | Vendor | - | - | MS4 | PRO |
|  | VMS | **Video management and video wall** |  |  | 2027-05-02 | 2027-09-09 |  |  |  |  |  |  |  |  |  |  |  |  |  |  |  |  |
| HMK-P1020 |  | Manufacture video management servers, storage and video wall - Makkah |  | 90d | 2027-05-02 | 2027-09-09 | HMK-E1210 | 300d | 0d | Contract cost (BOQ x payment milestones) [158552 SAR]; Progress weight (fair EPC distribution, SAR value) [243660 SAR] | 243,660 | HHR | HMK | HHR | Priority 1 | PRO | VMS | Vendor | - | - | MS4 | PRO |
|  | ACC | **Access control and intercom** |  |  | 2027-05-02 | 2027-09-09 |  |  |  |  |  |  |  |  |  |  |  |  |  |  |  |  |
| HMK-P1030 |  | Manufacture access control and intercom equipment - Makkah |  | 90d | 2027-05-02 | 2027-09-09 | HMK-E1210 | 300d | 0d | Contract cost (BOQ x payment milestones) [12657 SAR]; Progress weight (fair EPC distribution, SAR value) [19220 SAR] | 19,220 | HHR | HMK | HHR | Priority 1 | PRO | ACC | Vendor | - | - | MS4 | PRO |
|  | UPN | **UPS, network and cabinets** |  |  | 2027-05-02 | 2027-09-09 |  |  |  |  |  |  |  |  |  |  |  |  |  |  |  |  |
| HMK-P1040 |  | Manufacture UPS, network switches and field cabinets - Makkah |  | 90d | 2027-05-02 | 2027-09-09 | HMK-E1210 | 300d | 0d | Contract cost (BOQ x payment milestones) [811525 SAR]; Progress weight (fair EPC distribution, SAR value) [1246820 SAR] | 1,246,820 | HHR | HMK | HHR | Priority 1 | PRO | UPSNET | Vendor | - | - | MS4 | PRO |
|  | LOG | **FAT and logistics** |  |  | 2027-09-12 | 2027-11-21 |  |  |  |  |  |  |  |  |  |  |  |  |  |  |  |  |
| HMK-P1050 |  | Factory acceptance test at vendor premises - Makkah |  | 10d | 2027-09-12 | 2027-09-26 | HMK-P1010, HMK-P1020, HMK-P1030, HMK-P1040 | 300d | 0d | Contract cost (BOQ x payment milestones) [97101 SAR]; Progress weight (fair EPC distribution, SAR value) [372620 SAR] | 372,620 | HHR | HMK | HHR | Priority 1 | PRO | PM | ETECHS | - | - | MS4 | PRO |
| HMK-P1060 |  | Shipping and customs clearance - Makkah |  | 35d | 2027-09-27 | 2027-11-14 | HMK-P1050 | 300d | 0d | Contract cost (BOQ x payment milestones) [291303 SAR]; Progress weight (fair EPC distribution, SAR value) [746480 SAR] | 746,480 | HHR | HMK | HHR | Priority 1 | PRO | PM | Vendor | - | - | MS4 | PRO |
| HMK-P1070 |  | Delivery to station and receiving inspection - Makkah |  | 5d | 2027-11-15 | 2027-11-21 | HMK-P1060 | 300d | 0d | Contract cost (BOQ x payment milestones) [97101 SAR]; Progress weight (fair EPC distribution, SAR value) [372620 SAR] | 372,620 | HHR | HMK | HHR | Priority 1 | PRO | PM | ETECHS | - | - | MS4 | PRO |
|  | ERY | **Riyadh (Malaz) (EWR)** |  |  | 2027-03-15 | 2027-08-08 |  |  |  |  |  |  |  |  |  |  |  |  |  |  |  |  |
| ERY-P1100 |  | MS4 Material delivered (20%) - Riyadh (Malaz) | milestone | 0d | 2027-08-08 | 2027-08-08 | ERY-P1070 | 460d | 0d |  |  | EWR | ERY | EWR | Priority 2 | MS | PM | ETECHS | - | - | MS4 | MS |
|  | CCT | **CCTV system** |  |  | 2027-03-15 | 2027-06-13 |  |  |  |  |  |  |  |  |  |  |  |  |  |  |  |  |
| ERY-P1010 |  | Manufacture CCTV cameras and analytics - Riyadh (Malaz) |  | 60d | 2027-03-15 | 2027-06-13 | ERY-E1210 | 460d | 0d | Contract cost (BOQ x payment milestones) [101092 SAR]; Progress weight (fair EPC distribution, SAR value) [155000 SAR] | 155,000 | EWR | ERY | EWR | Priority 2 | PRO | CCTV | Vendor | - | - | MS4 | PRO |
|  | VMS | **Video management and video wall** |  |  | 2027-03-15 | 2027-06-13 |  |  |  |  |  |  |  |  |  |  |  |  |  |  |  |  |
| ERY-P1020 |  | Manufacture video management servers, storage and video wall - Riyadh (Malaz) |  | 60d | 2027-03-15 | 2027-06-13 | ERY-E1210 | 460d | 0d | Contract cost (BOQ x payment milestones) [128120 SAR]; Progress weight (fair EPC distribution, SAR value) [196540 SAR] | 196,540 | EWR | ERY | EWR | Priority 2 | PRO | VMS | Vendor | - | - | MS4 | PRO |
|  | ACC | **Access control and intercom** |  |  | 2027-03-15 | 2027-06-13 |  |  |  |  |  |  |  |  |  |  |  |  |  |  |  |  |
| ERY-P1030 |  | Manufacture access control and intercom equipment - Riyadh (Malaz) |  | 60d | 2027-03-15 | 2027-06-13 | ERY-E1210 | 460d | 0d | Contract cost (BOQ x payment milestones) [16098 SAR]; Progress weight (fair EPC distribution, SAR value) [24800 SAR] | 24,800 | EWR | ERY | EWR | Priority 2 | PRO | ACC | Vendor | - | - | MS4 | PRO |
|  | UPN | **UPS, network and cabinets** |  |  | 2027-03-15 | 2027-06-13 |  |  |  |  |  |  |  |  |  |  |  |  |  |  |  |  |
| ERY-P1040 |  | Manufacture UPS, network switches and field cabinets - Riyadh (Malaz) |  | 60d | 2027-03-15 | 2027-06-13 | ERY-E1210 | 460d | 0d | Contract cost (BOQ x payment milestones) [218418 SAR]; Progress weight (fair EPC distribution, SAR value) [335420 SAR] | 335,420 | EWR | ERY | EWR | Priority 2 | PRO | UPSNET | Vendor | - | - | MS4 | PRO |

| ID | WBS | Activity | Type | Duration | Start | Finish | Predecessors | Total float | Free float | Resources | Cost | Area | Station | Railway | Priority | Discipline | Responsibility | EPC phase | Design stage | Submittal or approval | Programme phase | Payment milestone |
| --- | --- | --- | --- | --- | --- | --- | --- | --- | --- | --- | --- | --- | --- | --- | --- | --- | --- | --- | --- | --- | --- | --- |
|  | LOG | **FAT and logistics** |  |  | 2027-06-14 | 2027-08-08 |  |  |  |  |  |  |  |  |  |  |  |  |  |  |  |  |
| ERY-P1050 |  | Factory acceptance test at vendor premises - Riyadh (Malaz) |  | 10d | 2027-06-14 | 2027-06-27 | ERY-P1010, ERY-P1020, ERY-P1030, ERY-P1040 | 460d | 0d | Contract cost (BOQ x payment milestones) [30915 SAR]; Progress weight (fair EPC distribution, SAR value) [118420 SAR] | 118,420 | EWR | ERY | EWR | Priority 2 | PM | ETECHS | PRO | - | - | PRO | MS4 |
| ERY-P1060 |  | Shipping and customs clearance - Riyadh (Malaz) |  | 25d | 2027-06-28 | 2027-08-01 | ERY-P1050 | 460d | 0d | Contract cost (BOQ x payment milestones) [92746 SAR]; Progress weight (fair EPC distribution, SAR value) [237460 SAR] | 237,460 | EWR | ERY | EWR | Priority 2 | PM | Vendor | PRO | - | - | PRO | MS4 |
| ERY-P1070 |  | Delivery to station and receiving inspection - Riyadh (Malaz) |  | 5d | 2027-08-02 | 2027-08-08 | ERY-P1060 | 460d | 0d | Contract cost (BOQ x payment milestones) [30915 SAR]; Progress weight (fair EPC distribution, SAR value) [118420 SAR] | 118,420 | EWR | ERY | EWR | Priority 2 | PM | ETECHS | PRO | - | - | PRO | MS4 |
|  | HJD | **Jeddah (HHR)** |  |  | 2027-07-14 | 2028-01-26 |  |  |  |  |  |  |  |  |  |  |  |  |  |  |  |  |
| HJD-P1100 |  | MS4 Material delivered (20%) - Jeddah | milestone | 0d | 2028-01-26 | 2028-01-26 | HJD-P1070 | 268d | 0d |  |  | HHR | HJD | HHR | Standard | PM | ETECHS | MS | - | - | MS | MS4 |
|  | CCT | **CCTV system** |  |  | 2027-07-14 | 2027-11-17 |  |  |  |  |  |  |  |  |  |  |  |  |  |  |  |  |
| HJD-P1010 |  | Manufacture CCTV cameras and analytics - Jeddah |  | 90d | 2027-07-14 | 2027-11-17 | HJD-E1210 | 268d | 0d | Contract cost (BOQ x payment milestones) [396208 SAR]; Progress weight (fair EPC distribution, SAR value) [609460 SAR] | 609,460 | HHR | HJD | HHR | Standard | CCTV | Vendor | PRO | - | - | PRO | MS4 |
|  | VMS | **Video management and video wall** |  |  | 2027-07-14 | 2027-11-17 |  |  |  |  |  |  |  |  |  |  |  |  |  |  |  |  |
| HJD-P1020 |  | Manufacture video management servers, storage and video wall - Jeddah |  | 90d | 2027-07-14 | 2027-11-17 | HJD-E1210 | 268d | 0d | Contract cost (BOQ x payment milestones) [185712 SAR]; Progress weight (fair EPC distribution, SAR value) [285200 SAR] | 285,200 | HHR | HJD | HHR | Standard | VMS | Vendor | PRO | - | - | PRO | MS4 |
|  | ACC | **Access control and intercom** |  |  | 2027-07-14 | 2027-11-17 |  |  |  |  |  |  |  |  |  |  |  |  |  |  |  |  |
| HJD-P1030 |  | Manufacture access control and intercom equipment - Jeddah |  | 90d | 2027-07-14 | 2027-11-17 | HJD-E1210 | 268d | 0d | Contract cost (BOQ x payment milestones) [12555 SAR]; Progress weight (fair EPC distribution, SAR value) [19220 SAR] | 19,220 | HHR | HJD | HHR | Standard | ACC | Vendor | PRO | - | - | PRO | MS4 |
|  | UPN | **UPS, network and cabinets** |  |  | 2027-07-14 | 2027-11-17 |  |  |  |  |  |  |  |  |  |  |  |  |  |  |  |  |
| HJD-P1040 |  | Manufacture UPS, network switches and field cabinets - Jeddah |  | 90d | 2027-07-14 | 2027-11-17 | HJD-E1210 | 268d | 0d | Contract cost (BOQ x payment milestones) [838157 SAR]; Progress weight (fair EPC distribution, SAR value) [1287740 SAR] | 1,287,740 | HHR | HJD | HHR | Standard | UPSNET | Vendor | PRO | - | - | PRO | MS4 |
|  | LOG | **FAT and logistics** |  |  | 2027-11-18 | 2028-01-26 |  |  |  |  |  |  |  |  |  |  |  |  |  |  |  |  |
| HJD-P1050 |  | Factory acceptance test at vendor premises - Jeddah |  | 10d | 2027-11-18 | 2027-12-01 | HJD-P1010, HJD-P1020, HJD-P1030, HJD-P1040 | 268d | 0d | Contract cost (BOQ x payment milestones) [95509 SAR]; Progress weight (fair EPC distribution, SAR value) [367040 SAR] | 367,040 | HHR | HJD | HHR | Standard | PM | ETECHS | PRO | - | - | PRO | MS4 |
| HJD-P1060 |  | Shipping and customs clearance - Jeddah |  | 35d | 2027-12-02 | 2028-01-19 | HJD-P1050 | 268d | 0d | Contract cost (BOQ x payment milestones) [286526 SAR]; Progress weight (fair EPC distribution, SAR value) [734080 SAR] | 734,080 | HHR | HJD | HHR | Standard | PM | Vendor | PRO | - | - | PRO | MS4 |
| HJD-P1070 |  | Delivery to station and receiving inspection - Jeddah |  | 5d | 2028-01-20 | 2028-01-26 | HJD-P1060 | 268d | 0d | Contract cost (BOQ x payment milestones) [95509 SAR]; Progress weight (fair EPC distribution, SAR value) [367040 SAR] | 367,040 | HHR | HJD | HHR | Standard | PM | ETECHS | PRO | - | - | PRO | MS4 |
|  | EDM | **Dammam (EWR)** |  |  | 2027-09-08 | 2028-02-09 |  |  |  |  |  |  |  |  |  |  |  |  |  |  |  |  |
| EDM-P1100 |  | MS4 Material delivered (20%) - Dammam | milestone | 0d | 2028-02-09 | 2028-02-09 | EDM-P1070 | 328d | 0d |  |  | EWR | EDM | EWR | Standard | PM | ETECHS | MS | - | - | MS | MS4 |
|  | CCT | **CCTV system** |  |  | 2027-09-08 | 2027-12-15 |  |  |  |  |  |  |  |  |  |  |  |  |  |  |  |  |
| EDM-P1010 |  | Manufacture CCTV cameras and analytics - Dammam |  | 70d | 2027-09-08 | 2027-12-15 | EDM-E1210 | 328d | 0d | Contract cost (BOQ x payment milestones) [99436 SAR]; Progress weight (fair EPC distribution, SAR value) [152520 SAR] | 152,520 | EWR | EDM | EWR | Standard | CCTV | Vendor | PRO | - | - | PRO | MS4 |
|  | VMS | **Video management and video wall** |  |  | 2027-09-08 | 2027-12-15 |  |  |  |  |  |  |  |  |  |  |  |  |  |  |  |  |
| EDM-P1020 |  | Manufacture video management servers, storage and video wall - Dammam |  | 70d | 2027-09-08 | 2027-12-15 | EDM-E1210 | 328d | 0d | Contract cost (BOQ x payment milestones) [148015 SAR]; Progress weight (fair EPC distribution, SAR value) [227540 SAR] | 227,540 | EWR | EDM | EWR | Standard | VMS | Vendor | PRO | - | - | PRO | MS4 |

| ID | WBS | Activity | Type | Duration | Start | Finish | Predecessors | Total float | Free float | Resources | Cost | Area | Station | Railway | Priority | Discipline | Responsibility | EPC phase | Design stage | Submittal or approval | Programme phase | Payment milestone |
| --- | --- | --- | --- | --- | --- | --- | --- | --- | --- | --- | --- | --- | --- | --- | --- | --- | --- | --- | --- | --- | --- | --- |
|  | ACC | **Access control and intercom** |  |  | 2027-09-08 | 2027-12-15 |  |  |  |  |  |  |  |  |  |  |  |  |  |  |  |  |
| EDM-P1030 |  | Manufacture access control and intercom equipment - Dammam |  | 70d | 2027-09-08 | 2027-12-15 | EDM-E1210 | 328d | 0d | Contract cost (BOQ x payment milestones) [15834 SAR]; Progress weight (fair EPC distribution, SAR value) [24180 SAR] | 24,180 | EWR | EDM | EWR | Standard | ACC | Vendor | PRO | - | - | PRO | MS4 |
|  | UPN | **UPS, network and cabinets** |  |  | 2027-09-08 | 2027-12-15 |  |  |  |  |  |  |  |  |  |  |  |  |  |  |  |  |
| EDM-P1040 |  | Manufacture UPS, network switches and field cabinets - Dammam |  | 70d | 2027-09-08 | 2027-12-15 | EDM-E1210 | 328d | 0d | Contract cost (BOQ x payment milestones) [214841 SAR]; Progress weight (fair EPC distribution, SAR value) [329840 SAR] | 329,840 | EWR | EDM | EWR | Standard | UPSNET | Vendor | PRO | - | - | PRO | MS4 |
|  | LOG | **FAT and logistics** |  |  | 2027-12-16 | 2028-02-09 |  |  |  |  |  |  |  |  |  |  |  |  |  |  |  |  |
| EDM-P1050 |  | Factory acceptance test at vendor premises - Dammam |  | 10d | 2027-12-16 | 2027-12-29 | EDM-P1010, EDM-P1020, EDM-P1030, EDM-P1040 | 328d | 0d | Contract cost (BOQ x payment milestones) [31875 SAR]; Progress weight (fair EPC distribution, SAR value) [122140 SAR] | 122,140 | EWR | EDM | EWR | Standard | PM | ETECHS | PRO | - | - | PRO | MS4 |
| EDM-P1060 |  | Shipping and customs clearance - Dammam |  | 25d | 2027-12-30 | 2028-02-02 | EDM-P1050 | 328d | 0d | Contract cost (BOQ x payment milestones) [95625 SAR]; Progress weight (fair EPC distribution, SAR value) [244900 SAR] | 244,900 | EWR | EDM | EWR | Standard | PM | Vendor | PRO | - | - | PRO | MS4 |
| EDM-P1070 |  | Delivery to station and receiving inspection - Dammam |  | 5d | 2028-02-03 | 2028-02-09 | EDM-P1060 | 328d | 0d | Contract cost (BOQ x payment milestones) [31875 SAR]; Progress weight (fair EPC distribution, SAR value) [122140 SAR] | 122,140 | EWR | EDM | EWR | Standard | PM | ETECHS | PRO | - | - | PRO | MS4 |
|  | NQS | **Al Qassim (NSR)** |  |  | 2027-11-03 | 2028-04-11 |  |  |  |  |  |  |  |  |  |  |  |  |  |  |  |  |
| NQS-P1100 |  | MS4 Material delivered (20%) - Al Qassim | milestone | 0d | 2028-04-11 | 2028-04-11 | NQS-P1070 | 283d | 0d |  |  | NSR | NQS | NSR | Standard | PM | ETECHS | MS | - | - | MS | MS4 |
|  | CCT | **CCTV system** |  |  | 2027-11-03 | 2028-02-08 |  |  |  |  |  |  |  |  |  |  |  |  |  |  |  |  |
| NQS-P1010 |  | Manufacture CCTV cameras and analytics - Al Qassim |  | 70d | 2027-11-03 | 2028-02-08 | NQS-E1210 | 283d | 0d | Contract cost (BOQ x payment milestones) [104169 SAR]; Progress weight (fair EPC distribution, SAR value) [159960 SAR] | 159,960 | NSR | NQS | NSR | Standard | CCTV | Vendor | PRO | - | - | PRO | MS4 |
|  | VMS | **Video management and video wall** |  |  | 2027-11-03 | 2028-02-08 |  |  |  |  |  |  |  |  |  |  |  |  |  |  |  |  |
| NQS-P1020 |  | Manufacture video management servers, storage and video wall - Al Qassim |  | 70d | 2027-11-03 | 2028-02-08 | NQS-E1210 | 283d | 0d | Contract cost (BOQ x payment milestones) [110385 SAR]; Progress weight (fair EPC distribution, SAR value) [169260 SAR] | 169,260 | NSR | NQS | NSR | Standard | VMS | Vendor | PRO | - | - | PRO | MS4 |
|  | ACC | **Access control and intercom** |  |  | 2027-11-03 | 2028-02-08 |  |  |  |  |  |  |  |  |  |  |  |  |  |  |  |  |
| NQS-P1030 |  | Manufacture access control and intercom equipment - Al Qassim |  | 70d | 2027-11-03 | 2028-02-08 | NQS-E1210 | 283d | 0d | Contract cost (BOQ x payment milestones) [13547 SAR]; Progress weight (fair EPC distribution, SAR value) [21080 SAR] | 21,080 | NSR | NQS | NSR | Standard | ACC | Vendor | PRO | - | - | PRO | MS4 |
|  | UPN | **UPS, network and cabinets** |  |  | 2027-11-03 | 2028-02-08 |  |  |  |  |  |  |  |  |  |  |  |  |  |  |  |  |
| NQS-P1040 |  | Manufacture UPS, network switches and field cabinets - Al Qassim |  | 70d | 2027-11-03 | 2028-02-08 | NQS-E1210 | 283d | 0d | Contract cost (BOQ x payment milestones) [281736 SAR]; Progress weight (fair EPC distribution, SAR value) [432760 SAR] | 432,760 | NSR | NQS | NSR | Standard | UPSNET | Vendor | PRO | - | - | PRO | MS4 |
|  | LOG | **FAT and logistics** |  |  | 2028-02-09 | 2028-04-11 |  |  |  |  |  |  |  |  |  |  |  |  |  |  |  |  |
| NQS-P1050 |  | Factory acceptance test at vendor premises - Al Qassim |  | 10d | 2028-02-09 | 2028-02-29 | NQS-P1010, NQS-P1020, NQS-P1030, NQS-P1040 | 283d | 0d | Contract cost (BOQ x payment milestones) [33989 SAR]; Progress weight (fair EPC distribution, SAR value) [130820 SAR] | 130,820 | NSR | NQS | NSR | Standard | PM | ETECHS | PRO | - | - | PRO | MS4 |
| NQS-P1060 |  | Shipping and customs clearance - Al Qassim |  | 25d | 2028-03-01 | 2028-04-04 | NQS-P1050 | 283d | 0d | Contract cost (BOQ x payment milestones) [101967 SAR]; Progress weight (fair EPC distribution, SAR value) [261020 SAR] | 261,020 | NSR | NQS | NSR | Standard | PM | Vendor | PRO | - | - | PRO | MS4 |
| NQS-P1070 |  | Delivery to station and receiving inspection - Al Qassim |  | 5d | 2028-04-05 | 2028-04-11 | NQS-P1060 | 283d | 0d | Contract cost (BOQ x payment milestones) [33989 SAR]; Progress weight (fair EPC distribution, SAR value) [130820 SAR] | 130,820 | NSR | NQS | NSR | Standard | PM | ETECHS | PRO | - | - | PRO | MS4 |
|  | EHF | **Hufuf (EWR)** |  |  | 2027-11-03 | 2028-04-11 |  |  |  |  |  |  |  |  |  |  |  |  |  |  |  |  |
| EHF-P1100 |  | MS4 Material delivered (20%) - Hufuf | milestone | 0d | 2028-04-11 | 2028-04-11 | EHF-P1070 | 289d | 0d |  |  | EWR | EHF | EWR | Standard | PM | ETECHS | MS | - | - | MS | MS4 |

| ID | WBS | Activity | Type | Duration | Start | Finish | Predecessors | Total float | Free float | Resources | Cost | Area | Station | Railway | Priority | Discipline | Responsibility | EPC phase | Design stage | Submittal or approval | Programme phase | Payment milestone |
| --- | --- | --- | --- | --- | --- | --- | --- | --- | --- | --- | --- | --- | --- | --- | --- | --- | --- | --- | --- | --- | --- | --- |
|  | CCT | **CCTV system** |  |  | 2027-11-03 | 2028-02-08 |  |  |  |  |  |  |  |  |  |  |  |  |  |  |  |  |
| EHF-P1010 |  | Manufacture CCTV cameras and analytics - Hufuf |  | 70d | 2027-11-03 | 2028-02-08 | EHF-E1210 | 289d | 0d | Contract cost (BOQ x payment milestones) [71254 SAR]; Progress weight (fair EPC distribution, SAR value) [109740 SAR] | 109,740 | EWR | EHF | EWR | Standard | CCTV | Vendor | PRO | - | - | PRO | MS4 |
|  | VMS | **Video management and video wall** |  |  | 2027-11-03 | 2028-02-08 |  |  |  |  |  |  |  |  |  |  |  |  |  |  |  |  |
| EHF-P1020 |  | Manufacture video management servers, storage and video wall - Hufuf |  | 70d | 2027-11-03 | 2028-02-08 | EHF-E1210 | 289d | 0d | Contract cost (BOQ x payment milestones) [129428 SAR]; Progress weight (fair EPC distribution, SAR value) [199020 SAR] | 199,020 | EWR | EHF | EWR | Standard | VMS | Vendor | PRO | - | - | PRO | MS4 |
|  | ACC | **Access control and intercom** |  |  | 2027-11-03 | 2028-02-08 |  |  |  |  |  |  |  |  |  |  |  |  |  |  |  |  |
| EHF-P1030 |  | Manufacture access control and intercom equipment - Hufuf |  | 70d | 2027-11-03 | 2028-02-08 | EHF-E1210 | 289d | 0d | Contract cost (BOQ x payment milestones) [16348 SAR]; Progress weight (fair EPC distribution, SAR value) [24800 SAR] | 24,800 | EWR | EHF | EWR | Standard | ACC | Vendor | PRO | - | - | PRO | MS4 |
|  | UPN | **UPS, network and cabinets** |  |  | 2027-11-03 | 2028-02-08 |  |  |  |  |  |  |  |  |  |  |  |  |  |  |  |  |
| EHF-P1040 |  | Manufacture UPS, network switches and field cabinets - Hufuf |  | 70d | 2027-11-03 | 2028-02-08 | EHF-E1210 | 289d | 0d | Contract cost (BOQ x payment milestones) [207246 SAR]; Progress weight (fair EPC distribution, SAR value) [318060 SAR] | 318,060 | EWR | EHF | EWR | Standard | UPSNET | Vendor | PRO | - | - | PRO | MS4 |
|  | LOG | **FAT and logistics** |  |  | 2028-02-09 | 2028-04-11 |  |  |  |  |  |  |  |  |  |  |  |  |  |  |  |  |
| EHF-P1050 |  | Factory acceptance test at vendor premises - Hufuf |  | 10d | 2028-02-09 | 2028-02-29 | EHF-P1010, EHF-P1020, EHF-P1030, EHF-P1040 | 289d | 0d | Contract cost (BOQ x payment milestones) [28285 SAR]; Progress weight (fair EPC distribution, SAR value) [108500 SAR] | 108,500 | EWR | EHF | EWR | Standard | PM | ETECHS | PRO | - | - | PRO | MS4 |
| EHF-P1060 |  | Shipping and customs clearance - Hufuf |  | 25d | 2028-03-01 | 2028-04-04 | EHF-P1050 | 289d | 0d | Contract cost (BOQ x payment milestones) [84855 SAR]; Progress weight (fair EPC distribution, SAR value) [217000 SAR] | 217,000 | EWR | EHF | EWR | Standard | PM | Vendor | PRO | - | - | PRO | MS4 |
| EHF-P1070 |  | Delivery to station and receiving inspection - Hufuf |  | 5d | 2028-04-05 | 2028-04-11 | EHF-P1060 | 289d | 0d | Contract cost (BOQ x payment milestones) [28285 SAR]; Progress weight (fair EPC distribution, SAR value) [108500 SAR] | 108,500 | EWR | EHF | EWR | Standard | PM | ETECHS | PRO | - | - | PRO | MS4 |
|  | NMJ | **Al Majma'ah (NSR)** |  |  | 2027-12-22 | 2028-06-06 |  |  |  |  |  |  |  |  |  |  |  |  |  |  |  |  |
| NMJ-P1100 |  | MS4 Material delivered (20%) - Al Majma'ah | milestone | 0d | 2028-06-06 | 2028-06-06 | NMJ-P1070 | 248d | 0d |  |  | NSR | NMJ | NSR | Standard | PM | ETECHS | MS | - | - | MS | MS4 |
|  | CCT | **CCTV system** |  |  | 2027-12-22 | 2028-04-04 |  |  |  |  |  |  |  |  |  |  |  |  |  |  |  |  |
| NMJ-P1010 |  | Manufacture CCTV cameras and analytics - Al Majma'ah |  | 70d | 2027-12-22 | 2028-04-04 | NMJ-E1210 | 248d | 0d | Contract cost (BOQ x payment milestones) [104169 SAR]; Progress weight (fair EPC distribution, SAR value) [159960 SAR] | 159,960 | NSR | NMJ | NSR | Standard | CCTV | Vendor | PRO | - | - | PRO | MS4 |
|  | VMS | **Video management and video wall** |  |  | 2027-12-22 | 2028-04-04 |  |  |  |  |  |  |  |  |  |  |  |  |  |  |  |  |
| NMJ-P1020 |  | Manufacture video management servers, storage and video wall - Al Majma'ah |  | 70d | 2027-12-22 | 2028-04-04 | NMJ-E1210 | 248d | 0d | Contract cost (BOQ x payment milestones) [110385 SAR]; Progress weight (fair EPC distribution, SAR value) [169260 SAR] | 169,260 | NSR | NMJ | NSR | Standard | VMS | Vendor | PRO | - | - | PRO | MS4 |
|  | ACC | **Access control and intercom** |  |  | 2027-12-22 | 2028-04-04 |  |  |  |  |  |  |  |  |  |  |  |  |  |  |  |  |
| NMJ-P1030 |  | Manufacture access control and intercom equipment - Al Majma'ah |  | 70d | 2027-12-22 | 2028-04-04 | NMJ-E1210 | 248d | 0d | Contract cost (BOQ x payment milestones) [13547 SAR]; Progress weight (fair EPC distribution, SAR value) [21080 SAR] | 21,080 | NSR | NMJ | NSR | Standard | ACC | Vendor | PRO | - | - | PRO | MS4 |
|  | UPN | **UPS, network and cabinets** |  |  | 2027-12-22 | 2028-04-04 |  |  |  |  |  |  |  |  |  |  |  |  |  |  |  |  |
| NMJ-P1040 |  | Manufacture UPS, network switches and field cabinets - Al Majma'ah |  | 70d | 2027-12-22 | 2028-04-04 | NMJ-E1210 | 248d | 0d | Contract cost (BOQ x payment milestones) [281736 SAR]; Progress weight (fair EPC distribution, SAR value) [432760 SAR] | 432,760 | NSR | NMJ | NSR | Standard | UPSNET | Vendor | PRO | - | - | PRO | MS4 |
|  | LOG | **FAT and logistics** |  |  | 2028-04-05 | 2028-06-06 |  |  |  |  |  |  |  |  |  |  |  |  |  |  |  |  |
| NMJ-P1050 |  | Factory acceptance test at vendor premises - Al Majma'ah |  | 10d | 2028-04-05 | 2028-04-18 | NMJ-P1010, NMJ-P1020, NMJ-P1030, NMJ-P1040 | 248d | 0d | Contract cost (BOQ x payment milestones) [33989 SAR]; Progress weight (fair EPC distribution, SAR value) [130820 SAR] | 130,820 | NSR | NMJ | NSR | Standard | PM | ETECHS | PRO | - | - | PRO | MS4 |
| NMJ-P1060 |  | Shipping and customs clearance - Al Majma'ah |  | 25d | 2028-04-19 | 2028-05-30 | NMJ-P1050 | 248d | 0d | Contract cost (BOQ x payment milestones) [101967 SAR]; Progress weight (fair EPC distribution, SAR value) [261020 SAR] | 261,020 | NSR | NMJ | NSR | Standard | PM | Vendor | PRO | - | - | PRO | MS4 |
| NMJ-P1070 |  | Delivery to station and receiving inspection - Al Majma'ah |  | 5d | 2028-05-31 | 2028-06-06 | NMJ-P1060 | 248d | 0d | Contract cost (BOQ x payment milestones) [33989 SAR]; Progress weight (fair EPC distribution, SAR value) [130820 SAR] | 130,820 | NSR | NMJ | NSR | Standard | PM | ETECHS | PRO | - | - | PRO | MS4 |

| ID | WBS | Activity | Type | Duration | Start | Finish | Predecessors | Total float | Free float | Resources | Cost | Area | Station | Railway | Priority | EPC phase | Discipline | Responsibility | Design stage | Submittal or approval | Payment milestone | Programme phase |
| --- | --- | --- | --- | --- | --- | --- | --- | --- | --- | --- | --- | --- | --- | --- | --- | --- | --- | --- | --- | --- | --- | --- |
|  | HKA | **KAEC (HHR)** |  |  | 2028-06-18 | 2028-12-28 |  |  |  |  |  |  |  |  |  |  |  |  |  |  |  |  |
| HKA-P1100 |  | MS4 Material delivered (20%) - KAEC | milestone | 0d | 2028-12-28 | 2028-12-28 | HKA-P1070 | 61d | 0d |  |  | HHR | HKA | HHR | Standard | MS | PM | ETECHS | - | - | MS4 | MS |
|  | CCT | **CCTV system** |  |  | 2028-06-18 | 2028-10-19 |  |  |  |  |  |  |  |  |  |  |  |  |  |  |  |  |
| HKA-P1010 |  | Manufacture CCTV cameras and analytics - KAEC |  | 90d | 2028-06-18 | 2028-10-19 | HKA-E1210 | 61d | 0d | Contract cost (BOQ x payment milestones) [263474 SAR]; Progress weight (fair EPC distribution, SAR value) [404860 SAR] | 404,860 | HHR | HKA | HHR | Standard | PRO | CCTV | Vendor | - | - | MS4 | PRO |
|  | VMS | **Video management and video wall** |  |  | 2028-06-18 | 2028-10-19 |  |  |  |  |  |  |  |  |  |  |  |  |  |  |  |  |
| HKA-P1020 |  | Manufacture video management servers, storage and video wall - KAEC |  | 90d | 2028-06-18 | 2028-10-19 | HKA-E1210 | 61d | 0d | Contract cost (BOQ x payment milestones) [111291 SAR]; Progress weight (fair EPC distribution, SAR value) [171120 SAR] | 171,120 | HHR | HKA | HHR | Standard | PRO | VMS | Vendor | - | - | MS4 | PRO |
|  | ACC | **Access control and intercom** |  |  | 2028-06-18 | 2028-10-19 |  |  |  |  |  |  |  |  |  |  |  |  |  |  |  |  |
| HKA-P1030 |  | Manufacture access control and intercom equipment - KAEC |  | 90d | 2028-06-18 | 2028-10-19 | HKA-E1210 | 61d | 0d | Contract cost (BOQ x payment milestones) [12074 SAR]; Progress weight (fair EPC distribution, SAR value) [18600 SAR] | 18,600 | HHR | HKA | HHR | Standard | PRO | ACC | Vendor | - | - | MS4 | PRO |
|  | UPN | **UPS, network and cabinets** |  |  | 2028-06-18 | 2028-10-19 |  |  |  |  |  |  |  |  |  |  |  |  |  |  |  |  |
| HKA-P1040 |  | Manufacture UPS, network switches and field cabinets - KAEC |  | 90d | 2028-06-18 | 2028-10-19 | HKA-E1210 | 61d | 0d | Contract cost (BOQ x payment milestones) [447818 SAR]; Progress weight (fair EPC distribution, SAR value) [688200 SAR] | 688,200 | HHR | HKA | HHR | Standard | PRO | UPSNET | Vendor | - | - | MS4 | PRO |
|  | LOG | **FAT and logistics** |  |  | 2028-10-22 | 2028-12-28 |  |  |  |  |  |  |  |  |  |  |  |  |  |  |  |  |
| HKA-P1050 |  | Factory acceptance test at vendor premises - KAEC |  | 10d | 2028-10-22 | 2028-11-02 | HKA-P1010, HKA-P1020, HKA-P1030, HKA-P1040 | 61d | 0d | Contract cost (BOQ x payment milestones) [55644 SAR]; Progress weight (fair EPC distribution, SAR value) [213900 SAR] | 213,900 | HHR | HKA | HHR | Standard | PRO | PM | ETECHS | - | - | MS4 | PRO |
| HKA-P1060 |  | Shipping and customs clearance - KAEC |  | 35d | 2028-11-05 | 2028-12-21 | HKA-P1050 | 61d | 0d | Contract cost (BOQ x payment milestones) [166931 SAR]; Progress weight (fair EPC distribution, SAR value) [427180 SAR] | 427,180 | HHR | HKA | HHR | Standard | PRO | PM | Vendor | - | - | MS4 | PRO |
| HKA-P1070 |  | Delivery to station and receiving inspection - KAEC |  | 5d | 2028-12-24 | 2028-12-28 | HKA-P1060 | 61d | 0d | Contract cost (BOQ x payment milestones) [55644 SAR]; Progress weight (fair EPC distribution, SAR value) [213900 SAR] | 213,900 | HHR | HKA | HHR | Standard | PRO | PM | ETECHS | - | - | MS4 | PRO |
|  | HMD | **Madinah (HHR)** |  |  | 2028-06-18 | 2028-12-28 |  |  |  |  |  |  |  |  |  |  |  |  |  |  |  |  |
| HMD-P1100 |  | MS4 Material delivered (20%) - Madinah | milestone | 0d | 2028-12-28 | 2028-12-28 | HMD-P1070 | 57d | 0d |  |  | HHR | HMD | HHR | Standard | MS | PM | ETECHS | - | - | MS4 | MS |
|  | CCT | **CCTV system** |  |  | 2028-06-18 | 2028-10-19 |  |  |  |  |  |  |  |  |  |  |  |  |  |  |  |  |
| HMD-P1010 |  | Manufacture CCTV cameras and analytics - Madinah |  | 90d | 2028-06-18 | 2028-10-19 | HMD-E1210 | 57d | 0d | Contract cost (BOQ x payment milestones) [264932 SAR]; Progress weight (fair EPC distribution, SAR value) [406720 SAR] | 406,720 | HHR | HMD | HHR | Standard | PRO | CCTV | Vendor | - | - | MS4 | PRO |
|  | VMS | **Video management and video wall** |  |  | 2028-06-18 | 2028-10-19 |  |  |  |  |  |  |  |  |  |  |  |  |  |  |  |  |
| HMD-P1020 |  | Manufacture video management servers, storage and video wall - Madinah |  | 90d | 2028-06-18 | 2028-10-19 | HMD-E1210 | 57d | 0d | Contract cost (BOQ x payment milestones) [116027 SAR]; Progress weight (fair EPC distribution, SAR value) [177940 SAR] | 177,940 | HHR | HMD | HHR | Standard | PRO | VMS | Vendor | - | - | MS4 | PRO |
|  | ACC | **Access control and intercom** |  |  | 2028-06-18 | 2028-10-19 |  |  |  |  |  |  |  |  |  |  |  |  |  |  |  |  |
| HMD-P1030 |  | Manufacture access control and intercom equipment - Madinah |  | 90d | 2028-06-18 | 2028-10-19 | HMD-E1210 | 57d | 0d | Contract cost (BOQ x payment milestones) [12501 SAR]; Progress weight (fair EPC distribution, SAR value) [19220 SAR] | 19,220 | HHR | HMD | HHR | Standard | PRO | ACC | Vendor | - | - | MS4 | PRO |
|  | UPN | **UPS, network and cabinets** |  |  | 2028-06-18 | 2028-10-19 |  |  |  |  |  |  |  |  |  |  |  |  |  |  |  |  |
| HMD-P1040 |  | Manufacture UPS, network switches and field cabinets - Madinah |  | 90d | 2028-06-18 | 2028-10-19 | HMD-E1210 | 57d | 0d | Contract cost (BOQ x payment milestones) [440861 SAR]; Progress weight (fair EPC distribution, SAR value) [677660 SAR] | 677,660 | HHR | HMD | HHR | Standard | PRO | UPSNET | Vendor | - | - | MS4 | PRO |

| ID | WBS | Activity | Type | Duration | Start | Finish | Predecessors | Total float | Free float | Resources | Cost | Area | Station | Railway | Priority | Discipline | Responsibility | EPC phase | Design stage | Submittal or approval | Programme phase | Payment milestone |
| --- | --- | --- | --- | --- | --- | --- | --- | --- | --- | --- | --- | --- | --- | --- | --- | --- | --- | --- | --- | --- | --- | --- |
|  | LOG | **FAT and logistics** |  |  | 2028-10-22 | 2028-12-28 |  |  |  |  |  |  |  |  |  |  |  |  |  |  |  |  |
| HMD-P1050 |  | Factory acceptance test at vendor premises - Madinah |  | 10d | 2028-10-22 | 2028-11-02 | HMD-P1010, HMD-P1020, HMD-P1030, HMD-P1040 | 57d | 0d | Contract cost (BOQ x payment milestones) [55621 SAR]; Progress weight (fair EPC distribution, SAR value) [213280 SAR] | 213,280 | HHR | HMD | HHR | Standard | PM | ETECHS | PRO | - | - | PRO | MS4 |
| HMD-P1060 |  | Shipping and customs clearance - Madinah |  | 35d | 2028-11-05 | 2028-12-21 | HMD-P1050 | 57d | 0d | Contract cost (BOQ x payment milestones) [166864 SAR]; Progress weight (fair EPC distribution, SAR value) [427180 SAR] | 427,180 | HHR | HMD | HHR | Standard | PM | Vendor | PRO | - | - | PRO | MS4 |
| HMD-P1070 |  | Delivery to station and receiving inspection - Madinah |  | 5d | 2028-12-24 | 2028-12-28 | HMD-P1060 | 57d | 0d | Contract cost (BOQ x payment milestones) [55621 SAR]; Progress weight (fair EPC distribution, SAR value) [213280 SAR] | 213,280 | HHR | HMD | HHR | Standard | PM | ETECHS | PRO | - | - | PRO | MS4 |
|  | EAB | **Abqaiq (EWR)** |  |  | 2028-06-22 | 2028-11-22 |  |  |  |  |  |  |  |  |  |  |  |  |  |  |  |  |
| EAB-P1100 |  | MS4 Material delivered (20%) - Abqaiq | milestone | 0d | 2028-11-22 | 2028-11-22 | EAB-P1070 | 137d | 0d |  |  | EWR | EAB | EWR | Standard | PM | ETECHS | MS | - | - | MS | MS4 |
|  | CCT | **CCTV system** |  |  | 2028-06-22 | 2028-09-27 |  |  |  |  |  |  |  |  |  |  |  |  |  |  |  |  |
| EAB-P1010 |  | Manufacture CCTV cameras and analytics - Abqaiq |  | 70d | 2028-06-22 | 2028-09-27 | EAB-E1210 | 137d | 0d | Contract cost (BOQ x payment milestones) [36997 SAR]; Progress weight (fair EPC distribution, SAR value) [57040 SAR] | 57,040 | EWR | EAB | EWR | Standard | CCTV | Vendor | PRO | - | - | PRO | MS4 |
|  | VMS | **Video management and video wall** |  |  | 2028-06-22 | 2028-09-27 |  |  |  |  |  |  |  |  |  |  |  |  |  |  |  |  |
| EAB-P1020 |  | Manufacture video management servers, storage and video wall - Abqaiq |  | 70d | 2028-06-22 | 2028-09-27 | EAB-E1210 | 137d | 0d | Contract cost (BOQ x payment milestones) [95266 SAR]; Progress weight (fair EPC distribution, SAR value) [146320 SAR] | 146,320 | EWR | EAB | EWR | Standard | VMS | Vendor | PRO | - | - | PRO | MS4 |
|  | ACC | **Access control and intercom** |  |  | 2028-06-22 | 2028-09-27 |  |  |  |  |  |  |  |  |  |  |  |  |  |  |  |  |
| EAB-P1030 |  | Manufacture access control and intercom equipment - Abqaiq |  | 70d | 2028-06-22 | 2028-09-27 | EAB-E1210 | 137d | 0d | Contract cost (BOQ x payment milestones) [14683 SAR]; Progress weight (fair EPC distribution, SAR value) [22320 SAR] | 22,320 | EWR | EAB | EWR | Standard | ACC | Vendor | PRO | - | - | PRO | MS4 |
|  | UPN | **UPS, network and cabinets** |  |  | 2028-06-22 | 2028-09-27 |  |  |  |  |  |  |  |  |  |  |  |  |  |  |  |  |
| EAB-P1040 |  | Manufacture UPS, network switches and field cabinets - Abqaiq |  | 70d | 2028-06-22 | 2028-09-27 | EAB-E1210 | 137d | 0d | Contract cost (BOQ x payment milestones) [153905 SAR]; Progress weight (fair EPC distribution, SAR value) [236220 SAR] | 236,220 | EWR | EAB | EWR | Standard | UPSNET | Vendor | PRO | - | - | PRO | MS4 |
|  | LOG | **FAT and logistics** |  |  | 2028-09-28 | 2028-11-22 |  |  |  |  |  |  |  |  |  |  |  |  |  |  |  |  |
| EAB-P1050 |  | Factory acceptance test at vendor premises - Abqaiq |  | 10d | 2028-09-28 | 2028-10-11 | EAB-P1010, EAB-P1020, EAB-P1030, EAB-P1040 | 137d | 0d | Contract cost (BOQ x payment milestones) [20057 SAR]; Progress weight (fair EPC distribution, SAR value) [76880 SAR] | 76,880 | EWR | EAB | EWR | Standard | PM | ETECHS | PRO | - | - | PRO | MS4 |
| EAB-P1060 |  | Shipping and customs clearance - Abqaiq |  | 25d | 2028-10-12 | 2028-11-15 | EAB-P1050 | 137d | 0d | Contract cost (BOQ x payment milestones) [60170 SAR]; Progress weight (fair EPC distribution, SAR value) [153760 SAR] | 153,760 | EWR | EAB | EWR | Standard | PM | Vendor | PRO | - | - | PRO | MS4 |
| EAB-P1070 |  | Delivery to station and receiving inspection - Abqaiq |  | 5d | 2028-11-16 | 2028-11-22 | EAB-P1060 | 137d | 0d | Contract cost (BOQ x payment milestones) [20057 SAR]; Progress weight (fair EPC distribution, SAR value) [76880 SAR] | 76,880 | EWR | EAB | EWR | Standard | PM | ETECHS | PRO | - | - | PRO | MS4 |
|  | NHL | **Hail (NSR)** |  |  | 2028-07-18 | 2028-12-18 |  |  |  |  |  |  |  |  |  |  |  |  |  |  |  |  |
| NHL-P1100 |  | MS4 Material delivered (20%) - Hail | milestone | 0d | 2028-12-18 | 2028-12-18 | NHL-P1070 | 109d | 0d |  |  | NSR | NHL | NSR | Standard | PM | ETECHS | MS | - | - | MS | MS4 |
|  | CCT | **CCTV system** |  |  | 2028-07-18 | 2028-10-23 |  |  |  |  |  |  |  |  |  |  |  |  |  |  |  |  |
| NHL-P1010 |  | Manufacture CCTV cameras and analytics - Hail |  | 70d | 2028-07-18 | 2028-10-23 | NHL-E1210 | 109d | 0d | Contract cost (BOQ x payment milestones) [104169 SAR]; Progress weight (fair EPC distribution, SAR value) [159960 SAR] | 159,960 | NSR | NHL | NSR | Standard | CCTV | Vendor | PRO | - | - | PRO | MS4 |
|  | VMS | **Video management and video wall** |  |  | 2028-07-18 | 2028-10-23 |  |  |  |  |  |  |  |  |  |  |  |  |  |  |  |  |
| NHL-P1020 |  | Manufacture video management servers, storage and video wall - Hail |  | 70d | 2028-07-18 | 2028-10-23 | NHL-E1210 | 109d | 0d | Contract cost (BOQ x payment milestones) [110385 SAR]; Progress weight (fair EPC distribution, SAR value) [169260 SAR] | 169,260 | NSR | NHL | NSR | Standard | VMS | Vendor | PRO | - | - | PRO | MS4 |

| ID | WBS | Activity | Type | Duration | Start | Finish | Predecessors | Total float | Free float | Resources | Cost | Area | Station | Railway | Priority | Discipline | Responsibility | EPC phase | Design stage | Submittal or approval | Programme phase | Payment milestone |
| --- | --- | --- | --- | --- | --- | --- | --- | --- | --- | --- | --- | --- | --- | --- | --- | --- | --- | --- | --- | --- | --- | --- |
|  | ACC | **Access control and intercom** |  |  | 2028-07-18 | 2028-10-23 |  |  |  |  |  |  |  |  |  |  |  |  |  |  |  |  |
| NHL-P1030 |  | Manufacture access control and intercom equipment - Hail |  | 70d | 2028-07-18 | 2028-10-23 | NHL-E1210 | 109d | 0d | Contract cost (BOQ x payment milestones) [13547 SAR]; Progress weight (fair EPC distribution, SAR value) [21080 SAR] | 21,080 | NSR | NHL | NSR | Standard | ACC | Vendor | PRO | - | - | PRO | MS4 |
|  | UPN | **UPS, network and cabinets** |  |  | 2028-07-18 | 2028-10-23 |  |  |  |  |  |  |  |  |  |  |  |  |  |  |  |  |
| NHL-P1040 |  | Manufacture UPS, network switches and field cabinets - Hail |  | 70d | 2028-07-18 | 2028-10-23 | NHL-E1210 | 109d | 0d | Contract cost (BOQ x payment milestones) [281736 SAR]; Progress weight (fair EPC distribution, SAR value) [432760 SAR] | 432,760 | NSR | NHL | NSR | Standard | UPSNET | Vendor | PRO | - | - | PRO | MS4 |
|  | LOG | **FAT and logistics** |  |  | 2028-10-24 | 2028-12-18 |  |  |  |  |  |  |  |  |  |  |  |  |  |  |  |  |
| NHL-P1050 |  | Factory acceptance test at vendor premises - Hail |  | 10d | 2028-10-24 | 2028-11-06 | NHL-P1010, NHL-P1020, NHL-P1030, NHL-P1040 | 109d | 0d | Contract cost (BOQ x payment milestones) [33989 SAR]; Progress weight (fair EPC distribution, SAR value) [130820 SAR] | 130,820 | NSR | NHL | NSR | Standard | PM | ETECHS | PRO | - | - | PRO | MS4 |
| NHL-P1060 |  | Shipping and customs clearance - Hail |  | 25d | 2028-11-07 | 2028-12-11 | NHL-P1050 | 109d | 0d | Contract cost (BOQ x payment milestones) [101967 SAR]; Progress weight (fair EPC distribution, SAR value) [261020 SAR] | 261,020 | NSR | NHL | NSR | Standard | PM | Vendor | PRO | - | - | PRO | MS4 |
| NHL-P1070 |  | Delivery to station and receiving inspection - Hail |  | 5d | 2028-12-12 | 2028-12-18 | NHL-P1060 | 109d | 0d | Contract cost (BOQ x payment milestones) [33989 SAR]; Progress weight (fair EPC distribution, SAR value) [130820 SAR] | 130,820 | NSR | NHL | NSR | Standard | PM | ETECHS | PRO | - | - | PRO | MS4 |
|  | NJF | **Al Jouf (NSR)** |  |  | 2028-09-28 | 2029-03-08 |  |  |  |  |  |  |  |  |  |  |  |  |  |  |  |  |
| NJF-P1100 |  | MS4 Material delivered (20%) - Al Jouf | milestone | 0d | 2029-03-08 | 2029-03-08 | NJF-P1070 | 57d | 0d |  |  | NSR | NJF | NSR | Standard | PM | ETECHS | MS | - | - | MS | MS4 |
|  | CCT | **CCTV system** |  |  | 2028-09-28 | 2029-01-03 |  |  |  |  |  |  |  |  |  |  |  |  |  |  |  |  |
| NJF-P1010 |  | Manufacture CCTV cameras and analytics - Al Jouf |  | 70d | 2028-09-28 | 2029-01-03 | NJF-E1210 | 57d | 0d | Contract cost (BOQ x payment milestones) [103843 SAR]; Progress weight (fair EPC distribution, SAR value) [159340 SAR] | 159,340 | NSR | NJF | NSR | Standard | CCTV | Vendor | PRO | - | - | PRO | MS4 |
|  | VMS | **Video management and video wall** |  |  | 2028-09-28 | 2029-01-03 |  |  |  |  |  |  |  |  |  |  |  |  |  |  |  |  |
| NJF-P1020 |  | Manufacture video management servers, storage and video wall - Al Jouf |  | 70d | 2028-09-28 | 2029-01-03 | NJF-E1210 | 57d | 0d | Contract cost (BOQ x payment milestones) [110039 SAR]; Progress weight (fair EPC distribution, SAR value) [169260 SAR] | 169,260 | NSR | NJF | NSR | Standard | VMS | Vendor | PRO | - | - | PRO | MS4 |
|  | ACC | **Access control and intercom** |  |  | 2028-09-28 | 2029-01-03 |  |  |  |  |  |  |  |  |  |  |  |  |  |  |  |  |
| NJF-P1030 |  | Manufacture access control and intercom equipment - Al Jouf |  | 70d | 2028-09-28 | 2029-01-03 | NJF-E1210 | 57d | 0d | Contract cost (BOQ x payment milestones) [13505 SAR]; Progress weight (fair EPC distribution, SAR value) [20460 SAR] | 20,460 | NSR | NJF | NSR | Standard | ACC | Vendor | PRO | - | - | PRO | MS4 |
|  | UPN | **UPS, network and cabinets** |  |  | 2028-09-28 | 2029-01-03 |  |  |  |  |  |  |  |  |  |  |  |  |  |  |  |  |
| NJF-P1040 |  | Manufacture UPS, network switches and field cabinets - Al Jouf |  | 70d | 2028-09-28 | 2029-01-03 | NJF-E1210 | 57d | 0d | Contract cost (BOQ x payment milestones) [286040 SAR]; Progress weight (fair EPC distribution, SAR value) [439580 SAR] | 439,580 | NSR | NJF | NSR | Standard | UPSNET | Vendor | PRO | - | - | PRO | MS4 |
|  | LOG | **FAT and logistics** |  |  | 2029-01-04 | 2029-03-08 |  |  |  |  |  |  |  |  |  |  |  |  |  |  |  |  |
| NJF-P1050 |  | Factory acceptance test at vendor premises - Al Jouf |  | 10d | 2029-01-04 | 2029-01-17 | NJF-P1010, NJF-P1020, NJF-P1030, NJF-P1040 | 57d | 0d | Contract cost (BOQ x payment milestones) [34228 SAR]; Progress weight (fair EPC distribution, SAR value) [131440 SAR] | 131,440 | NSR | NJF | NSR | Standard | PM | ETECHS | PRO | - | - | PRO | MS4 |
| NJF-P1060 |  | Shipping and customs clearance - Al Jouf |  | 25d | 2029-01-18 | 2029-03-01 | NJF-P1050 | 57d | 0d | Contract cost (BOQ x payment milestones) [102685 SAR]; Progress weight (fair EPC distribution, SAR value) [262880 SAR] | 262,880 | NSR | NJF | NSR | Standard | PM | Vendor | PRO | - | - | PRO | MS4 |
| NJF-P1070 |  | Delivery to station and receiving inspection - Al Jouf |  | 5d | 2029-03-04 | 2029-03-08 | NJF-P1060 | 57d | 0d | Contract cost (BOQ x payment milestones) [34228 SAR]; Progress weight (fair EPC distribution, SAR value) [131440 SAR] | 131,440 | NSR | NJF | NSR | Standard | PM | ETECHS | PRO | - | - | PRO | MS4 |
|  | NQR | **Al Qurayyat (NSR)** |  |  | 2028-11-16 | 2029-05-03 |  |  |  |  |  |  |  |  |  |  |  |  |  |  |  |  |
| NQR-P1100 |  | MS4 Material delivered (20%) - Al Qurayyat | milestone | 0d | 2029-05-03 | 2029-05-03 | NQR-P1070 | 22d | 0d |  |  | NSR | NQR | NSR | Standard | PM | ETECHS | MS | - | - | MS | MS4 |

| ID | WBS | Activity | Type | Duration | Start | Finish | Predecessors | Total float | Free float | Resources | Cost | Area | Station | Railway | Priority | Discipline | Responsibility | EPC phase | Design stage | Submittal or approval | Programme phase | Payment milestone |
| --- | --- | --- | --- | --- | --- | --- | --- | --- | --- | --- | --- | --- | --- | --- | --- | --- | --- | --- | --- | --- | --- | --- |
|  | CCT | **CCTV system** |  |  | 2028-11-16 | 2029-03-01 |  |  |  |  |  |  |  |  |  |  |  |  |  |  |  |  |
| NQR-P1010 |  | Manufacture CCTV cameras and analytics - Al Qurayyat |  | 70d | 2028-11-16 | 2029-03-01 | NQR-E1210 | 22d | 0d | Contract cost (BOQ x payment milestones) [104169 SAR]; Progress weight (fair EPC distribution, SAR value) [159960 SAR] | 159,960 | NSR | NQR | NSR | Standard | CCTV | Vendor | PRO | - | - | PRO | MS4 |
|  | VMS | **Video management and video wall** |  |  | 2028-11-16 | 2029-03-01 |  |  |  |  |  |  |  |  |  |  |  |  |  |  |  |  |
| NQR-P1020 |  | Manufacture video management servers, storage and video wall - Al Qurayyat |  | 70d | 2028-11-16 | 2029-03-01 | NQR-E1210 | 22d | 0d | Contract cost (BOQ x payment milestones) [110385 SAR]; Progress weight (fair EPC distribution, SAR value) [169260 SAR] | 169,260 | NSR | NQR | NSR | Standard | VMS | Vendor | PRO | - | - | PRO | MS4 |
|  | ACC | **Access control and intercom** |  |  | 2028-11-16 | 2029-03-01 |  |  |  |  |  |  |  |  |  |  |  |  |  |  |  |  |
| NQR-P1030 |  | Manufacture access control and intercom equipment - Al Qurayyat |  | 70d | 2028-11-16 | 2029-03-01 | NQR-E1210 | 22d | 0d | Contract cost (BOQ x payment milestones) [13547 SAR]; Progress weight (fair EPC distribution, SAR value) [21080 SAR] | 21,080 | NSR | NQR | NSR | Standard | ACC | Vendor | PRO | - | - | PRO | MS4 |
|  | UPN | **UPS, network and cabinets** |  |  | 2028-11-16 | 2029-03-01 |  |  |  |  |  |  |  |  |  |  |  |  |  |  |  |  |
| NQR-P1040 |  | Manufacture UPS, network switches and field cabinets - Al Qurayyat |  | 70d | 2028-11-16 | 2029-03-01 | NQR-E1210 | 22d | 0d | Contract cost (BOQ x payment milestones) [281736 SAR]; Progress weight (fair EPC distribution, SAR value) [432760 SAR] | 432,760 | NSR | NQR | NSR | Standard | UPSNET | Vendor | PRO | - | - | PRO | MS4 |
|  | LOG | **FAT and logistics** |  |  | 2029-03-04 | 2029-05-03 |  |  |  |  |  |  |  |  |  |  |  |  |  |  |  |  |
| NQR-P1050 |  | Factory acceptance test at vendor premises - Al Qurayyat |  | 10d | 2029-03-04 | 2029-03-15 | NQR-P1010, NQR-P1020, NQR-P1030, NQR-P1040 | 22d | 0d | Contract cost (BOQ x payment milestones) [33989 SAR]; Progress weight (fair EPC distribution, SAR value) [130820 SAR] | 130,820 | NSR | NQR | NSR | Standard | PM | ETECHS | PRO | - | - | PRO | MS4 |
| NQR-P1060 |  | Shipping and customs clearance - Al Qurayyat |  | 25d | 2029-03-18 | 2029-04-19 | NQR-P1050 | 22d | 0d | Contract cost (BOQ x payment milestones) [101967 SAR]; Progress weight (fair EPC distribution, SAR value) [261020 SAR] | 261,020 | NSR | NQR | NSR | Standard | PM | Vendor | PRO | - | - | PRO | MS4 |
| NQR-P1070 |  | Delivery to station and receiving inspection - Al Qurayyat |  | 5d | 2029-04-29 | 2029-05-03 | NQR-P1060 | 22d | 0d | Contract cost (BOQ x payment milestones) [33989 SAR]; Progress weight (fair EPC distribution, SAR value) [130820 SAR] | 130,820 | NSR | NQR | NSR | Standard | PM | ETECHS | PRO | - | - | PRO | MS4 |
|  | CON | **Construction** |  |  | 2027-03-01 | 2029-06-24 |  |  |  |  |  |  |  |  |  |  |  |  |  |  |  |  |
|  | NRY | **Riyadh (Thumamah) (NSR)** |  |  | 2027-03-01 | 2027-11-15 |  |  |  |  |  |  |  |  |  |  |  |  |  |  |  |  |
| NRY-C2100 |  | MS5 Installation complete (20%) - Riyadh (Thumamah) | milestone | 0d | 2027-11-15 | 2027-11-15 | NRY-C2020, NRY-C2030, NRY-C2040, NRY-C2050, NRY-C1020 | 420d | 0d |  |  | NSR | NRY | NSR | Priority 1 | PM | ETECHS | MS | - | - | MS | MS5 |
|  | ENA | **Enabling works** |  |  | 2027-03-01 | 2027-04-11 |  |  |  |  |  |  |  |  |  |  |  |  |  |  |  |  |
| NRY-X1010 |  | Enabling works: site preparation, setting out, temporary works and utilities clearance - Riyadh (Thumamah) |  | 10d | 2027-03-01 | 2027-03-21 | PRJ-M1150 FS+40d | 471d | 0d | Contract cost (BOQ x payment milestones) [8432 SAR]; Progress weight (fair EPC distribution, SAR value) [33480 SAR] | 33,480 | NSR | NRY | NSR | Priority 1 | CIVIL | ETECHS | CON | - | - | ENA | MS5 |
| NRY-X1020 |  | Enabling works: cable routes, duct-bank and cabinet plinth preparation - Riyadh (Thumamah) |  | 15d | 2027-03-22 | 2027-04-11 | NRY-X1010 | 471d | 0d | Contract cost (BOQ x payment milestones) [12648 SAR]; Progress weight (fair EPC distribution, SAR value) [50220 SAR] | 50,220 | NSR | NRY | NSR | Priority 1 | CIVIL | ETECHS | CON | - | - | ENA | MS5 |
|  | CIV | **Civil works** |  |  | 2027-04-12 | 2027-08-15 |  |  |  |  |  |  |  |  |  |  |  |  |  |  |  |  |
| NRY-C1010 |  | Civil: platform trenches and duct banks - Riyadh (Thumamah) |  | 59d | 2027-04-12 | 2027-07-08 | NRY-X1020 | 471d | 0d | Contract cost (BOQ x payment milestones) [105400 SAR]; Progress weight (fair EPC distribution, SAR value) [217000 SAR] | 217,000 | NSR | NRY | NSR | Priority 1 | CIVIL | ETECHS | CON | - | - | CON | MS5 |
| NRY-C1020 |  | Civil: camera and ALPR pole foundations and poles - Riyadh (Thumamah) |  | 47d | 2027-06-10 | 2027-08-15 | NRY-C1010 SS+38d | 471d | 51d | Contract cost (BOQ x payment milestones) [84320 SAR]; Progress weight (fair EPC distribution, SAR value) [166780 SAR] | 166,780 | NSR | NRY | NSR | Priority 1 | CIVIL | ETECHS | CON | - | - | CON | MS5 |
|  | INS | **Installation** |  |  | 2027-09-27 | 2027-11-15 |  |  |  |  |  |  |  |  |  |  |  |  |  |  |  |  |
| NRY-C2010 |  | Install UPS, network switches and field cabinets - Riyadh (Thumamah) |  | 11d | 2027-09-27 | 2027-10-11 | NRY-P1100 | 420d | 0d | Contract cost (BOQ x payment milestones) [97072 SAR]; Progress weight (fair EPC distribution, SAR value) [100440 SAR] | 100,440 | NSR | NRY | NSR | Priority 1 | UPSNET | ETECHS | CON | - | - | CON | MS5 |
| NRY-C2020 |  | Cabling and termination (power, fibre, data) - Riyadh (Thumamah) |  | 18d | 2027-10-03 | 2027-10-26 | NRY-C2010 SS+4d, NRY-C1010 SS+43d | 420d | 0d | Contract cost (BOQ x payment milestones) [145607 SAR]; Progress weight (fair EPC distribution, SAR value) [200260 SAR] | 200,260 | NSR | NRY | NSR | Priority 1 | CCTV | ETECHS | CON | - | - | CON | MS5 |
| NRY-C2040 |  | Install video management, video wall and control-room equipment - Riyadh (Thumamah) |  | 12d | 2027-10-12 | 2027-10-27 | NRY-C2010 | 433d | 13d | Contract cost (BOQ x payment milestones) [72804 SAR]; Progress weight (fair EPC distribution, SAR value) [100440 SAR] | 100,440 | NSR | NRY | NSR | Priority 1 | VMS | ETECHS | CON | - | - | CON | MS5 |
| NRY-C2050 |  | Install access control and intercom - Riyadh (Thumamah) |  | 11d | 2027-10-18 | 2027-11-01 | NRY-C2010 FS+4d | 430d | 10d | Contract cost (BOQ x payment milestones) [48536 SAR]; Progress weight (fair EPC distribution, SAR value) [66960 SAR] | 66,960 | NSR | NRY | NSR | Priority 1 | ACC | ETECHS | CON | - | - | CON | MS5 |
| NRY-C2030 |  | Install and aim CCTV cameras - Riyadh (Thumamah) |  | 14d | 2027-10-27 | 2027-11-15 | NRY-C2020, NRY-C1020 | 420d | 0d | Contract cost (BOQ x payment milestones) [121339 SAR]; Progress weight (fair EPC distribution, SAR value) [166780 SAR] | 166,780 | NSR | NRY | NSR | Priority 1 | CCTV | ETECHS | CON | - | - | CON | MS5 |

| ID | WBS | Activity | Type | Duration | Start | Finish | Predecessors | Total float | Free float | Resources | Cost | Area | Station | Railway | Priority | EPC phase | Discipline | Responsibility | Design stage | Submittal or approval | Payment milestone | Programme phase |
| --- | --- | --- | --- | --- | --- | --- | --- | --- | --- | --- | --- | --- | --- | --- | --- | --- | --- | --- | --- | --- | --- | --- |
|  | HMK | **Makkah (HHR)** |  |  | 2027-03-01 | 2028-04-24 |  |  |  |  |  |  |  |  |  |  |  |  |  |  |  |  |
| HMK-C2100 |  | MS5 Installation complete (20%) - Makkah | milestone | 0d | 2028-04-24 | 2028-04-24 | HMK-C2020, HMK-C2030, HMK-C2040, HMK-C2050, HMK-C1020 | 300d | 0d |  |  | HHR | HMK | HHR | Priority 1 | MS | PM | ETECHS | - | - | MS5 | MS |
|  | ENA | **Enabling works** |  |  | 2027-03-01 | 2027-04-11 |  |  |  |  |  |  |  |  |  |  |  |  |  |  |  |  |
| HMK-X1010 |  | Enabling works: site preparation, setting out, temporary works and utilities clearance - Makkah |  | 10d | 2027-03-01 | 2027-03-21 | PRJ-M1150 FS+40d | 430d | 0d | Contract cost (BOQ x payment milestones) [7867 SAR]; Progress weight (fair EPC distribution, SAR value) [93000 SAR] | 93,000 | HHR | HMK | HHR | Priority 1 | CON | CIVIL | ETECHS | - | - | MS5 | ENA |
| HMK-X1020 |  | Enabling works: cable routes, duct-bank and cabinet plinth preparation - Makkah |  | 15d | 2027-03-22 | 2027-04-11 | HMK-X1010 | 430d | 0d | Contract cost (BOQ x payment milestones) [11800 SAR]; Progress weight (fair EPC distribution, SAR value) [140120 SAR] | 140,120 | HHR | HMK | HHR | Priority 1 | CON | CIVIL | ETECHS | - | - | MS5 | ENA |
|  | CIV | **Civil works** |  |  | 2027-04-12 | 2027-07-26 |  |  |  |  |  |  |  |  |  |  |  |  |  |  |  |  |
| HMK-C1010 |  | Civil: platform trenches and duct banks - Makkah |  | 49d | 2027-04-12 | 2027-06-24 | HMK-X1020 | 430d | 0d | Contract cost (BOQ x payment milestones) [98335 SAR]; Progress weight (fair EPC distribution, SAR value) [606360 SAR] | 606,360 | HHR | HMK | HHR | Priority 1 | CON | CIVIL | ETECHS | - | - | MS5 | CON |
| HMK-C1020 |  | Civil: camera and ALPR pole foundations and poles - Makkah |  | 39d | 2027-06-02 | 2027-07-26 | HMK-C1010 SS+32d | 447d | 147d | Contract cost (BOQ x payment milestones) [78668 SAR]; Progress weight (fair EPC distribution, SAR value) [466240 SAR] | 466,240 | HHR | HMK | HHR | Priority 1 | CON | CIVIL | ETECHS | - | - | MS5 | CON |
|  | INS | **Installation** |  |  | 2027-11-22 | 2028-04-24 |  |  |  |  |  |  |  |  |  |  |  |  |  |  |  |  |
| HMK-C2010 |  | Install UPS, network switches and field cabinets - Makkah |  | 32d | 2027-11-22 | 2028-01-04 | HMK-P1100 | 300d | 0d | Contract cost (BOQ x payment milestones) [349070 SAR]; Progress weight (fair EPC distribution, SAR value) [279620 SAR] | 279,620 | HHR | HMK | HHR | Priority 1 | CON | UPSNET | ETECHS | - | - | MS5 | CON |
| HMK-C2020 |  | Cabling and termination (power, fibre, data) - Makkah |  | 53d | 2027-12-07 | 2028-02-17 | HMK-C2010 SS+11d, HMK-C1010 SS+35d | 300d | 0d | Contract cost (BOQ x payment milestones) [523605 SAR]; Progress weight (fair EPC distribution, SAR value) [559240 SAR] | 559,240 | HHR | HMK | HHR | Priority 1 | CON | CCTV | ETECHS | - | - | MS5 | CON |
| HMK-C2040 |  | Install video management, video wall and control-room equipment - Makkah |  | 37d | 2028-01-05 | 2028-03-02 | HMK-C2010 | 337d | 37d | Contract cost (BOQ x payment milestones) [261802 SAR]; Progress weight (fair EPC distribution, SAR value) [279620 SAR] | 279,620 | HHR | HMK | HHR | Priority 1 | CON | VMS | ETECHS | - | - | MS5 | CON |
| HMK-C2050 |  | Install access control and intercom - Makkah |  | 32d | 2028-01-20 | 2028-03-12 | HMK-C2010 FS+11d | 331d | 31d | Contract cost (BOQ x payment milestones) [174535 SAR]; Progress weight (fair EPC distribution, SAR value) [186620 SAR] | 186,620 | HHR | HMK | HHR | Priority 1 | CON | ACC | ETECHS | - | - | MS5 | CON |
| HMK-C2030 |  | Install and aim CCTV cameras - Makkah |  | 42d | 2028-02-27 | 2028-04-24 | HMK-C2020, HMK-C1020 | 300d | 0d | Contract cost (BOQ x payment milestones) [436337 SAR]; Progress weight (fair EPC distribution, SAR value) [466240 SAR] | 466,240 | HHR | HMK | HHR | Priority 1 | CON | CCTV | ETECHS | - | - | MS5 | CON |
|  | ERY | **Riyadh (Malaz) (EWR)** |  |  | 2027-03-15 | 2027-09-19 |  |  |  |  |  |  |  |  |  |  |  |  |  |  |  |  |
| ERY-C2100 |  | MS5 Installation complete (20%) - Riyadh (Malaz) | milestone | 0d | 2027-09-19 | 2027-09-19 | ERY-C2020, ERY-C2030, ERY-C2040, ERY-C2050, ERY-C1020 | 460d | 0d |  |  | EWR | ERY | EWR | Priority 2 | MS | PM | ETECHS | - | - | MS5 | MS |
|  | ENA | **Enabling works** |  |  | 2027-03-15 | 2027-04-04 |  |  |  |  |  |  |  |  |  |  |  |  |  |  |  |  |
| ERY-X1010 |  | Enabling works: site preparation, setting out, temporary works and utilities clearance - Riyadh (Malaz) |  | 5d | 2027-03-15 | 2027-03-21 | ERY-E1210 | 483d | 0d | Contract cost (BOQ x payment milestones) [8803 SAR]; Progress weight (fair EPC distribution, SAR value) [29760 SAR] | 29,760 | EWR | ERY | EWR | Priority 2 | CON | CIVIL | ETECHS | - | - | MS5 | ENA |
| ERY-X1020 |  | Enabling works: cable routes, duct-bank and cabinet plinth preparation - Riyadh (Malaz) |  | 10d | 2027-03-22 | 2027-04-04 | ERY-X1010 | 483d | 0d | Contract cost (BOQ x payment milestones) [13205 SAR]; Progress weight (fair EPC distribution, SAR value) [44640 SAR] | 44,640 | EWR | ERY | EWR | Priority 2 | CON | CIVIL | ETECHS | - | - | MS5 | ENA |
|  | CIV | **Civil works** |  |  | 2027-04-05 | 2027-08-01 |  |  |  |  |  |  |  |  |  |  |  |  |  |  |  |  |
| ERY-C1010 |  | Civil: platform trenches and duct banks - Riyadh (Malaz) |  | 56d | 2027-04-05 | 2027-06-28 | ERY-X1020 | 483d | 0d | Contract cost (BOQ x payment milestones) [110038 SAR]; Progress weight (fair EPC distribution, SAR value) [192820 SAR] | 192,820 | EWR | ERY | EWR | Priority 2 | CON | CIVIL | ETECHS | - | - | MS5 | CON |
| ERY-C1020 |  | Civil: camera and ALPR pole foundations and poles - Riyadh (Malaz) |  | 44d | 2027-06-01 | 2027-08-01 | ERY-C1010 SS+36d | 483d | 23d | Contract cost (BOQ x payment milestones) [88030 SAR]; Progress weight (fair EPC distribution, SAR value) [148180 SAR] | 148,180 | EWR | ERY | EWR | Priority 2 | CON | CIVIL | ETECHS | - | - | MS5 | CON |
|  | INS | **Installation** |  |  | 2027-08-09 | 2027-09-19 |  |  |  |  |  |  |  |  |  |  |  |  |  |  |  |  |
| ERY-C2010 |  | Install UPS, network switches and field cabinets - Riyadh (Malaz) |  | 9d | 2027-08-09 | 2027-08-19 | ERY-P1100 | 460d | 0d | Contract cost (BOQ x payment milestones) [79646 SAR]; Progress weight (fair EPC distribution, SAR value) [89280 SAR] | 89,280 | EWR | ERY | EWR | Priority 2 | CON | UPSNET | ETECHS | - | - | MS5 | CON |
| ERY-C2020 |  | Cabling and termination (power, fibre, data) - Riyadh (Malaz) |  | 15d | 2027-08-12 | 2027-09-01 | ERY-C2010 SS+3d, ERY-C1010 SS+40d | 460d | 0d | Contract cost (BOQ x payment milestones) [119468 SAR]; Progress weight (fair EPC distribution, SAR value) [177940 SAR] | 177,940 | EWR | ERY | EWR | Priority 2 | CON | CCTV | ETECHS | - | - | MS5 | CON |
| ERY-C2040 |  | Install video management, video wall and control-room equipment - Riyadh (Malaz) |  | 11d | 2027-08-22 | 2027-09-05 | ERY-C2010 | 470d | 10d | Contract cost (BOQ x payment milestones) [59734 SAR]; Progress weight (fair EPC distribution, SAR value) [89280 SAR] | 89,280 | EWR | ERY | EWR | Priority 2 | CON | VMS | ETECHS | - | - | MS5 | CON |
| ERY-C2050 |  | Install access control and intercom - Riyadh (Malaz) |  | 9d | 2027-08-25 | 2027-09-06 | ERY-C2010 FS+3d | 469d | 9d | Contract cost (BOQ x payment milestones) [39823 SAR]; Progress weight (fair EPC distribution, SAR value) [59520 SAR] | 59,520 | EWR | ERY | EWR | Priority 2 | CON | ACC | ETECHS | - | - | MS5 | CON |
| ERY-C2030 |  | Install and aim CCTV cameras - Riyadh (Malaz) |  | 12d | 2027-09-02 | 2027-09-19 | ERY-C2020, ERY-C1020 | 460d | 0d | Contract cost (BOQ x payment milestones) [99557 SAR]; Progress weight (fair EPC distribution, SAR value) [148180 SAR] | 148,180 | EWR | ERY | EWR | Priority 2 | CON | CCTV | ETECHS | - | - | MS5 | CON |

| ID | WBS | Activity | Type | Duration | Start | Finish | Predecessors | Total float | Free float | Resources | Cost | Area | Station | Railway | Priority | EPC phase | Discipline | Responsibility | Design stage | Submittal or approval | Payment milestone | Programme phase |
| --- | --- | --- | --- | --- | --- | --- | --- | --- | --- | --- | --- | --- | --- | --- | --- | --- | --- | --- | --- | --- | --- | --- |
|  | HJD | **Jeddah (HHR)** |  |  | 2027-07-14 | 2028-06-14 |  |  |  |  |  |  |  |  |  |  |  |  |  |  |  |  |
| HJD-C2100 |  | MS5 Installation complete (20%) - Jeddah | milestone | 0d | 2028-06-14 | 2028-06-14 | HJD-C2020, HJD-C2030, HJD-C2040, HJD-C2050, HJD-C1020 | 268d | 0d |  |  | HHR | HJD | HHR | Standard | MS | PM | ETECHS | - | - | MS5 | MS |
|  | ENA | **Enabling works** |  |  | 2027-07-14 | 2027-08-03 |  |  |  |  |  |  |  |  |  |  |  |  |  |  |  |  |
| HJD-X1010 |  | Enabling works: site preparation, setting out, temporary works and utilities clearance - Jeddah |  | 5d | 2027-07-14 | 2027-07-20 | HJD-E1210 | 369d | 0d | Contract cost (BOQ x payment milestones) [7180 SAR]; Progress weight (fair EPC distribution, SAR value) [91760 SAR] | 91,760 | HHR | HJD | HHR | Standard | CON | CIVIL | ETECHS | - | - | MS5 | ENA |
| HJD-X1020 |  | Enabling works: cable routes, duct-bank and cabinet plinth preparation - Jeddah |  | 10d | 2027-07-21 | 2027-08-03 | HJD-X1010 | 369d | 0d | Contract cost (BOQ x payment milestones) [10770 SAR]; Progress weight (fair EPC distribution, SAR value) [137640 SAR] | 137,640 | HHR | HJD | HHR | Standard | CON | CIVIL | ETECHS | - | - | MS5 | ENA |
|  | CIV | **Civil works** |  |  | 2027-08-04 | 2027-11-03 |  |  |  |  |  |  |  |  |  |  |  |  |  |  |  |  |
| HJD-C1010 |  | Civil: platform trenches and duct banks - Jeddah |  | 46d | 2027-08-04 | 2027-10-07 | HJD-X1020 | 369d | 0d | Contract cost (BOQ x payment milestones) [89747 SAR]; Progress weight (fair EPC distribution, SAR value) [595820 SAR] | 595,820 | HHR | HJD | HHR | Standard | CON | CIVIL | ETECHS | - | - | MS5 | CON |
| HJD-C1020 |  | Civil: camera and ALPR pole foundations and poles - Jeddah |  | 36d | 2027-09-14 | 2027-11-03 | HJD-C1010 SS+29d | 382d | 114d | Contract cost (BOQ x payment milestones) [71798 SAR]; Progress weight (fair EPC distribution, SAR value) [458180 SAR] | 458,180 | HHR | HJD | HHR | Standard | CON | CIVIL | ETECHS | - | - | MS5 | CON |
|  | INS | **Installation** |  |  | 2028-01-27 | 2028-06-14 |  |  |  |  |  |  |  |  |  |  |  |  |  |  |  |  |
| HJD-C2010 |  | Install UPS, network switches and field cabinets - Jeddah |  | 27d | 2028-01-27 | 2028-03-12 | HJD-P1100 | 268d | 0d | Contract cost (BOQ x payment milestones) [346136 SAR]; Progress weight (fair EPC distribution, SAR value) [275280 SAR] | 275,280 | HHR | HJD | HHR | Standard | CON | UPSNET | ETECHS | - | - | MS5 | CON |
| HJD-C2020 |  | Cabling and termination (power, fibre, data) - Jeddah |  | 45d | 2028-02-09 | 2028-04-18 | HJD-C2010 SS+9d, HJD-C1010 SS+33d | 268d | 0d | Contract cost (BOQ x payment milestones) [519205 SAR]; Progress weight (fair EPC distribution, SAR value) [549940 SAR] | 549,940 | HHR | HJD | HHR | Standard | CON | CCTV | ETECHS | - | - | MS5 | CON |
| HJD-C2040 |  | Install video management, video wall and control-room equipment - Jeddah |  | 31d | 2028-03-13 | 2028-04-24 | HJD-C2010 | 300d | 32d | Contract cost (BOQ x payment milestones) [259602 SAR]; Progress weight (fair EPC distribution, SAR value) [275280 SAR] | 275,280 | HHR | HJD | HHR | Standard | CON | VMS | ETECHS | - | - | MS5 | CON |
| HJD-C2050 |  | Install access control and intercom - Jeddah |  | 27d | 2028-03-26 | 2028-05-08 | HJD-C2010 FS+9d | 295d | 27d | Contract cost (BOQ x payment milestones) [173068 SAR]; Progress weight (fair EPC distribution, SAR value) [183520 SAR] | 183,520 | HHR | HJD | HHR | Standard | CON | ACC | ETECHS | - | - | MS5 | CON |
| HJD-C2030 |  | Install and aim CCTV cameras - Jeddah |  | 36d | 2028-04-19 | 2028-06-14 | HJD-C2020, HJD-C1020 | 268d | 0d | Contract cost (BOQ x payment milestones) [432670 SAR]; Progress weight (fair EPC distribution, SAR value) [458180 SAR] | 458,180 | HHR | HJD | HHR | Standard | CON | CCTV | ETECHS | - | - | MS5 | CON |
|  | EDM | **Dammam (EWR)** |  |  | 2027-09-08 | 2028-03-29 |  |  |  |  |  |  |  |  |  |  |  |  |  |  |  |  |
| EDM-C2100 |  | MS5 Installation complete (20%) - Dammam | milestone | 0d | 2028-03-29 | 2028-03-29 | EDM-C2020, EDM-C2030, EDM-C2040, EDM-C2050, EDM-C1020 | 328d | 0d |  |  | EWR | EDM | EWR | Standard | MS | PM | ETECHS | - | - | MS5 | MS |
|  | ENA | **Enabling works** |  |  | 2027-09-08 | 2027-09-29 |  |  |  |  |  |  |  |  |  |  |  |  |  |  |  |  |
| EDM-X1010 |  | Enabling works: site preparation, setting out, temporary works and utilities clearance - Dammam |  | 5d | 2027-09-08 | 2027-09-14 | EDM-E1210 | 361d | 0d | Contract cost (BOQ x payment milestones) [8803 SAR]; Progress weight (fair EPC distribution, SAR value) [30380 SAR] | 30,380 | EWR | EDM | EWR | Standard | CON | CIVIL | ETECHS | - | - | MS5 | ENA |
| EDM-X1020 |  | Enabling works: cable routes, duct-bank and cabinet plinth preparation - Dammam |  | 10d | 2027-09-15 | 2027-09-29 | EDM-X1010 | 361d | 0d | Contract cost (BOQ x payment milestones) [13204 SAR]; Progress weight (fair EPC distribution, SAR value) [45880 SAR] | 45,880 | EWR | EDM | EWR | Standard | CON | CIVIL | ETECHS | - | - | MS5 | ENA |
|  | CIV | **Civil works** |  |  | 2027-09-30 | 2028-01-19 |  |  |  |  |  |  |  |  |  |  |  |  |  |  |  |  |
| EDM-C1010 |  | Civil: platform trenches and duct banks - Dammam |  | 56d | 2027-09-30 | 2027-12-16 | EDM-X1020 | 361d | 0d | Contract cost (BOQ x payment milestones) [110036 SAR]; Progress weight (fair EPC distribution, SAR value) [199020 SAR] | 199,020 | EWR | EDM | EWR | Standard | CON | CIVIL | ETECHS | - | - | MS5 | CON |
| EDM-C1020 |  | Civil: camera and ALPR pole foundations and poles - Dammam |  | 44d | 2027-11-21 | 2028-01-19 | EDM-C1010 SS+36d | 361d | 33d | Contract cost (BOQ x payment milestones) [88029 SAR]; Progress weight (fair EPC distribution, SAR value) [153140 SAR] | 153,140 | EWR | EDM | EWR | Standard | CON | CIVIL | ETECHS | - | - | MS5 | CON |
|  | INS | **Installation** |  |  | 2028-02-10 | 2028-03-29 |  |  |  |  |  |  |  |  |  |  |  |  |  |  |  |  |
| EDM-C2010 |  | Install UPS, network switches and field cabinets - Dammam |  | 9d | 2028-02-10 | 2028-02-29 | EDM-P1100 | 328d | 0d | Contract cost (BOQ x payment milestones) [83486 SAR]; Progress weight (fair EPC distribution, SAR value) [91760 SAR] | 91,760 | EWR | EDM | EWR | Standard | CON | UPSNET | ETECHS | - | - | MS5 | CON |
| EDM-C2020 |  | Cabling and termination (power, fibre, data) - Dammam |  | 15d | 2028-02-15 | 2028-03-13 | EDM-C2010 SS+3d, EDM-C1010 SS+40d | 328d | 0d | Contract cost (BOQ x payment milestones) [125229 SAR]; Progress weight (fair EPC distribution, SAR value) [183520 SAR] | 183,520 | EWR | EDM | EWR | Standard | CON | CCTV | ETECHS | - | - | MS5 | CON |
| EDM-C2040 |  | Install video management, video wall and control-room equipment - Dammam |  | 11d | 2028-03-01 | 2028-03-15 | EDM-C2010 | 338d | 10d | Contract cost (BOQ x payment milestones) [62615 SAR]; Progress weight (fair EPC distribution, SAR value) [91760 SAR] | 91,760 | EWR | EDM | EWR | Standard | CON | VMS | ETECHS | - | - | MS5 | CON |
| EDM-C2050 |  | Install access control and intercom - Dammam |  | 9d | 2028-03-06 | 2028-03-16 | EDM-C2010 FS+3d | 337d | 9d | Contract cost (BOQ x payment milestones) [41743 SAR]; Progress weight (fair EPC distribution, SAR value) [61380 SAR] | 61,380 | EWR | EDM | EWR | Standard | CON | ACC | ETECHS | - | - | MS5 | CON |
| EDM-C2030 |  | Install and aim CCTV cameras - Dammam |  | 12d | 2028-03-14 | 2028-03-29 | EDM-C2020, EDM-C1020 | 328d | 0d | Contract cost (BOQ x payment milestones) [104358 SAR]; Progress weight (fair EPC distribution, SAR value) [153140 SAR] | 153,140 | EWR | EDM | EWR | Standard | CON | CCTV | ETECHS | - | - | MS5 | CON |

| ID | WBS | Activity | Type | Duration | Start | Finish | Predecessors | Total float | Free float | Resources | Cost | Area | Station | Railway | Priority | EPC phase | Discipline | Responsibility | Design stage | Submittal or approval | Payment milestone | Programme phase |
| --- | --- | --- | --- | --- | --- | --- | --- | --- | --- | --- | --- | --- | --- | --- | --- | --- | --- | --- | --- | --- | --- | --- |
|  | NQS | **Al Qassim (NSR)** |  |  | 2027-11-03 | 2028-06-07 |  |  |  |  |  |  |  |  |  |  |  |  |  |  |  |  |
| NQS-C2100 |  | MS5 Installation complete (20%) - Al Qassim | milestone | 0d | 2028-06-07 | 2028-06-07 | NQS-C2020, NQS-C2030, NQS-C2040, NQS-C2050, NQS-C1020 | 283d | 0d |  |  | NSR | NQS | NSR | Standard | MS | PM | ETECHS | - | - | MS5 | MS |
|  | ENA | **Enabling works** |  |  | 2027-11-03 | 2027-11-23 |  |  |  |  |  |  |  |  |  |  |  |  |  |  |  |  |
| NQS-X1010 |  | Enabling works: site preparation, setting out, temporary works and utilities clearance - Al Qassim |  | 5d | 2027-11-03 | 2027-11-09 | NQS-E1210 | 315d | 0d | Contract cost (BOQ x payment milestones) [8432 SAR]; Progress weight (fair EPC distribution, SAR value) [32860 SAR] | 32,860 | NSR | NQS | NSR | Standard | CON | CIVIL | ETECHS | - | - | MS5 | ENA |
| NQS-X1020 |  | Enabling works: cable routes, duct-bank and cabinet plinth preparation - Al Qassim |  | 10d | 2027-11-10 | 2027-11-23 | NQS-X1010 | 315d | 0d | Contract cost (BOQ x payment milestones) [12648 SAR]; Progress weight (fair EPC distribution, SAR value) [48980 SAR] | 48,980 | NSR | NQS | NSR | Standard | CON | CIVIL | ETECHS | - | - | MS5 | ENA |
|  | CIV | **Civil works** |  |  | 2027-11-24 | 2028-03-28 |  |  |  |  |  |  |  |  |  |  |  |  |  |  |  |  |
| NQS-C1010 |  | Civil: platform trenches and duct banks - Al Qassim |  | 59d | 2027-11-24 | 2028-02-14 | NQS-X1020 | 315d | 0d | Contract cost (BOQ x payment milestones) [105400 SAR]; Progress weight (fair EPC distribution, SAR value) [212040 SAR] | 212,040 | NSR | NQS | NSR | Standard | CON | CIVIL | ETECHS | - | - | MS5 | CON |
| NQS-C1020 |  | Civil: camera and ALPR pole foundations and poles - Al Qassim |  | 47d | 2028-01-17 | 2028-03-28 | NQS-C1010 SS+38d | 315d | 32d | Contract cost (BOQ x payment milestones) [84320 SAR]; Progress weight (fair EPC distribution, SAR value) [163060 SAR] | 163,060 | NSR | NQS | NSR | Standard | CON | CIVIL | ETECHS | - | - | MS5 | CON |
|  | INS | **Installation** |  |  | 2028-04-12 | 2028-06-07 |  |  |  |  |  |  |  |  |  |  |  |  |  |  |  |  |
| NQS-C2010 |  | Install UPS, network switches and field cabinets - Al Qassim |  | 11d | 2028-04-12 | 2028-04-26 | NQS-P1100 | 283d | 0d | Contract cost (BOQ x payment milestones) [93797 SAR]; Progress weight (fair EPC distribution, SAR value) [97960 SAR] | 97,960 | NSR | NQS | NSR | Standard | CON | UPSNET | ETECHS | - | - | MS5 | CON |
| NQS-C2020 |  | Cabling and termination (power, fibre, data) - Al Qassim |  | 18d | 2028-04-18 | 2028-05-18 | NQS-C2010 SS+4d, NQS-C1010 SS+43d | 283d | 0d | Contract cost (BOQ x payment milestones) [140695 SAR]; Progress weight (fair EPC distribution, SAR value) [195920 SAR] | 195,920 | NSR | NQS | NSR | Standard | CON | CCTV | ETECHS | - | - | MS5 | CON |
| NQS-C2040 |  | Install video management, video wall and control-room equipment - Al Qassim |  | 12d | 2028-04-27 | 2028-05-21 | NQS-C2010 | 296d | 13d | Contract cost (BOQ x payment milestones) [70348 SAR]; Progress weight (fair EPC distribution, SAR value) [97960 SAR] | 97,960 | NSR | NQS | NSR | Standard | CON | VMS | ETECHS | - | - | MS5 | CON |
| NQS-C2050 |  | Install access control and intercom - Al Qassim |  | 11d | 2028-05-10 | 2028-05-24 | NQS-C2010 FS+4d | 293d | 10d | Contract cost (BOQ x payment milestones) [46898 SAR]; Progress weight (fair EPC distribution, SAR value) [65100 SAR] | 65,100 | NSR | NQS | NSR | Standard | CON | ACC | ETECHS | - | - | MS5 | CON |
| NQS-C2030 |  | Install and aim CCTV cameras - Al Qassim |  | 14d | 2028-05-21 | 2028-06-07 | NQS-C2020, NQS-C1020 | 283d | 0d | Contract cost (BOQ x payment milestones) [117246 SAR]; Progress weight (fair EPC distribution, SAR value) [163060 SAR] | 163,060 | NSR | NQS | NSR | Standard | CON | CCTV | ETECHS | - | - | MS5 | CON |
|  | EHF | **Hufuf (EWR)** |  |  | 2027-11-03 | 2028-05-30 |  |  |  |  |  |  |  |  |  |  |  |  |  |  |  |  |
| EHF-C2100 |  | MS5 Installation complete (20%) - Hufuf | milestone | 0d | 2028-05-30 | 2028-05-30 | EHF-C2020, EHF-C2030, EHF-C2040, EHF-C2050, EHF-C1020 | 289d | 0d |  |  | EWR | EHF | EWR | Standard | MS | PM | ETECHS | - | - | MS5 | MS |
|  | ENA | **Enabling works** |  |  | 2027-11-03 | 2027-11-23 |  |  |  |  |  |  |  |  |  |  |  |  |  |  |  |  |
| EHF-X1010 |  | Enabling works: site preparation, setting out, temporary works and utilities clearance - Hufuf |  | 5d | 2027-11-03 | 2027-11-09 | EHF-E1210 | 327d | 0d | Contract cost (BOQ x payment milestones) [8277 SAR]; Progress weight (fair EPC distribution, SAR value) [27280 SAR] | 27,280 | EWR | EHF | EWR | Standard | CON | CIVIL | ETECHS | - | - | MS5 | ENA |
| EHF-X1020 |  | Enabling works: cable routes, duct-bank and cabinet plinth preparation - Hufuf |  | 10d | 2027-11-10 | 2027-11-23 | EHF-X1010 | 327d | 0d | Contract cost (BOQ x payment milestones) [12415 SAR]; Progress weight (fair EPC distribution, SAR value) [40920 SAR] | 40,920 | EWR | EHF | EWR | Standard | CON | CIVIL | ETECHS | - | - | MS5 | ENA |
|  | CIV | **Civil works** |  |  | 2027-11-24 | 2028-03-14 |  |  |  |  |  |  |  |  |  |  |  |  |  |  |  |  |
| EHF-C1010 |  | Civil: platform trenches and duct banks - Hufuf |  | 53d | 2027-11-24 | 2028-02-06 | EHF-X1020 | 327d | 0d | Contract cost (BOQ x payment milestones) [103459 SAR]; Progress weight (fair EPC distribution, SAR value) [176700 SAR] | 176,700 | EWR | EHF | EWR | Standard | CON | CIVIL | ETECHS | - | - | MS5 | CON |
| EHF-C1020 |  | Civil: camera and ALPR pole foundations and poles - Hufuf |  | 41d | 2028-01-11 | 2028-03-14 | EHF-C1010 SS+34d | 327d | 38d | Contract cost (BOQ x payment milestones) [82767 SAR]; Progress weight (fair EPC distribution, SAR value) [135780 SAR] | 135,780 | EWR | EHF | EWR | Standard | CON | CIVIL | ETECHS | - | - | MS5 | CON |
|  | INS | **Installation** |  |  | 2028-04-12 | 2028-05-30 |  |  |  |  |  |  |  |  |  |  |  |  |  |  |  |  |
| EHF-C2010 |  | Install UPS, network switches and field cabinets - Hufuf |  | 9d | 2028-04-12 | 2028-04-24 | EHF-P1100 | 289d | 0d | Contract cost (BOQ x payment milestones) [71756 SAR]; Progress weight (fair EPC distribution, SAR value) [81220 SAR] | 81,220 | EWR | EHF | EWR | Standard | CON | UPSNET | ETECHS | - | - | MS5 | CON |
| EHF-C2020 |  | Cabling and termination (power, fibre, data) - Hufuf |  | 15d | 2028-04-17 | 2028-05-14 | EHF-C2010 SS+3d, EHF-C1010 SS+38d | 289d | 0d | Contract cost (BOQ x payment milestones) [107635 SAR]; Progress weight (fair EPC distribution, SAR value) [163060 SAR] | 163,060 | EWR | EHF | EWR | Standard | CON | CCTV | ETECHS | - | - | MS5 | CON |
| EHF-C2040 |  | Install video management, video wall and control-room equipment - Hufuf |  | 11d | 2028-04-25 | 2028-05-16 | EHF-C2010 | 299d | 10d | Contract cost (BOQ x payment milestones) [53817 SAR]; Progress weight (fair EPC distribution, SAR value) [81220 SAR] | 81,220 | EWR | EHF | EWR | Standard | CON | VMS | ETECHS | - | - | MS5 | CON |
| EHF-C2050 |  | Install access control and intercom - Hufuf |  | 9d | 2028-05-07 | 2028-05-17 | EHF-C2010 FS+3d | 298d | 9d | Contract cost (BOQ x payment milestones) [35878 SAR]; Progress weight (fair EPC distribution, SAR value) [54560 SAR] | 54,560 | EWR | EHF | EWR | Standard | CON | ACC | ETECHS | - | - | MS5 | CON |
| EHF-C2030 |  | Install and aim CCTV cameras - Hufuf |  | 12d | 2028-05-15 | 2028-05-30 | EHF-C2020, EHF-C1020 | 289d | 0d | Contract cost (BOQ x payment milestones) [89695 SAR]; Progress weight (fair EPC distribution, SAR value) [135780 SAR] | 135,780 | EWR | EHF | EWR | Standard | CON | CCTV | ETECHS | - | - | MS5 | CON |

| ID | WBS | Activity | Type | Duration | Start | Finish | Predecessors | Total float | Free float | Resources | Cost | Area | Station | Railway | Priority | EPC phase | Discipline | Responsibility | Design stage | Submittal or approval | Payment milestone | Programme phase |
| --- | --- | --- | --- | --- | --- | --- | --- | --- | --- | --- | --- | --- | --- | --- | --- | --- | --- | --- | --- | --- | --- | --- |
|  | NMJ | **Al Majma'ah (NSR)** |  |  | 2027-12-22 | 2028-07-26 |  |  |  |  |  |  |  |  |  |  |  |  |  |  |  |  |
| NMJ-C2100 |  | MS5 Installation complete (20%) - Al Majma'ah | milestone | 0d | 2028-07-26 | 2028-07-26 | NMJ-C2020, NMJ-C2030, NMJ-C2040, NMJ-C2050, NMJ-C1020 | 248d | 0d |  |  | NSR | NMJ | NSR | Standard | MS | PM | ETECHS | - | - | MS5 | MS |
|  | ENA | **Enabling works** |  |  | 2027-12-22 | 2028-01-11 |  |  |  |  |  |  |  |  |  |  |  |  |  |  |  |  |
| NMJ-X1010 |  | Enabling works: site preparation, setting out, temporary works and utilities clearance - Al Majma'ah |  | 5d | 2027-12-22 | 2027-12-28 | NMJ-E1210 | 280d | 0d | Contract cost (BOQ x payment milestones) [8432 SAR]; Progress weight (fair EPC distribution, SAR value) [32860 SAR] | 32,860 | NSR | NMJ | NSR | Standard | CON | CIVIL | ETECHS | - | - | MS5 | ENA |
| NMJ-X1020 |  | Enabling works: cable routes, duct-bank and cabinet plinth preparation - Al Majma'ah |  | 10d | 2027-12-29 | 2028-01-11 | NMJ-X1010 | 280d | 0d | Contract cost (BOQ x payment milestones) [12648 SAR]; Progress weight (fair EPC distribution, SAR value) [48980 SAR] | 48,980 | NSR | NMJ | NSR | Standard | CON | CIVIL | ETECHS | - | - | MS5 | ENA |
|  | CIV | **Civil works** |  |  | 2028-01-12 | 2028-05-23 |  |  |  |  |  |  |  |  |  |  |  |  |  |  |  |  |
| NMJ-C1010 |  | Civil: platform trenches and duct banks - Al Majma'ah |  | 59d | 2028-01-12 | 2028-04-10 | NMJ-X1020 | 280d | 0d | Contract cost (BOQ x payment milestones) [105400 SAR]; Progress weight (fair EPC distribution, SAR value) [212040 SAR] | 212,040 | NSR | NMJ | NSR | Standard | CON | CIVIL | ETECHS | - | - | MS5 | CON |
| NMJ-C1020 |  | Civil: camera and ALPR pole foundations and poles - Al Majma'ah |  | 47d | 2028-03-13 | 2028-05-23 | NMJ-C1010 SS+38d | 280d | 32d | Contract cost (BOQ x payment milestones) [84320 SAR]; Progress weight (fair EPC distribution, SAR value) [163060 SAR] | 163,060 | NSR | NMJ | NSR | Standard | CON | CIVIL | ETECHS | - | - | MS5 | CON |
|  | INS | **Installation** |  |  | 2028-06-07 | 2028-07-26 |  |  |  |  |  |  |  |  |  |  |  |  |  |  |  |  |
| NMJ-C2010 |  | Install UPS, network switches and field cabinets - Al Majma'ah |  | 11d | 2028-06-07 | 2028-06-21 | NMJ-P1100 | 248d | 0d | Contract cost (BOQ x payment milestones) [93797 SAR]; Progress weight (fair EPC distribution, SAR value) [97960 SAR] | 97,960 | NSR | NMJ | NSR | Standard | CON | UPSNET | ETECHS | - | - | MS5 | CON |
| NMJ-C2020 |  | Cabling and termination (power, fibre, data) - Al Majma'ah |  | 18d | 2028-06-13 | 2028-07-06 | NMJ-C2010 SS+4d, NMJ-C1010 SS+43d | 248d | 0d | Contract cost (BOQ x payment milestones) [140695 SAR]; Progress weight (fair EPC distribution, SAR value) [195920 SAR] | 195,920 | NSR | NMJ | NSR | Standard | CON | CCTV | ETECHS | - | - | MS5 | CON |
| NMJ-C2040 |  | Install video management, video wall and control-room equipment - Al Majma'ah |  | 12d | 2028-06-22 | 2028-07-09 | NMJ-C2010 | 261d | 13d | Contract cost (BOQ x payment milestones) [70348 SAR]; Progress weight (fair EPC distribution, SAR value) [97960 SAR] | 97,960 | NSR | NMJ | NSR | Standard | CON | VMS | ETECHS | - | - | MS5 | CON |
| NMJ-C2050 |  | Install access control and intercom - Al Majma'ah |  | 11d | 2028-06-28 | 2028-07-12 | NMJ-C2010 FS+4d | 258d | 10d | Contract cost (BOQ x payment milestones) [46898 SAR]; Progress weight (fair EPC distribution, SAR value) [65100 SAR] | 65,100 | NSR | NMJ | NSR | Standard | CON | ACC | ETECHS | - | - | MS5 | CON |
| NMJ-C2030 |  | Install and aim CCTV cameras - Al Majma'ah |  | 14d | 2028-07-09 | 2028-07-26 | NMJ-C2020, NMJ-C1020 | 248d | 0d | Contract cost (BOQ x payment milestones) [117246 SAR]; Progress weight (fair EPC distribution, SAR value) [163060 SAR] | 163,060 | NSR | NMJ | NSR | Standard | CON | CCTV | ETECHS | - | - | MS5 | CON |
|  | HKA | **KAEC (HHR)** |  |  | 2028-06-18 | 2029-04-09 |  |  |  |  |  |  |  |  |  |  |  |  |  |  |  |  |
| HKA-C2100 |  | MS5 Installation complete (20%) - KAEC | milestone | 0d | 2029-04-09 | 2029-04-09 | HKA-C2020, HKA-C2030, HKA-C2040, HKA-C2050, HKA-C1020 | 61d | 0d |  |  | HHR | HKA | HHR | Standard | MS | PM | ETECHS | - | - | MS5 | MS |
|  | ENA | **Enabling works** |  |  | 2028-06-18 | 2028-07-06 |  |  |  |  |  |  |  |  |  |  |  |  |  |  |  |  |
| HKA-X1010 |  | Enabling works: site preparation, setting out, temporary works and utilities clearance - KAEC |  | 5d | 2028-06-18 | 2028-06-22 | HKA-E1210 | 170d | 0d | Contract cost (BOQ x payment milestones) [2574 SAR]; Progress weight (fair EPC distribution, SAR value) [53320 SAR] | 53,320 | HHR | HKA | HHR | Standard | CON | CIVIL | ETECHS | - | - | MS5 | ENA |
| HKA-X1020 |  | Enabling works: cable routes, duct-bank and cabinet plinth preparation - KAEC |  | 10d | 2028-06-25 | 2028-07-06 | HKA-X1010 | 170d | 0d | Contract cost (BOQ x payment milestones) [3861 SAR]; Progress weight (fair EPC distribution, SAR value) [79980 SAR] | 79,980 | HHR | HKA | HHR | Standard | CON | CIVIL | ETECHS | - | - | MS5 | ENA |
|  | CIV | **Civil works** |  |  | 2028-07-09 | 2028-09-07 |  |  |  |  |  |  |  |  |  |  |  |  |  |  |  |  |
| HKA-C1010 |  | Civil: platform trenches and duct banks - KAEC |  | 31d | 2028-07-09 | 2028-08-20 | HKA-X1020 | 170d | 0d | Contract cost (BOQ x payment milestones) [32177 SAR]; Progress weight (fair EPC distribution, SAR value) [347200 SAR] | 347,200 | HHR | HKA | HHR | Standard | CON | CIVIL | ETECHS | - | - | MS5 | CON |
| HKA-C1020 |  | Civil: camera and ALPR pole foundations and poles - KAEC |  | 25d | 2028-08-06 | 2028-09-07 | HKA-C1010 SS+20d | 181d | 120d | Contract cost (BOQ x payment milestones) [25742 SAR]; Progress weight (fair EPC distribution, SAR value) [267220 SAR] | 267,220 | HHR | HKA | HHR | Standard | CON | CIVIL | ETECHS | - | - | MS5 | CON |
|  | INS | **Installation** |  |  | 2028-12-31 | 2029-04-09 |  |  |  |  |  |  |  |  |  |  |  |  |  |  |  |  |
| HKA-C2010 |  | Install UPS, network switches and field cabinets - KAEC |  | 20d | 2028-12-31 | 2029-01-25 | HKA-P1100 | 61d | 0d | Contract cost (BOQ x payment milestones) [209704 SAR]; Progress weight (fair EPC distribution, SAR value) [159960 SAR] | 159,960 | HHR | HKA | HHR | Standard | CON | UPSNET | ETECHS | - | - | MS5 | CON |
| HKA-C2020 |  | Cabling and termination (power, fibre, data) - KAEC |  | 33d | 2029-01-09 | 2029-03-04 | HKA-C2010 SS+7d, HKA-C1010 SS+23d | 61d | 0d | Contract cost (BOQ x payment milestones) [314556 SAR]; Progress weight (fair EPC distribution, SAR value) [320540 SAR] | 320,540 | HHR | HKA | HHR | Standard | CON | CCTV | ETECHS | - | - | MS5 | CON |
| HKA-C2040 |  | Install video management, video wall and control-room equipment - KAEC |  | 23d | 2029-01-28 | 2029-03-07 | HKA-C2010 | 84d | 23d | Contract cost (BOQ x payment milestones) [157278 SAR]; Progress weight (fair EPC distribution, SAR value) [159960 SAR] | 159,960 | HHR | HKA | HHR | Standard | CON | VMS | ETECHS | - | - | MS5 | CON |
| HKA-C2050 |  | Install access control and intercom - KAEC |  | 20d | 2029-02-06 | 2029-03-13 | HKA-C2010 FS+7d | 80d | 19d | Contract cost (BOQ x payment milestones) [104852 SAR]; Progress weight (fair EPC distribution, SAR value) [106640 SAR] | 106,640 | HHR | HKA | HHR | Standard | CON | ACC | ETECHS | - | - | MS5 | CON |
| HKA-C2030 |  | Install and aim CCTV cameras - KAEC |  | 26d | 2029-03-05 | 2029-04-09 | HKA-C2020, HKA-C1020 | 61d | 0d | Contract cost (BOQ x payment milestones) [262130 SAR]; Progress weight (fair EPC distribution, SAR value) [267220 SAR] | 267,220 | HHR | HKA | HHR | Standard | CON | CCTV | ETECHS | - | - | MS5 | CON |

| ID | WBS | Activity | Type | Duration | Start | Finish | Predecessors | Total float | Free float | Resources | Cost | Area | Station | Railway | Priority | EPC phase | Discipline | Responsibility | Design stage | Submittal or approval | Payment milestone | Programme phase |
| --- | --- | --- | --- | --- | --- | --- | --- | --- | --- | --- | --- | --- | --- | --- | --- | --- | --- | --- | --- | --- | --- | --- |
|  | HMD | **Madinah (HHR)** |  |  | 2028-06-18 | 2029-04-15 |  |  |  |  |  |  |  |  |  |  |  |  |  |  |  |  |
| HMD-C2100 |  | MS5 Installation complete (20%) - Madinah | milestone | 0d | 2029-04-15 | 2029-04-15 | HMD-C2020, HMD-C2030, HMD-C2040, HMD-C2050, HMD-C1020 | 57d | 0d |  |  | HHR | HMD | HHR | Standard | MS | PM | ETECHS | - | - | MS5 | MS |
|  | ENA | **Enabling works** |  |  | 2028-06-18 | 2028-07-06 |  |  |  |  |  |  |  |  |  |  |  |  |  |  |  |  |
| HMD-X1010 |  | Enabling works: site preparation, setting out, temporary works and utilities clearance - Madinah |  | 5d | 2028-06-18 | 2028-06-22 | HMD-E1210 | 164d | 0d | Contract cost (BOQ x payment milestones) [4005 SAR]; Progress weight (fair EPC distribution, SAR value) [53320 SAR] | 53,320 | HHR | HMD | HHR | Standard | CON | CIVIL | ETECHS | - | - | MS5 | ENA |
| HMD-X1020 |  | Enabling works: cable routes, duct-bank and cabinet plinth preparation - Madinah |  | 10d | 2028-06-25 | 2028-07-06 | HMD-X1010 | 164d | 0d | Contract cost (BOQ x payment milestones) [6008 SAR]; Progress weight (fair EPC distribution, SAR value) [79980 SAR] | 79,980 | HHR | HMD | HHR | Standard | CON | CIVIL | ETECHS | - | - | MS5 | ENA |
|  | CIV | **Civil works** |  |  | 2028-07-09 | 2028-09-17 |  |  |  |  |  |  |  |  |  |  |  |  |  |  |  |  |
| HMD-C1010 |  | Civil: platform trenches and duct banks - Madinah |  | 35d | 2028-07-09 | 2028-08-24 | HMD-X1020 | 164d | 0d | Contract cost (BOQ x payment milestones) [50065 SAR]; Progress weight (fair EPC distribution, SAR value) [347200 SAR] | 347,200 | HHR | HMD | HHR | Standard | CON | CIVIL | ETECHS | - | - | MS5 | CON |
| HMD-C1020 |  | Civil: camera and ALPR pole foundations and poles - Madinah |  | 28d | 2028-08-09 | 2028-09-17 | HMD-C1010 SS+23d | 173d | 116d | Contract cost (BOQ x payment milestones) [40052 SAR]; Progress weight (fair EPC distribution, SAR value) [267220 SAR] | 267,220 | HHR | HMD | HHR | Standard | CON | CIVIL | ETECHS | - | - | MS5 | CON |
|  | INS | **Installation** |  |  | 2028-12-31 | 2029-04-15 |  |  |  |  |  |  |  |  |  |  |  |  |  |  |  |  |
| HMD-C2010 |  | Install UPS, network switches and field cabinets - Madinah |  | 21d | 2028-12-31 | 2029-01-28 | HMD-P1100 | 57d | 0d | Contract cost (BOQ x payment milestones) [202459 SAR]; Progress weight (fair EPC distribution, SAR value) [159960 SAR] | 159,960 | HHR | HMD | HHR | Standard | CON | UPSNET | ETECHS | - | - | MS5 | CON |
| HMD-C2020 |  | Cabling and termination (power, fibre, data) - Madinah |  | 35d | 2029-01-09 | 2029-03-06 | HMD-C2010 SS+7d, HMD-C1010 SS+25d | 57d | 0d | Contract cost (BOQ x payment milestones) [303689 SAR]; Progress weight (fair EPC distribution, SAR value) [320540 SAR] | 320,540 | HHR | HMD | HHR | Standard | CON | CCTV | ETECHS | - | - | MS5 | CON |
| HMD-C2040 |  | Install video management, video wall and control-room equipment - Madinah |  | 25d | 2029-01-29 | 2029-03-12 | HMD-C2010 | 81d | 24d | Contract cost (BOQ x payment milestones) [151845 SAR]; Progress weight (fair EPC distribution, SAR value) [159960 SAR] | 159,960 | HHR | HMD | HHR | Standard | CON | VMS | ETECHS | - | - | MS5 | CON |
| HMD-C2050 |  | Install access control and intercom - Madinah |  | 21d | 2029-02-07 | 2029-03-15 | HMD-C2010 FS+7d | 78d | 21d | Contract cost (BOQ x payment milestones) [101230 SAR]; Progress weight (fair EPC distribution, SAR value) [106640 SAR] | 106,640 | HHR | HMD | HHR | Standard | CON | ACC | ETECHS | - | - | MS5 | CON |
| HMD-C2030 |  | Install and aim CCTV cameras - Madinah |  | 28d | 2029-03-07 | 2029-04-15 | HMD-C2020, HMD-C1020 | 57d | 0d | Contract cost (BOQ x payment milestones) [253074 SAR]; Progress weight (fair EPC distribution, SAR value) [267220 SAR] | 267,220 | HHR | HMD | HHR | Standard | CON | CCTV | ETECHS | - | - | MS5 | CON |
|  | EAB | **Abqaiq (EWR)** |  |  | 2028-06-22 | 2028-12-28 |  |  |  |  |  |  |  |  |  |  |  |  |  |  |  |  |
| EAB-C2100 |  | MS5 Installation complete (20%) - Abqaiq | milestone | 0d | 2028-12-28 | 2028-12-28 | EAB-C2020, EAB-C2030, EAB-C2040, EAB-C2050, EAB-C1020 | 137d | 0d |  |  | EWR | EAB | EWR | Standard | MS | PM | ETECHS | - | - | MS5 | MS |
|  | ENA | **Enabling works** |  |  | 2028-06-22 | 2028-07-12 |  |  |  |  |  |  |  |  |  |  |  |  |  |  |  |  |
| EAB-X1010 |  | Enabling works: site preparation, setting out, temporary works and utilities clearance - Abqaiq |  | 5d | 2028-06-22 | 2028-06-28 | EAB-E1210 | 193d | 0d | Contract cost (BOQ x payment milestones) [4715 SAR]; Progress weight (fair EPC distribution, SAR value) [19220 SAR] | 19,220 | EWR | EAB | EWR | Standard | CON | CIVIL | ETECHS | - | - | MS5 | ENA |
| EAB-X1020 |  | Enabling works: cable routes, duct-bank and cabinet plinth preparation - Abqaiq |  | 10d | 2028-06-29 | 2028-07-12 | EAB-X1010 | 193d | 0d | Contract cost (BOQ x payment milestones) [7073 SAR]; Progress weight (fair EPC distribution, SAR value) [29140 SAR] | 29,140 | EWR | EAB | EWR | Standard | CON | CIVIL | ETECHS | - | - | MS5 | ENA |
|  | CIV | **Civil works** |  |  | 2028-07-13 | 2028-09-27 |  |  |  |  |  |  |  |  |  |  |  |  |  |  |  |  |
| EAB-C1010 |  | Civil: platform trenches and duct banks - Abqaiq |  | 39d | 2028-07-13 | 2028-09-05 | EAB-X1020 | 193d | 0d | Contract cost (BOQ x payment milestones) [58942 SAR]; Progress weight (fair EPC distribution, SAR value) [125240 SAR] | 125,240 | EWR | EAB | EWR | Standard | CON | CIVIL | ETECHS | - | - | MS5 | CON |
| EAB-C1020 |  | Civil: camera and ALPR pole foundations and poles - Abqaiq |  | 30d | 2028-08-17 | 2028-09-27 | EAB-C1010 SS+25d | 193d | 56d | Contract cost (BOQ x payment milestones) [47154 SAR]; Progress weight (fair EPC distribution, SAR value) [96100 SAR] | 96,100 | EWR | EAB | EWR | Standard | CON | CIVIL | ETECHS | - | - | MS5 | CON |
|  | INS | **Installation** |  |  | 2028-11-23 | 2028-12-28 |  |  |  |  |  |  |  |  |  |  |  |  |  |  |  |  |
| EAB-C2010 |  | Install UPS, network switches and field cabinets - Abqaiq |  | 8d | 2028-11-23 | 2028-12-04 | EAB-P1100 | 137d | 0d | Contract cost (BOQ x payment milestones) [56650 SAR]; Progress weight (fair EPC distribution, SAR value) [57660 SAR] | 57,660 | EWR | EAB | EWR | Standard | CON | UPSNET | ETECHS | - | - | MS5 | CON |
| EAB-C2020 |  | Cabling and termination (power, fibre, data) - Abqaiq |  | 13d | 2028-11-28 | 2028-12-14 | EAB-C2010 SS+3d, EAB-C1010 SS+28d | 137d | 0d | Contract cost (BOQ x payment milestones) [84975 SAR]; Progress weight (fair EPC distribution, SAR value) [115320 SAR] | 115,320 | EWR | EAB | EWR | Standard | CON | CCTV | ETECHS | - | - | MS5 | CON |
| EAB-C2040 |  | Install video management, video wall and control-room equipment - Abqaiq |  | 9d | 2028-12-05 | 2028-12-17 | EAB-C2010 | 146d | 9d | Contract cost (BOQ x payment milestones) [42488 SAR]; Progress weight (fair EPC distribution, SAR value) [57660 SAR] | 57,660 | EWR | EAB | EWR | Standard | CON | VMS | ETECHS | - | - | MS5 | CON |
| EAB-C2050 |  | Install access control and intercom - Abqaiq |  | 8d | 2028-12-10 | 2028-12-19 | EAB-C2010 FS+3d | 144d | 7d | Contract cost (BOQ x payment milestones) [28325 SAR]; Progress weight (fair EPC distribution, SAR value) [38440 SAR] | 38,440 | EWR | EAB | EWR | Standard | CON | ACC | ETECHS | - | - | MS5 | CON |
| EAB-C2030 |  | Install and aim CCTV cameras - Abqaiq |  | 10d | 2028-12-17 | 2028-12-28 | EAB-C2020, EAB-C1020 | 137d | 0d | Contract cost (BOQ x payment milestones) [70813 SAR]; Progress weight (fair EPC distribution, SAR value) [96100 SAR] | 96,100 | EWR | EAB | EWR | Standard | CON | CCTV | ETECHS | - | - | MS5 | CON |

| ID | WBS | Activity | Type | Duration | Start | Finish | Predecessors | Total float | Free float | Resources | Cost | Area | Station | Railway | Priority | EPC phase | Discipline | Responsibility | Design stage | Submittal or approval | Payment milestone | Programme phase |
| --- | --- | --- | --- | --- | --- | --- | --- | --- | --- | --- | --- | --- | --- | --- | --- | --- | --- | --- | --- | --- | --- | --- |
|  | NHL | **Hail (NSR)** |  |  | 2028-07-18 | 2029-02-06 |  |  |  |  |  |  |  |  |  |  |  |  |  |  |  |  |
| NHL-C2100 |  | MS5 Installation complete (20%) - Hail | milestone | 0d | 2029-02-06 | 2029-02-06 | NHL-C2020, NHL-C2030, NHL-C2040, NHL-C2050, NHL-C1020 | 109d | 0d |  |  | NSR | NHL | NSR | Standard | MS | PM | ETECHS | - | - | MS5 | MS |
|  | ENA | **Enabling works** |  |  | 2028-07-18 | 2028-08-07 |  |  |  |  |  |  |  |  |  |  |  |  |  |  |  |  |
| NHL-X1010 |  | Enabling works: site preparation, setting out, temporary works and utilities clearance - Hail |  | 5d | 2028-07-18 | 2028-07-24 | NHL-E1210 | 141d | 0d | Contract cost (BOQ x payment milestones) [8432 SAR]; Progress weight (fair EPC distribution, SAR value) [32860 SAR] | 32,860 | NSR | NHL | NSR | Standard | CON | CIVIL | ETECHS | - | - | MS5 | ENA |
| NHL-X1020 |  | Enabling works: cable routes, duct-bank and cabinet plinth preparation - Hail |  | 10d | 2028-07-25 | 2028-08-07 | NHL-X1010 | 141d | 0d | Contract cost (BOQ x payment milestones) [12648 SAR]; Progress weight (fair EPC distribution, SAR value) [48980 SAR] | 48,980 | NSR | NHL | NSR | Standard | CON | CIVIL | ETECHS | - | - | MS5 | ENA |
|  | CIV | **Civil works** |  |  | 2028-08-08 | 2028-12-04 |  |  |  |  |  |  |  |  |  |  |  |  |  |  |  |  |
| NHL-C1010 |  | Civil: platform trenches and duct banks - Hail |  | 59d | 2028-08-08 | 2028-10-29 | NHL-X1020 | 141d | 0d | Contract cost (BOQ x payment milestones) [105400 SAR]; Progress weight (fair EPC distribution, SAR value) [212040 SAR] | 212,040 | NSR | NHL | NSR | Standard | CON | CIVIL | ETECHS | - | - | MS5 | CON |
| NHL-C1020 |  | Civil: camera and ALPR pole foundations and poles - Hail |  | 47d | 2028-10-01 | 2028-12-04 | NHL-C1010 SS+38d | 141d | 32d | Contract cost (BOQ x payment milestones) [84320 SAR]; Progress weight (fair EPC distribution, SAR value) [163060 SAR] | 163,060 | NSR | NHL | NSR | Standard | CON | CIVIL | ETECHS | - | - | MS5 | CON |
|  | INS | **Installation** |  |  | 2028-12-19 | 2029-02-06 |  |  |  |  |  |  |  |  |  |  |  |  |  |  |  |  |
| NHL-C2010 |  | Install UPS, network switches and field cabinets - Hail |  | 11d | 2028-12-19 | 2029-01-02 | NHL-P1100 | 109d | 0d | Contract cost (BOQ x payment milestones) [93797 SAR]; Progress weight (fair EPC distribution, SAR value) [97960 SAR] | 97,960 | NSR | NHL | NSR | Standard | CON | UPSNET | ETECHS | - | - | MS5 | CON |
| NHL-C2020 |  | Cabling and termination (power, fibre, data) - Hail |  | 18d | 2028-12-25 | 2029-01-17 | NHL-C2010 SS+4d, NHL-C1010 SS+43d | 109d | 0d | Contract cost (BOQ x payment milestones) [140695 SAR]; Progress weight (fair EPC distribution, SAR value) [195920 SAR] | 195,920 | NSR | NHL | NSR | Standard | CON | CCTV | ETECHS | - | - | MS5 | CON |
| NHL-C2040 |  | Install video management, video wall and control-room equipment - Hail |  | 12d | 2029-01-03 | 2029-01-18 | NHL-C2010 | 122d | 13d | Contract cost (BOQ x payment milestones) [70348 SAR]; Progress weight (fair EPC distribution, SAR value) [97960 SAR] | 97,960 | NSR | NHL | NSR | Standard | CON | VMS | ETECHS | - | - | MS5 | CON |
| NHL-C2050 |  | Install access control and intercom - Hail |  | 11d | 2029-01-09 | 2029-01-23 | NHL-C2010 FS+4d | 119d | 10d | Contract cost (BOQ x payment milestones) [46898 SAR]; Progress weight (fair EPC distribution, SAR value) [65100 SAR] | 65,100 | NSR | NHL | NSR | Standard | CON | ACC | ETECHS | - | - | MS5 | CON |
| NHL-C2030 |  | Install and aim CCTV cameras - Hail |  | 14d | 2029-01-18 | 2029-02-06 | NHL-C2020, NHL-C1020 | 109d | 0d | Contract cost (BOQ x payment milestones) [117246 SAR]; Progress weight (fair EPC distribution, SAR value) [163060 SAR] | 163,060 | NSR | NHL | NSR | Standard | CON | CCTV | ETECHS | - | - | MS5 | CON |
|  | NJF | **Al Jouf (NSR)** |  |  | 2028-09-28 | 2029-05-06 |  |  |  |  |  |  |  |  |  |  |  |  |  |  |  |  |
| NJF-C2100 |  | MS5 Installation complete (20%) - Al Jouf | milestone | 0d | 2029-05-06 | 2029-05-06 | NJF-C2020, NJF-C2030, NJF-C2040, NJF-C2050, NJF-C1020 | 57d | 0d |  |  | NSR | NJF | NSR | Standard | MS | PM | ETECHS | - | - | MS5 | MS |
|  | ENA | **Enabling works** |  |  | 2028-09-28 | 2028-10-18 |  |  |  |  |  |  |  |  |  |  |  |  |  |  |  |  |
| NJF-X1010 |  | Enabling works: site preparation, setting out, temporary works and utilities clearance - Al Jouf |  | 5d | 2028-09-28 | 2028-10-04 | NJF-E1210 | 89d | 0d | Contract cost (BOQ x payment milestones) [8432 SAR]; Progress weight (fair EPC distribution, SAR value) [32860 SAR] | 32,860 | NSR | NJF | NSR | Standard | CON | CIVIL | ETECHS | - | - | MS5 | ENA |
| NJF-X1020 |  | Enabling works: cable routes, duct-bank and cabinet plinth preparation - Al Jouf |  | 10d | 2028-10-05 | 2028-10-18 | NJF-X1010 | 89d | 0d | Contract cost (BOQ x payment milestones) [12648 SAR]; Progress weight (fair EPC distribution, SAR value) [48980 SAR] | 48,980 | NSR | NJF | NSR | Standard | CON | CIVIL | ETECHS | - | - | MS5 | ENA |
|  | CIV | **Civil works** |  |  | 2028-10-19 | 2029-02-21 |  |  |  |  |  |  |  |  |  |  |  |  |  |  |  |  |
| NJF-C1010 |  | Civil: platform trenches and duct banks - Al Jouf |  | 59d | 2028-10-19 | 2029-01-09 | NJF-X1020 | 89d | 0d | Contract cost (BOQ x payment milestones) [105400 SAR]; Progress weight (fair EPC distribution, SAR value) [213280 SAR] | 213,280 | NSR | NJF | NSR | Standard | CON | CIVIL | ETECHS | - | - | MS5 | CON |
| NJF-C1020 |  | Civil: camera and ALPR pole foundations and poles - Al Jouf |  | 47d | 2028-12-12 | 2029-02-21 | NJF-C1010 SS+38d | 89d | 32d | Contract cost (BOQ x payment milestones) [84320 SAR]; Progress weight (fair EPC distribution, SAR value) [164300 SAR] | 164,300 | NSR | NJF | NSR | Standard | CON | CIVIL | ETECHS | - | - | MS5 | CON |
|  | INS | **Installation** |  |  | 2029-03-11 | 2029-05-06 |  |  |  |  |  |  |  |  |  |  |  |  |  |  |  |  |
| NJF-C2010 |  | Install UPS, network switches and field cabinets - Al Jouf |  | 11d | 2029-03-11 | 2029-03-25 | NJF-P1100 | 57d | 0d | Contract cost (BOQ x payment milestones) [94754 SAR]; Progress weight (fair EPC distribution, SAR value) [98580 SAR] | 98,580 | NSR | NJF | NSR | Standard | CON | UPSNET | ETECHS | - | - | MS5 | CON |
| NJF-C2020 |  | Cabling and termination (power, fibre, data) - Al Jouf |  | 18d | 2029-03-15 | 2029-04-09 | NJF-C2010 SS+4d, NJF-C1010 SS+43d | 57d | 0d | Contract cost (BOQ x payment milestones) [142131 SAR]; Progress weight (fair EPC distribution, SAR value) [197160 SAR] | 197,160 | NSR | NJF | NSR | Standard | CON | CCTV | ETECHS | - | - | MS5 | CON |
| NJF-C2040 |  | Install video management, video wall and control-room equipment - Al Jouf |  | 12d | 2029-03-26 | 2029-04-10 | NJF-C2010 | 70d | 13d | Contract cost (BOQ x payment milestones) [71065 SAR]; Progress weight (fair EPC distribution, SAR value) [98580 SAR] | 98,580 | NSR | NJF | NSR | Standard | CON | VMS | ETECHS | - | - | MS5 | CON |
| NJF-C2050 |  | Install access control and intercom - Al Jouf |  | 11d | 2029-04-01 | 2029-04-15 | NJF-C2010 FS+4d | 67d | 10d | Contract cost (BOQ x payment milestones) [47377 SAR]; Progress weight (fair EPC distribution, SAR value) [65720 SAR] | 65,720 | NSR | NJF | NSR | Standard | CON | ACC | ETECHS | - | - | MS5 | CON |
| NJF-C2030 |  | Install and aim CCTV cameras - Al Jouf |  | 14d | 2029-04-10 | 2029-05-06 | NJF-C2020, NJF-C1020 | 57d | 0d | Contract cost (BOQ x payment milestones) [118442 SAR]; Progress weight (fair EPC distribution, SAR value) [164300 SAR] | 164,300 | NSR | NJF | NSR | Standard | CON | CCTV | ETECHS | - | - | MS5 | CON |

| ID | WBS | Activity | Type | Duration | Start | Finish | Predecessors | Total float | Free float | Resources | Cost | Area | Station | Railway | Priority | EPC phase | Discipline | Responsibility | Design stage | Submittal or approval | Payment milestone | Programme phase |
| --- | --- | --- | --- | --- | --- | --- | --- | --- | --- | --- | --- | --- | --- | --- | --- | --- | --- | --- | --- | --- | --- | --- |
|  | NQR | **Al Qurayyat (NSR)** |  |  | 2028-11-16 | 2029-06-24 |  |  |  |  |  |  |  |  |  |  |  |  |  |  |  |  |
| NQR-C2100 |  | MS5 Installation complete (20%) - Al Qurayyat | milestone | 0d | 2029-06-24 | 2029-06-24 | NQR-C2020, NQR-C2030, NQR-C2040, NQR-C2050, NQR-C1020 | 22d | 0d |  |  | NSR | NQR | NSR | Standard | MS | PM | ETECHS | - | - | MS5 | MS |
|  | ENA | **Enabling works** |  |  | 2028-11-16 | 2028-12-06 |  |  |  |  |  |  |  |  |  |  |  |  |  |  |  |  |
| NQR-X1010 |  | Enabling works: site preparation, setting out, temporary works and utilities clearance - Al Qurayyat |  | 5d | 2028-11-16 | 2028-11-22 | NQR-E1210 | 54d | 0d | Contract cost (BOQ x payment milestones) [8432 SAR]; Progress weight (fair EPC distribution, SAR value) [32860 SAR] | 32,860 | NSR | NQR | NSR | Standard | CON | CIVIL | ETECHS | - | - | MS5 | ENA |
| NQR-X1020 |  | Enabling works: cable routes, duct-bank and cabinet plinth preparation - Al Qurayyat |  | 10d | 2028-11-23 | 2028-12-06 | NQR-X1010 | 54d | 0d | Contract cost (BOQ x payment milestones) [12648 SAR]; Progress weight (fair EPC distribution, SAR value) [48980 SAR] | 48,980 | NSR | NQR | NSR | Standard | CON | CIVIL | ETECHS | - | - | MS5 | ENA |
|  | CIV | **Civil works** |  |  | 2028-12-07 | 2029-04-12 |  |  |  |  |  |  |  |  |  |  |  |  |  |  |  |  |
| NQR-C1010 |  | Civil: platform trenches and duct banks - Al Qurayyat |  | 59d | 2028-12-07 | 2029-03-07 | NQR-X1020 | 54d | 0d | Contract cost (BOQ x payment milestones) [105400 SAR]; Progress weight (fair EPC distribution, SAR value) [212040 SAR] | 212,040 | NSR | NQR | NSR | Standard | CON | CIVIL | ETECHS | - | - | MS5 | CON |
| NQR-C1020 |  | Civil: camera and ALPR pole foundations and poles - Al Qurayyat |  | 47d | 2029-01-30 | 2029-04-12 | NQR-C1010 SS+38d | 54d | 32d | Contract cost (BOQ x payment milestones) [84320 SAR]; Progress weight (fair EPC distribution, SAR value) [163060 SAR] | 163,060 | NSR | NQR | NSR | Standard | CON | CIVIL | ETECHS | - | - | MS5 | CON |
|  | INS | **Installation** |  |  | 2029-05-06 | 2029-06-24 |  |  |  |  |  |  |  |  |  |  |  |  |  |  |  |  |
| NQR-C2010 |  | Install UPS, network switches and field cabinets - Al Qurayyat |  | 11d | 2029-05-06 | 2029-05-20 | NQR-P1100 | 22d | 0d | Contract cost (BOQ x payment milestones) [93797 SAR]; Progress weight (fair EPC distribution, SAR value) [97960 SAR] | 97,960 | NSR | NQR | NSR | Standard | CON | UPSNET | ETECHS | - | - | MS5 | CON |
| NQR-C2020 |  | Cabling and termination (power, fibre, data) - Al Qurayyat |  | 18d | 2029-05-10 | 2029-06-04 | NQR-C2010 SS+4d, NQR-C1010 SS+43d | 22d | 0d | Contract cost (BOQ x payment milestones) [140695 SAR]; Progress weight (fair EPC distribution, SAR value) [195920 SAR] | 195,920 | NSR | NQR | NSR | Standard | CON | CCTV | ETECHS | - | - | MS5 | CON |
| NQR-C2040 |  | Install video management, video wall and control-room equipment - Al Qurayyat |  | 12d | 2029-05-21 | 2029-06-05 | NQR-C2010 | 35d | 13d | Contract cost (BOQ x payment milestones) [70348 SAR]; Progress weight (fair EPC distribution, SAR value) [97960 SAR] | 97,960 | NSR | NQR | NSR | Standard | CON | VMS | ETECHS | - | - | MS5 | CON |
| NQR-C2050 |  | Install access control and intercom - Al Qurayyat |  | 11d | 2029-05-27 | 2029-06-10 | NQR-C2010 FS+4d | 32d | 10d | Contract cost (BOQ x payment milestones) [46898 SAR]; Progress weight (fair EPC distribution, SAR value) [65100 SAR] | 65,100 | NSR | NQR | NSR | Standard | CON | ACC | ETECHS | - | - | MS5 | CON |
| NQR-C2030 |  | Install and aim CCTV cameras - Al Qurayyat |  | 14d | 2029-06-05 | 2029-06-24 | NQR-C2020, NQR-C1020 | 22d | 0d | Contract cost (BOQ x payment milestones) [117246 SAR]; Progress weight (fair EPC distribution, SAR value) [163060 SAR] | 163,060 | NSR | NQR | NSR | Standard | CON | CCTV | ETECHS | - | - | MS5 | CON |
|  | COM | **Commissioning and Handover** |  |  | 2027-09-20 | 2029-09-16 |  |  |  |  |  |  |  |  |  |  |  |  |  |  |  |  |
|  | NRY | **Riyadh (Thumamah) (NSR)** |  |  | 2027-11-16 | 2028-02-07 |  |  |  |  |  |  |  |  |  |  |  |  |  |  |  |  |
| NRY-T1100 |  | MS6 SAT complete (10%) - Riyadh (Thumamah) | milestone | 0d | 2027-12-06 | 2027-12-06 | NRY-T1020 | 450d | 30d |  |  | NSR | NRY | NSR | Priority 1 | MS | TC | SAR | - | - | MS6 | MS |
| NRY-T3100 |  | MS7 Station accepted - final acceptance and handover (10%) - Riyadh (Thumamah) | milestone | 0d | 2028-02-07 | 2028-02-07 | NRY-T3010 | 420d | 398d |  |  | NSR | NRY | NSR | Priority 1 | MS | TC | SAR | - | - | MS7 | MS |
|  | TST | **Testing and commissioning** |  |  | 2027-11-16 | 2027-12-06 |  |  |  |  |  |  |  |  |  |  |  |  |  |  |  |  |
| NRY-T1010 |  | Pre-commissioning and loop checks - Riyadh (Thumamah) |  | 6d | 2027-11-16 | 2027-11-23 | NRY-C2100 | 420d | 0d | Contract cost (BOQ x payment milestones) [139231 SAR]; Progress weight (fair EPC distribution, SAR value) [100440 SAR] | 100,440 | NSR | NRY | NSR | Priority 1 | COM | TC | ETECHS | - | - | MS6 | COM |
| NRY-T1020 |  | Site acceptance test (SAT) and commissioning - Riyadh (Thumamah) |  | 9d | 2027-11-24 | 2027-12-06 | NRY-T1010 | 420d | 0d | Contract cost (BOQ x payment milestones) [208847 SAR]; Progress weight (fair EPC distribution, SAR value) [133920 SAR] | 133,920 | NSR | NRY | NSR | Priority 1 | COM | TC | ETECHS | - | - | MS6 | COM |
|  | TRN | **Training** |  |  | 2027-12-07 | 2027-12-20 |  |  |  |  |  |  |  |  |  |  |  |  |  |  |  |  |
| NRY-T2010 |  | Operator and maintenance training - Riyadh (Thumamah) |  | 10d | 2027-12-07 | 2027-12-20 | NRY-T1020 | 440d | 20d | Contract cost (BOQ x payment milestones) [52212 SAR]; Progress weight (fair EPC distribution, SAR value) [66960 SAR] | 66,960 | NSR | NRY | NSR | Priority 1 | COM | TC | ETECHS | - | - | MS7 | COM |
|  | TOA | **Trial operation and acceptance** |  |  | 2027-12-07 | 2028-02-07 |  |  |  |  |  |  |  |  |  |  |  |  |  |  |  |  |
| NRY-T2020 |  | Trial operation (maximum 45 days) - Riyadh (Thumamah) |  | 30d | 2027-12-07 | 2028-01-17 | NRY-T1020 | 420d | 0d | Contract cost (BOQ x payment milestones) [121828 SAR]; Progress weight (fair EPC distribution, SAR value) [100440 SAR] | 100,440 | NSR | NRY | NSR | Priority 1 | COM | TC | SAR | - | - | MS7 | COM |
| NRY-T3010 |  | Taking-over application, SAR review and handover - Riyadh (Thumamah) |  | 15d | 2028-01-18 | 2028-02-07 | NRY-T1100, NRY-T2010, NRY-T2020, NRY-E1140 | 420d | 0d | Contract cost (BOQ x payment milestones) [104424 SAR]; Progress weight (fair EPC distribution, SAR value) [100440 SAR] | 100,440 | NSR | NRY | NSR | Priority 1 | COM | TC | SAR | - | - | MS7 | COM |

| ID | WBS | Activity | Type | Duration | Start | Finish | Predecessors | Total float | Free float | Resources | Cost | Area | Station | Railway | Priority | EPC phase | Discipline | Responsibility | Design stage | Submittal or approval | Payment milestone | Programme phase |
| --- | --- | --- | --- | --- | --- | --- | --- | --- | --- | --- | --- | --- | --- | --- | --- | --- | --- | --- | --- | --- | --- | --- |
|  | HMK | **Makkah (HHR)** |  |  | 2028-04-25 | 2028-08-07 |  |  |  |  |  |  |  |  |  |  |  |  |  |  |  |  |
| HMK-T1100 |  | MS6 SAT complete (10%) - Makkah | milestone | 0d | 2028-06-05 | 2028-06-05 | HMK-T1020 | 330d | 30d |  |  | HHR | HMK | HHR | Priority 1 | MS | TC | SAR | - | - | MS6 | MS |
| HMK-T3100 |  | MS7 Station accepted - final acceptance and handover (10%) - Makkah | milestone | 0d | 2028-08-07 | 2028-08-07 | HMK-T3010 | 300d | 278d |  |  | HHR | HMK | HHR | Priority 1 | MS | TC | SAR | - | - | MS7 | MS |
|  | TST | **Testing and commissioning** |  |  | 2028-04-25 | 2028-06-05 |  |  |  |  |  |  |  |  |  |  |  |  |  |  |  |  |
| HMK-T1010 |  | Pre-commissioning and loop checks - Makkah |  | 10d | 2028-04-25 | 2028-05-15 | HMK-C2100 | 300d | 0d | Contract cost (BOQ x payment milestones) [388404 SAR]; Progress weight (fair EPC distribution, SAR value) [279620 SAR] | 279,620 | HHR | HMK | HHR | Priority 1 | COM | TC | ETECHS | - | - | MS6 | COM |
| HMK-T1020 |  | Site acceptance test (SAT) and commissioning - Makkah |  | 15d | 2028-05-16 | 2028-06-05 | HMK-T1010 | 300d | 0d | Contract cost (BOQ x payment milestones) [582606 SAR]; Progress weight (fair EPC distribution, SAR value) [372620 SAR] | 372,620 | HHR | HMK | HHR | Priority 1 | COM | TC | ETECHS | - | - | MS6 | COM |
|  | TRN | **Training** |  |  | 2028-06-06 | 2028-06-19 |  |  |  |  |  |  |  |  |  |  |  |  |  |  |  |  |
| HMK-T2010 |  | Operator and maintenance training - Makkah |  | 10d | 2028-06-06 | 2028-06-19 | HMK-T1020 | 320d | 20d | Contract cost (BOQ x payment milestones) [145651 SAR]; Progress weight (fair EPC distribution, SAR value) [186620 SAR] | 186,620 | HHR | HMK | HHR | Priority 1 | COM | TC | ETECHS | - | - | MS7 | COM |
|  | TOA | **Trial operation and acceptance** |  |  | 2028-06-06 | 2028-08-07 |  |  |  |  |  |  |  |  |  |  |  |  |  |  |  |  |
| HMK-T2020 |  | Trial operation (maximum 45 days) - Makkah |  | 30d | 2028-06-06 | 2028-07-17 | HMK-T1020 | 300d | 0d | Contract cost (BOQ x payment milestones) [339853 SAR]; Progress weight (fair EPC distribution, SAR value) [279620 SAR] | 279,620 | HHR | HMK | HHR | Priority 1 | COM | TC | SAR | - | - | MS7 | COM |
| HMK-T3010 |  | Taking-over application, SAR review and handover - Makkah |  | 15d | 2028-07-18 | 2028-08-07 | HMK-T1100, HMK-T2010, HMK-T2020, HMK-E1140 | 300d | 0d | Contract cost (BOQ x payment milestones) [291303 SAR]; Progress weight (fair EPC distribution, SAR value) [279620 SAR] | 279,620 | HHR | HMK | HHR | Priority 1 | COM | TC | SAR | - | - | MS7 | COM |
|  | ERY | **Riyadh (Malaz) (EWR)** |  |  | 2027-09-20 | 2027-12-13 |  |  |  |  |  |  |  |  |  |  |  |  |  |  |  |  |
| ERY-T1100 |  | MS6 SAT complete (10%) - Riyadh (Malaz) | milestone | 0d | 2027-10-11 | 2027-10-11 | ERY-T1020 | 490d | 30d |  |  | EWR | ERY | EWR | Priority 2 | MS | TC | SAR | - | - | MS6 | MS |
| ERY-T3100 |  | MS7 Station accepted - final acceptance and handover (10%) - Riyadh (Malaz) | milestone | 0d | 2027-12-13 | 2027-12-13 | ERY-T3010 | 460d | 438d |  |  | EWR | ERY | EWR | Priority 2 | MS | TC | SAR | - | - | MS7 | MS |
|  | TST | **Testing and commissioning** |  |  | 2027-09-20 | 2027-10-11 |  |  |  |  |  |  |  |  |  |  |  |  |  |  |  |  |
| ERY-T1010 |  | Pre-commissioning and loop checks - Riyadh (Malaz) |  | 6d | 2027-09-20 | 2027-09-28 | ERY-C2100 | 460d | 0d | Contract cost (BOQ x payment milestones) [123661 SAR]; Progress weight (fair EPC distribution, SAR value) [89280 SAR] | 89,280 | EWR | ERY | EWR | Priority 2 | COM | TC | ETECHS | - | - | MS6 | COM |
| ERY-T1020 |  | Site acceptance test (SAT) and commissioning - Riyadh (Malaz) |  | 9d | 2027-09-29 | 2027-10-11 | ERY-T1010 | 460d | 0d | Contract cost (BOQ x payment milestones) [185491 SAR]; Progress weight (fair EPC distribution, SAR value) [118420 SAR] | 118,420 | EWR | ERY | EWR | Priority 2 | COM | TC | ETECHS | - | - | MS6 | COM |
|  | TRN | **Training** |  |  | 2027-10-12 | 2027-10-25 |  |  |  |  |  |  |  |  |  |  |  |  |  |  |  |  |
| ERY-T2010 |  | Operator and maintenance training - Riyadh (Malaz) |  | 10d | 2027-10-12 | 2027-10-25 | ERY-T1020 | 480d | 20d | Contract cost (BOQ x payment milestones) [46373 SAR]; Progress weight (fair EPC distribution, SAR value) [59520 SAR] | 59,520 | EWR | ERY | EWR | Priority 2 | COM | TC | ETECHS | - | - | MS7 | COM |
|  | TOA | **Trial operation and acceptance** |  |  | 2027-10-12 | 2027-12-13 |  |  |  |  |  |  |  |  |  |  |  |  |  |  |  |  |
| ERY-T2020 |  | Trial operation (maximum 45 days) - Riyadh (Malaz) |  | 30d | 2027-10-12 | 2027-11-22 | ERY-T1020 | 460d | 0d | Contract cost (BOQ x payment milestones) [108203 SAR]; Progress weight (fair EPC distribution, SAR value) [89280 SAR] | 89,280 | EWR | ERY | EWR | Priority 2 | COM | TC | SAR | - | - | MS7 | COM |
| ERY-T3010 |  | Taking-over application, SAR review and handover - Riyadh (Malaz) |  | 15d | 2027-11-23 | 2027-12-13 | ERY-T1100, ERY-T2010, ERY-T2020, ERY-E1140 | 460d | 0d | Contract cost (BOQ x payment milestones) [92746 SAR]; Progress weight (fair EPC distribution, SAR value) [89280 SAR] | 89,280 | EWR | ERY | EWR | Priority 2 | COM | TC | SAR | - | - | MS7 | COM |
|  | HJD | **Jeddah (HHR)** |  |  | 2028-06-15 | 2028-09-20 |  |  |  |  |  |  |  |  |  |  |  |  |  |  |  |  |
| HJD-T1100 |  | MS6 SAT complete (10%) - Jeddah | milestone | 0d | 2028-07-19 | 2028-07-19 | HJD-T1020 | 298d | 30d |  |  | HHR | HJD | HHR | Standard | MS | TC | SAR | - | - | MS6 | MS |
| HJD-T3100 |  | MS7 Station accepted - final acceptance and handover (10%) - Jeddah | milestone | 0d | 2028-09-20 | 2028-09-20 | HJD-T3010 | 268d | 246d |  |  | HHR | HJD | HHR | Standard | MS | TC | SAR | - | - | MS7 | MS |

| ID | WBS | Activity | Type | Duration | Start | Finish | Predecessors | Total float | Free float | Resources | Cost | Area | Station | Railway | Priority | Discipline | Responsibility | EPC phase | Design stage | Submittal or approval | Programme phase | Payment milestone |
| --- | --- | --- | --- | --- | --- | --- | --- | --- | --- | --- | --- | --- | --- | --- | --- | --- | --- | --- | --- | --- | --- | --- |
|  | TST | **Testing and commissioning** |  |  | 2028-06-15 | 2028-07-19 |  |  |  |  |  |  |  |  |  |  |  |  |  |  |  |  |
| HJD-T1010 |  | Pre-commissioning and loop checks - Jeddah |  | 10d | 2028-06-15 | 2028-06-28 | HJD-C2100 | 268d | 0d | Contract cost (BOQ x payment milestones) [382035 SAR]; Progress weight (fair EPC distribution, SAR value) [275280 SAR] | 275,280 | HHR | HJD | HHR | Standard | TC | ETECHS | COM | - | - | COM | MS6 |
| HJD-T1020 |  | Site acceptance test (SAT) and commissioning - Jeddah |  | 15d | 2028-06-29 | 2028-07-19 | HJD-T1010 | 268d | 0d | Contract cost (BOQ x payment milestones) [573053 SAR]; Progress weight (fair EPC distribution, SAR value) [367040 SAR] | 367,040 | HHR | HJD | HHR | Standard | TC | ETECHS | COM | - | - | COM | MS6 |
|  | TRN | **Training** |  |  | 2028-07-20 | 2028-08-02 |  |  |  |  |  |  |  |  |  |  |  |  |  |  |  |  |
| HJD-T2010 |  | Operator and maintenance training - Jeddah |  | 10d | 2028-07-20 | 2028-08-02 | HJD-T1020 | 288d | 20d | Contract cost (BOQ x payment milestones) [143263 SAR]; Progress weight (fair EPC distribution, SAR value) [183520 SAR] | 183,520 | HHR | HJD | HHR | Standard | TC | ETECHS | COM | - | - | COM | MS7 |
|  | TOA | **Trial operation and acceptance** |  |  | 2028-07-20 | 2028-09-20 |  |  |  |  |  |  |  |  |  |  |  |  |  |  |  |  |
| HJD-T2020 |  | Trial operation (maximum 45 days) - Jeddah |  | 30d | 2028-07-20 | 2028-08-30 | HJD-T1020 | 268d | 0d | Contract cost (BOQ x payment milestones) [334281 SAR]; Progress weight (fair EPC distribution, SAR value) [275280 SAR] | 275,280 | HHR | HJD | HHR | Standard | TC | SAR | COM | - | - | COM | MS7 |
| HJD-T3010 |  | Taking-over application, SAR review and handover - Jeddah |  | 15d | 2028-08-31 | 2028-09-20 | HJD-T1100, HJD-T2010, HJD-T2020, HJD-E1140 | 268d | 0d | Contract cost (BOQ x payment milestones) [286526 SAR]; Progress weight (fair EPC distribution, SAR value) [275280 SAR] | 275,280 | HHR | HJD | HHR | Standard | TC | SAR | COM | - | - | COM | MS7 |
|  | EDM | **Dammam (EWR)** |  |  | 2028-03-30 | 2028-06-28 |  |  |  |  |  |  |  |  |  |  |  |  |  |  |  |  |
| EDM-T1100 |  | MS6 SAT complete (10%) - Dammam | milestone | 0d | 2028-04-19 | 2028-04-19 | EDM-T1020 | 358d | 30d |  |  | EWR | EDM | EWR | Standard | TC | SAR | MS | - | - | MS | MS6 |
| EDM-T3100 |  | MS7 Station accepted - final acceptance and handover (10%) - Dammam | milestone | 0d | 2028-06-28 | 2028-06-28 | EDM-T3010 | 328d | 306d |  |  | EWR | EDM | EWR | Standard | TC | SAR | MS | - | - | MS | MS7 |
|  | TST | **Testing and commissioning** |  |  | 2028-03-30 | 2028-04-19 |  |  |  |  |  |  |  |  |  |  |  |  |  |  |  |  |
| EDM-T1010 |  | Pre-commissioning and loop checks - Dammam |  | 6d | 2028-03-30 | 2028-04-06 | EDM-C2100 | 328d | 0d | Contract cost (BOQ x payment milestones) [127500 SAR]; Progress weight (fair EPC distribution, SAR value) [91760 SAR] | 91,760 | EWR | EDM | EWR | Standard | TC | ETECHS | COM | - | - | COM | MS6 |
| EDM-T1020 |  | Site acceptance test (SAT) and commissioning - Dammam |  | 9d | 2028-04-09 | 2028-04-19 | EDM-T1010 | 328d | 0d | Contract cost (BOQ x payment milestones) [191251 SAR]; Progress weight (fair EPC distribution, SAR value) [122140 SAR] | 122,140 | EWR | EDM | EWR | Standard | TC | ETECHS | COM | - | - | COM | MS6 |
|  | TRN | **Training** |  |  | 2028-04-20 | 2028-05-10 |  |  |  |  |  |  |  |  |  |  |  |  |  |  |  |  |
| EDM-T2010 |  | Operator and maintenance training - Dammam |  | 10d | 2028-04-20 | 2028-05-10 | EDM-T1020 | 348d | 20d | Contract cost (BOQ x payment milestones) [47813 SAR]; Progress weight (fair EPC distribution, SAR value) [61380 SAR] | 61,380 | EWR | EDM | EWR | Standard | TC | ETECHS | COM | - | - | COM | MS7 |
|  | TOA | **Trial operation and acceptance** |  |  | 2028-04-20 | 2028-06-28 |  |  |  |  |  |  |  |  |  |  |  |  |  |  |  |  |
| EDM-T2020 |  | Trial operation (maximum 45 days) - Dammam |  | 30d | 2028-04-20 | 2028-06-07 | EDM-T1020 | 328d | 0d | Contract cost (BOQ x payment milestones) [111563 SAR]; Progress weight (fair EPC distribution, SAR value) [91760 SAR] | 91,760 | EWR | EDM | EWR | Standard | TC | SAR | COM | - | - | COM | MS7 |
| EDM-T3010 |  | Taking-over application, SAR review and handover - Dammam |  | 15d | 2028-06-08 | 2028-06-28 | EDM-T1100, EDM-T2010, EDM-T2020, EDM-E1140 | 328d | 0d | Contract cost (BOQ x payment milestones) [95625 SAR]; Progress weight (fair EPC distribution, SAR value) [91760 SAR] | 91,760 | EWR | EDM | EWR | Standard | TC | SAR | COM | - | - | COM | MS7 |
|  | NQS | **Al Qassim (NSR)** |  |  | 2028-06-08 | 2028-08-30 |  |  |  |  |  |  |  |  |  |  |  |  |  |  |  |  |
| NQS-T1100 |  | MS6 SAT complete (10%) - Al Qassim | milestone | 0d | 2028-06-28 | 2028-06-28 | NQS-T1020 | 313d | 30d |  |  | NSR | NQS | NSR | Standard | TC | SAR | MS | - | - | MS | MS6 |
| NQS-T3100 |  | MS7 Station accepted - final acceptance and handover (10%) - Al Qassim | milestone | 0d | 2028-08-30 | 2028-08-30 | NQS-T3010 | 283d | 261d |  |  | NSR | NQS | NSR | Standard | TC | SAR | MS | - | - | MS | MS7 |
|  | TST | **Testing and commissioning** |  |  | 2028-06-08 | 2028-06-28 |  |  |  |  |  |  |  |  |  |  |  |  |  |  |  |  |
| NQS-T1010 |  | Pre-commissioning and loop checks - Al Qassim |  | 6d | 2028-06-08 | 2028-06-15 | NQS-C2100 | 283d | 0d | Contract cost (BOQ x payment milestones) [135957 SAR]; Progress weight (fair EPC distribution, SAR value) [97960 SAR] | 97,960 | NSR | NQS | NSR | Standard | TC | ETECHS | COM | - | - | COM | MS6 |
| NQS-T1020 |  | Site acceptance test (SAT) and commissioning - Al Qassim |  | 9d | 2028-06-18 | 2028-06-28 | NQS-T1010 | 283d | 0d | Contract cost (BOQ x payment milestones) [203935 SAR]; Progress weight (fair EPC distribution, SAR value) [130820 SAR] | 130,820 | NSR | NQS | NSR | Standard | TC | ETECHS | COM | - | - | COM | MS6 |

| ID | WBS | Activity | Type | Duration | Start | Finish | Predecessors | Total float | Free float | Resources | Cost | Area | Station | Railway | Priority | Discipline | Responsibility | EPC phase | Design stage | Submittal or approval | Programme phase | Payment milestone |
| --- | --- | --- | --- | --- | --- | --- | --- | --- | --- | --- | --- | --- | --- | --- | --- | --- | --- | --- | --- | --- | --- | --- |
|  | TRN | **Training** |  |  | 2028-06-29 | 2028-07-12 |  |  |  |  |  |  |  |  |  |  |  |  |  |  |  |  |
| NQS-T2010 |  | Operator and maintenance training - Al Qassim |  | 10d | 2028-06-29 | 2028-07-12 | NQS-T1020 | 303d | 20d | Contract cost (BOQ x payment milestones) [50984 SAR]; Progress weight (fair EPC distribution, SAR value) [65100 SAR] | 65,100 | NSR | NQS | NSR | Standard | TC | ETECHS | COM | - | - | COM | MS7 |
|  | TOA | **Trial operation and acceptance** |  |  | 2028-06-29 | 2028-08-30 |  |  |  |  |  |  |  |  |  |  |  |  |  |  |  |  |
| NQS-T2020 |  | Trial operation (maximum 45 days) - Al Qassim |  | 30d | 2028-06-29 | 2028-08-09 | NQS-T1020 | 283d | 0d | Contract cost (BOQ x payment milestones) [118962 SAR]; Progress weight (fair EPC distribution, SAR value) [97960 SAR] | 97,960 | NSR | NQS | NSR | Standard | TC | SAR | COM | - | - | COM | MS7 |
| NQS-T3010 |  | Taking-over application, SAR review and handover - Al Qassim |  | 15d | 2028-08-10 | 2028-08-30 | NQS-T1100, NQS-T2010, NQS-T2020, NQS-E1140 | 283d | 0d | Contract cost (BOQ x payment milestones) [101967 SAR]; Progress weight (fair EPC distribution, SAR value) [97960 SAR] | 97,960 | NSR | NQS | NSR | Standard | TC | SAR | COM | - | - | COM | MS7 |
|  | EHF | **Hufuf (EWR)** |  |  | 2028-05-31 | 2028-08-22 |  |  |  |  |  |  |  |  |  |  |  |  |  |  |  |  |
| EHF-T1100 |  | MS6 SAT complete (10%) - Hufuf | milestone | 0d | 2028-06-20 | 2028-06-20 | EHF-T1020 | 319d | 30d |  |  | EWR | EHF | EWR | Standard | TC | SAR | MS | - | - | MS | MS6 |
| EHF-T3100 |  | MS7 Station accepted - final acceptance and handover (10%) - Hufuf | milestone | 0d | 2028-08-22 | 2028-08-22 | EHF-T3010 | 289d | 267d |  |  | EWR | EHF | EWR | Standard | TC | SAR | MS | - | - | MS | MS7 |
|  | TST | **Testing and commissioning** |  |  | 2028-05-31 | 2028-06-20 |  |  |  |  |  |  |  |  |  |  |  |  |  |  |  |  |
| EHF-T1010 |  | Pre-commissioning and loop checks - Hufuf |  | 6d | 2028-05-31 | 2028-06-07 | EHF-C2100 | 289d | 0d | Contract cost (BOQ x payment milestones) [113140 SAR]; Progress weight (fair EPC distribution, SAR value) [81220 SAR] | 81,220 | EWR | EHF | EWR | Standard | TC | ETECHS | COM | - | - | COM | MS6 |
| EHF-T1020 |  | Site acceptance test (SAT) and commissioning - Hufuf |  | 9d | 2028-06-08 | 2028-06-20 | EHF-T1010 | 289d | 0d | Contract cost (BOQ x payment milestones) [169710 SAR]; Progress weight (fair EPC distribution, SAR value) [108500 SAR] | 108,500 | EWR | EHF | EWR | Standard | TC | ETECHS | COM | - | - | COM | MS6 |
|  | TRN | **Training** |  |  | 2028-06-21 | 2028-07-04 |  |  |  |  |  |  |  |  |  |  |  |  |  |  |  |  |
| EHF-T2010 |  | Operator and maintenance training - Hufuf |  | 10d | 2028-06-21 | 2028-07-04 | EHF-T1020 | 309d | 20d | Contract cost (BOQ x payment milestones) [42428 SAR]; Progress weight (fair EPC distribution, SAR value) [54560 SAR] | 54,560 | EWR | EHF | EWR | Standard | TC | ETECHS | COM | - | - | COM | MS7 |
|  | TOA | **Trial operation and acceptance** |  |  | 2028-06-21 | 2028-08-22 |  |  |  |  |  |  |  |  |  |  |  |  |  |  |  |  |
| EHF-T2020 |  | Trial operation (maximum 45 days) - Hufuf |  | 30d | 2028-06-21 | 2028-08-01 | EHF-T1020 | 289d | 0d | Contract cost (BOQ x payment milestones) [98998 SAR]; Progress weight (fair EPC distribution, SAR value) [81220 SAR] | 81,220 | EWR | EHF | EWR | Standard | TC | SAR | COM | - | - | COM | MS7 |
| EHF-T3010 |  | Taking-over application, SAR review and handover - Hufuf |  | 15d | 2028-08-02 | 2028-08-22 | EHF-T1100, EHF-T2010, EHF-T2020, EHF-E1140 | 289d | 0d | Contract cost (BOQ x payment milestones) [84855 SAR]; Progress weight (fair EPC distribution, SAR value) [81220 SAR] | 81,220 | EWR | EHF | EWR | Standard | TC | SAR | COM | - | - | COM | MS7 |
|  | NMJ | **Al Majma'ah (NSR)** |  |  | 2028-07-27 | 2028-10-18 |  |  |  |  |  |  |  |  |  |  |  |  |  |  |  |  |
| NMJ-T1100 |  | MS6 SAT complete (10%) - Al Majma'ah | milestone | 0d | 2028-08-16 | 2028-08-16 | NMJ-T1020 | 278d | 30d |  |  | NSR | NMJ | NSR | Standard | TC | SAR | MS | - | - | MS | MS6 |
| NMJ-T3100 |  | MS7 Station accepted - final acceptance and handover (10%) - Al Majma'ah | milestone | 0d | 2028-10-18 | 2028-10-18 | NMJ-T3010 | 248d | 226d |  |  | NSR | NMJ | NSR | Standard | TC | SAR | MS | - | - | MS | MS7 |
|  | TST | **Testing and commissioning** |  |  | 2028-07-27 | 2028-08-16 |  |  |  |  |  |  |  |  |  |  |  |  |  |  |  |  |
| NMJ-T1010 |  | Pre-commissioning and loop checks - Al Majma'ah |  | 6d | 2028-07-27 | 2028-08-03 | NMJ-C2100 | 248d | 0d | Contract cost (BOQ x payment milestones) [135957 SAR]; Progress weight (fair EPC distribution, SAR value) [97960 SAR] | 97,960 | NSR | NMJ | NSR | Standard | TC | ETECHS | COM | - | - | COM | MS6 |
| NMJ-T1020 |  | Site acceptance test (SAT) and commissioning - Al Majma'ah |  | 9d | 2028-08-06 | 2028-08-16 | NMJ-T1010 | 248d | 0d | Contract cost (BOQ x payment milestones) [203935 SAR]; Progress weight (fair EPC distribution, SAR value) [130820 SAR] | 130,820 | NSR | NMJ | NSR | Standard | TC | ETECHS | COM | - | - | COM | MS6 |
|  | TRN | **Training** |  |  | 2028-08-17 | 2028-08-30 |  |  |  |  |  |  |  |  |  |  |  |  |  |  |  |  |
| NMJ-T2010 |  | Operator and maintenance training - Al Majma'ah |  | 10d | 2028-08-17 | 2028-08-30 | NMJ-T1020 | 268d | 20d | Contract cost (BOQ x payment milestones) [50984 SAR]; Progress weight (fair EPC distribution, SAR value) [65100 SAR] | 65,100 | NSR | NMJ | NSR | Standard | TC | ETECHS | COM | - | - | COM | MS7 |

| ID | WBS | Activity | Type | Duration | Start | Finish | Predecessors | Total float | Free float | Resources | Cost | Area | Station | Railway | Priority | Discipline | Responsibility | EPC phase | Design stage | Submittal or approval | Programme phase | Payment milestone |
| --- | --- | --- | --- | --- | --- | --- | --- | --- | --- | --- | --- | --- | --- | --- | --- | --- | --- | --- | --- | --- | --- | --- |
|  | TOA | **Trial operation and acceptance** |  |  | 2028-08-17 | 2028-10-18 |  |  |  |  |  |  |  |  |  |  |  |  |  |  |  |  |
| NMJ-T2020 |  | Trial operation (maximum 45 days) - Al Majma'ah |  | 30d | 2028-08-17 | 2028-09-27 | NMJ-T1020 | 248d | 0d | Contract cost (BOQ x payment milestones) [118962 SAR]; Progress weight (fair EPC distribution, SAR value) [97960 SAR] | 97,960 | NSR | NMJ | NSR | Standard | TC | SAR | COM | - | - | COM | MS7 |
| NMJ-T3010 |  | Taking-over application, SAR review and handover - Al Majma'ah |  | 15d | 2028-09-28 | 2028-10-18 | NMJ-T1100, NMJ-T2010, NMJ-T2020, NMJ-E1140 | 248d | 0d | Contract cost (BOQ x payment milestones) [101967 SAR]; Progress weight (fair EPC distribution, SAR value) [97960 SAR] | 97,960 | NSR | NMJ | NSR | Standard | TC | SAR | COM | - | - | COM | MS7 |
|  | HKA | **KAEC (HHR)** |  |  | 2029-04-10 | 2029-07-23 |  |  |  |  |  |  |  |  |  |  |  |  |  |  |  |  |
| HKA-T1100 |  | MS6 SAT complete (10%) - KAEC | milestone | 0d | 2029-05-21 | 2029-05-21 | HKA-T1020 | 91d | 30d |  |  | HHR | HKA | HHR | Standard | TC | SAR | MS | - | - | MS | MS6 |
| HKA-T3100 |  | MS7 Station accepted - final acceptance and handover (10%) - KAEC | milestone | 0d | 2029-07-23 | 2029-07-23 | HKA-T3010 | 61d | 39d |  |  | HHR | HKA | HHR | Standard | TC | SAR | MS | - | - | MS | MS7 |
|  | TST | **Testing and commissioning** |  |  | 2029-04-10 | 2029-05-21 |  |  |  |  |  |  |  |  |  |  |  |  |  |  |  |  |
| HKA-T1010 |  | Pre-commissioning and loop checks - KAEC |  | 10d | 2029-04-10 | 2029-04-30 | HKA-C2100 | 61d | 0d | Contract cost (BOQ x payment milestones) [222575 SAR]; Progress weight (fair EPC distribution, SAR value) [159960 SAR] | 159,960 | HHR | HKA | HHR | Standard | TC | ETECHS | COM | - | - | COM | MS6 |
| HKA-T1020 |  | Site acceptance test (SAT) and commissioning - KAEC |  | 15d | 2029-05-01 | 2029-05-21 | HKA-T1010 | 61d | 0d | Contract cost (BOQ x payment milestones) [333863 SAR]; Progress weight (fair EPC distribution, SAR value) [213900 SAR] | 213,900 | HHR | HKA | HHR | Standard | TC | ETECHS | COM | - | - | COM | MS6 |
|  | TRN | **Training** |  |  | 2029-05-22 | 2029-06-04 |  |  |  |  |  |  |  |  |  |  |  |  |  |  |  |  |
| HKA-T2010 |  | Operator and maintenance training - KAEC |  | 10d | 2029-05-22 | 2029-06-04 | HKA-T1020 | 81d | 20d | Contract cost (BOQ x payment milestones) [83466 SAR]; Progress weight (fair EPC distribution, SAR value) [106640 SAR] | 106,640 | HHR | HKA | HHR | Standard | TC | ETECHS | COM | - | - | COM | MS7 |
|  | TOA | **Trial operation and acceptance** |  |  | 2029-05-22 | 2029-07-23 |  |  |  |  |  |  |  |  |  |  |  |  |  |  |  |  |
| HKA-T2020 |  | Trial operation (maximum 45 days) - KAEC |  | 30d | 2029-05-22 | 2029-07-02 | HKA-T1020 | 61d | 0d | Contract cost (BOQ x payment milestones) [194753 SAR]; Progress weight (fair EPC distribution, SAR value) [159960 SAR] | 159,960 | HHR | HKA | HHR | Standard | TC | SAR | COM | - | - | COM | MS7 |
| HKA-T3010 |  | Taking-over application, SAR review and handover - KAEC |  | 15d | 2029-07-03 | 2029-07-23 | HKA-T1100, HKA-T2010, HKA-T2020, HKA-E1140 | 61d | 0d | Contract cost (BOQ x payment milestones) [166931 SAR]; Progress weight (fair EPC distribution, SAR value) [159960 SAR] | 159,960 | HHR | HKA | HHR | Standard | TC | SAR | COM | - | - | COM | MS7 |
|  | HMD | **Madinah (HHR)** |  |  | 2029-04-16 | 2029-07-29 |  |  |  |  |  |  |  |  |  |  |  |  |  |  |  |  |
| HMD-T1100 |  | MS6 SAT complete (10%) - Madinah | milestone | 0d | 2029-05-27 | 2029-05-27 | HMD-T1020 | 87d | 30d |  |  | HHR | HMD | HHR | Standard | TC | SAR | MS | - | - | MS | MS6 |
| HMD-T3100 |  | MS7 Station accepted - final acceptance and handover (10%) - Madinah | milestone | 0d | 2029-07-29 | 2029-07-29 | HMD-T3010 | 57d | 35d |  |  | HHR | HMD | HHR | Standard | TC | SAR | MS | - | - | MS | MS7 |
|  | TST | **Testing and commissioning** |  |  | 2029-04-16 | 2029-05-27 |  |  |  |  |  |  |  |  |  |  |  |  |  |  |  |  |
| HMD-T1010 |  | Pre-commissioning and loop checks - Madinah |  | 10d | 2029-04-16 | 2029-05-06 | HMD-C2100 | 57d | 0d | Contract cost (BOQ x payment milestones) [222485 SAR]; Progress weight (fair EPC distribution, SAR value) [159960 SAR] | 159,960 | HHR | HMD | HHR | Standard | TC | ETECHS | COM | - | - | COM | MS6 |
| HMD-T1020 |  | Site acceptance test (SAT) and commissioning - Madinah |  | 15d | 2029-05-07 | 2029-05-27 | HMD-T1010 | 57d | 0d | Contract cost (BOQ x payment milestones) [333728 SAR]; Progress weight (fair EPC distribution, SAR value) [213280 SAR] | 213,280 | HHR | HMD | HHR | Standard | TC | ETECHS | COM | - | - | COM | MS6 |
|  | TRN | **Training** |  |  | 2029-05-28 | 2029-06-10 |  |  |  |  |  |  |  |  |  |  |  |  |  |  |  |  |
| HMD-T2010 |  | Operator and maintenance training - Madinah |  | 10d | 2029-05-28 | 2029-06-10 | HMD-T1020 | 77d | 20d | Contract cost (BOQ x payment milestones) [83432 SAR]; Progress weight (fair EPC distribution, SAR value) [106640 SAR] | 106,640 | HHR | HMD | HHR | Standard | TC | ETECHS | COM | - | - | COM | MS7 |
|  | TOA | **Trial operation and acceptance** |  |  | 2029-05-28 | 2029-07-29 |  |  |  |  |  |  |  |  |  |  |  |  |  |  |  |  |
| HMD-T2020 |  | Trial operation (maximum 45 days) - Madinah |  | 30d | 2029-05-28 | 2029-07-08 | HMD-T1020 | 57d | 0d | Contract cost (BOQ x payment milestones) [194675 SAR]; Progress weight (fair EPC distribution, SAR value) [159960 SAR] | 159,960 | HHR | HMD | HHR | Standard | TC | SAR | COM | - | - | COM | MS7 |
| HMD-T3010 |  | Taking-over application, SAR review and handover - Madinah |  | 15d | 2029-07-09 | 2029-07-29 | HMD-T1100, HMD-T2010, HMD-T2020, HMD-E1140 | 57d | 0d | Contract cost (BOQ x payment milestones) [166864 SAR]; Progress weight (fair EPC distribution, SAR value) [159960 SAR] | 159,960 | HHR | HMD | HHR | Standard | TC | SAR | COM | - | - | COM | MS7 |

| ID | WBS | Activity | Type | Duration | Start | Finish | Predecessors | Total float | Free float | Resources | Cost | Area | Station | Railway | Priority | EPC phase | Discipline | Responsibility | Design stage | Submittal or approval | Payment milestone | Programme phase |
| --- | --- | --- | --- | --- | --- | --- | --- | --- | --- | --- | --- | --- | --- | --- | --- | --- | --- | --- | --- | --- | --- | --- |
|  | EAB | **Abqaiq (EWR)** |  |  | 2028-12-31 | 2029-04-01 |  |  |  |  |  |  |  |  |  |  |  |  |  |  |  |  |
| EAB-T1100 |  | MS6 SAT complete (10%) - Abqaiq | milestone | 0d | 2029-01-18 | 2029-01-18 | EAB-T1020 | 167d | 30d |  |  | EWR | EAB | EWR | Standard | MS | TC | SAR | - | - | MS6 | MS |
| EAB-T3100 |  | MS7 Station accepted - final acceptance and handover (10%) - Abqaiq | milestone | 0d | 2029-04-01 | 2029-04-01 | EAB-T3010 | 137d | 115d |  |  | EWR | EAB | EWR | Standard | MS | TC | SAR | - | - | MS7 | MS |
|  | TST | **Testing and commissioning** |  |  | 2028-12-31 | 2029-01-18 |  |  |  |  |  |  |  |  |  |  |  |  |  |  |  |  |
| EAB-T1010 |  | Pre-commissioning and loop checks - Abqaiq |  | 6d | 2028-12-31 | 2029-01-07 | EAB-C2100 | 137d | 0d | Contract cost (BOQ x payment milestones) [80227 SAR]; Progress weight (fair EPC distribution, SAR value) [57660 SAR] | 57,660 | EWR | EAB | EWR | Standard | COM | TC | ETECHS | - | - | MS6 | COM |
| EAB-T1020 |  | Site acceptance test (SAT) and commissioning - Abqaiq |  | 9d | 2029-01-08 | 2029-01-18 | EAB-T1010 | 137d | 0d | Contract cost (BOQ x payment milestones) [120341 SAR]; Progress weight (fair EPC distribution, SAR value) [76880 SAR] | 76,880 | EWR | EAB | EWR | Standard | COM | TC | ETECHS | - | - | MS6 | COM |
|  | TRN | **Training** |  |  | 2029-01-21 | 2029-02-01 |  |  |  |  |  |  |  |  |  |  |  |  |  |  |  |  |
| EAB-T2010 |  | Operator and maintenance training - Abqaiq |  | 10d | 2029-01-21 | 2029-02-01 | EAB-T1020 | 157d | 20d | Contract cost (BOQ x payment milestones) [30085 SAR]; Progress weight (fair EPC distribution, SAR value) [38440 SAR] | 38,440 | EWR | EAB | EWR | Standard | COM | TC | ETECHS | - | - | MS7 | COM |
|  | TOA | **Trial operation and acceptance** |  |  | 2029-01-21 | 2029-04-01 |  |  |  |  |  |  |  |  |  |  |  |  |  |  |  |  |
| EAB-T2020 |  | Trial operation (maximum 45 days) - Abqaiq |  | 30d | 2029-01-21 | 2029-03-11 | EAB-T1020 | 137d | 0d | Contract cost (BOQ x payment milestones) [70199 SAR]; Progress weight (fair EPC distribution, SAR value) [57660 SAR] | 57,660 | EWR | EAB | EWR | Standard | COM | TC | SAR | - | - | MS7 | COM |
| EAB-T3010 |  | Taking-over application, SAR review and handover - Abqaiq |  | 15d | 2029-03-12 | 2029-04-01 | EAB-T1100, EAB-T2010, EAB-T2020, EAB-E1140 | 137d | 0d | Contract cost (BOQ x payment milestones) [60170 SAR]; Progress weight (fair EPC distribution, SAR value) [57660 SAR] | 57,660 | EWR | EAB | EWR | Standard | COM | TC | SAR | - | - | MS7 | COM |
|  | NHL | **Hail (NSR)** |  |  | 2029-02-07 | 2029-05-16 |  |  |  |  |  |  |  |  |  |  |  |  |  |  |  |  |
| NHL-T1100 |  | MS6 SAT complete (10%) - Hail | milestone | 0d | 2029-03-07 | 2029-03-07 | NHL-T1020 | 139d | 30d |  |  | NSR | NHL | NSR | Standard | MS | TC | SAR | - | - | MS6 | MS |
| NHL-T3100 |  | MS7 Station accepted - final acceptance and handover (10%) - Hail | milestone | 0d | 2029-05-16 | 2029-05-16 | NHL-T3010 | 109d | 87d |  |  | NSR | NHL | NSR | Standard | MS | TC | SAR | - | - | MS7 | MS |
|  | TST | **Testing and commissioning** |  |  | 2029-02-07 | 2029-03-07 |  |  |  |  |  |  |  |  |  |  |  |  |  |  |  |  |
| NHL-T1010 |  | Pre-commissioning and loop checks - Hail |  | 6d | 2029-02-07 | 2029-02-21 | NHL-C2100 | 109d | 0d | Contract cost (BOQ x payment milestones) [135957 SAR]; Progress weight (fair EPC distribution, SAR value) [97960 SAR] | 97,960 | NSR | NHL | NSR | Standard | COM | TC | ETECHS | - | - | MS6 | COM |
| NHL-T1020 |  | Site acceptance test (SAT) and commissioning - Hail |  | 9d | 2029-02-25 | 2029-03-07 | NHL-T1010 | 109d | 0d | Contract cost (BOQ x payment milestones) [203935 SAR]; Progress weight (fair EPC distribution, SAR value) [130820 SAR] | 130,820 | NSR | NHL | NSR | Standard | COM | TC | ETECHS | - | - | MS6 | COM |
|  | TRN | **Training** |  |  | 2029-03-08 | 2029-03-21 |  |  |  |  |  |  |  |  |  |  |  |  |  |  |  |  |
| NHL-T2010 |  | Operator and maintenance training - Hail |  | 10d | 2029-03-08 | 2029-03-21 | NHL-T1020 | 129d | 20d | Contract cost (BOQ x payment milestones) [50984 SAR]; Progress weight (fair EPC distribution, SAR value) [65100 SAR] | 65,100 | NSR | NHL | NSR | Standard | COM | TC | ETECHS | - | - | MS7 | COM |
|  | TOA | **Trial operation and acceptance** |  |  | 2029-03-08 | 2029-05-16 |  |  |  |  |  |  |  |  |  |  |  |  |  |  |  |  |
| NHL-T2020 |  | Trial operation (maximum 45 days) - Hail |  | 30d | 2029-03-08 | 2029-04-18 | NHL-T1020 | 109d | 0d | Contract cost (BOQ x payment milestones) [118962 SAR]; Progress weight (fair EPC distribution, SAR value) [97960 SAR] | 97,960 | NSR | NHL | NSR | Standard | COM | TC | SAR | - | - | MS7 | COM |
| NHL-T3010 |  | Taking-over application, SAR review and handover - Hail |  | 15d | 2029-04-19 | 2029-05-16 | NHL-T1100, NHL-T2010, NHL-T2020, NHL-E1140 | 109d | 0d | Contract cost (BOQ x payment milestones) [101967 SAR]; Progress weight (fair EPC distribution, SAR value) [97960 SAR] | 97,960 | NSR | NHL | NSR | Standard | COM | TC | SAR | - | - | MS7 | COM |
|  | NJF | **Al Jouf (NSR)** |  |  | 2029-05-07 | 2029-07-29 |  |  |  |  |  |  |  |  |  |  |  |  |  |  |  |  |
| NJF-T1100 |  | MS6 SAT complete (10%) - Al Jouf | milestone | 0d | 2029-05-27 | 2029-05-27 | NJF-T1020 | 87d | 30d |  |  | NSR | NJF | NSR | Standard | MS | TC | SAR | - | - | MS6 | MS |
| NJF-T3100 |  | MS7 Station accepted - final acceptance and handover (10%) - Al Jouf | milestone | 0d | 2029-07-29 | 2029-07-29 | NJF-T3010 | 57d | 35d |  |  | NSR | NJF | NSR | Standard | MS | TC | SAR | - | - | MS7 | MS |

| ID | WBS | Activity | Type | Duration | Start | Finish | Predecessors | Total float | Free float | Resources | Cost | Area | Station | Railway | Priority | Discipline | Responsibility | EPC phase | Design stage | Submittal or approval | Programme phase | Payment milestone |
| --- | --- | --- | --- | --- | --- | --- | --- | --- | --- | --- | --- | --- | --- | --- | --- | --- | --- | --- | --- | --- | --- | --- |
|  | TST | **Testing and commissioning** |  |  | 2029-05-07 | 2029-05-27 |  |  |  |  |  |  |  |  |  |  |  |  |  |  |  |  |
| NJF-T1010 |  | Pre-commissioning and loop checks - Al Jouf |  | 6d | 2029-05-07 | 2029-05-14 | NJF-C2100 | 57d | 0d | Contract cost (BOQ x payment milestones) [136914 SAR]; Progress weight (fair EPC distribution, SAR value) [98580 SAR] | 98,580 | NSR | NJF | NSR | Standard | TC | ETECHS | COM | - | - | COM | MS6 |
| NJF-T1020 |  | Site acceptance test (SAT) and commissioning - Al Jouf |  | 9d | 2029-05-15 | 2029-05-27 | NJF-T1010 | 57d | 0d | Contract cost (BOQ x payment milestones) [205371 SAR]; Progress weight (fair EPC distribution, SAR value) [131440 SAR] | 131,440 | NSR | NJF | NSR | Standard | TC | ETECHS | COM | - | - | COM | MS6 |
|  | TRN | **Training** |  |  | 2029-05-28 | 2029-06-10 |  |  |  |  |  |  |  |  |  |  |  |  |  |  |  |  |
| NJF-T2010 |  | Operator and maintenance training - Al Jouf |  | 10d | 2029-05-28 | 2029-06-10 | NJF-T1020 | 77d | 20d | Contract cost (BOQ x payment milestones) [51343 SAR]; Progress weight (fair EPC distribution, SAR value) [65720 SAR] | 65,720 | NSR | NJF | NSR | Standard | TC | ETECHS | COM | - | - | COM | MS7 |
|  | TOA | **Trial operation and acceptance** |  |  | 2029-05-28 | 2029-07-29 |  |  |  |  |  |  |  |  |  |  |  |  |  |  |  |  |
| NJF-T2020 |  | Trial operation (maximum 45 days) - Al Jouf |  | 30d | 2029-05-28 | 2029-07-08 | NJF-T1020 | 57d | 0d | Contract cost (BOQ x payment milestones) [119800 SAR]; Progress weight (fair EPC distribution, SAR value) [98580 SAR] | 98,580 | NSR | NJF | NSR | Standard | TC | SAR | COM | - | - | COM | MS7 |
| NJF-T3010 |  | Taking-over application, SAR review and handover - Al Jouf |  | 15d | 2029-07-09 | 2029-07-29 | NJF-T1100, NJF-T2010, NJF-T2020, NJF-E1140 | 57d | 0d | Contract cost (BOQ x payment milestones) [102685 SAR]; Progress weight (fair EPC distribution, SAR value) [98580 SAR] | 98,580 | NSR | NJF | NSR | Standard | TC | SAR | COM | - | - | COM | MS7 |
|  | NQR | **Al Qurayyat (NSR)** |  |  | 2029-06-25 | 2029-09-16 |  |  |  |  |  |  |  |  |  |  |  |  |  |  |  |  |
| NQR-T1100 |  | MS6 SAT complete (10%) - Al Qurayyat | milestone | 0d | 2029-07-15 | 2029-07-15 | NQR-T1020 | 52d | 30d |  |  | NSR | NQR | NSR | Standard | TC | SAR | MS | - | - | MS | MS6 |
| NQR-T3100 |  | MS7 Station accepted - final acceptance and handover (10%) - Al Qurayyat | milestone | 0d | 2029-09-16 | 2029-09-16 | NQR-T3010 | 22d | 0d |  |  | NSR | NQR | NSR | Standard | TC | SAR | MS | - | - | MS | MS7 |
|  | TST | **Testing and commissioning** |  |  | 2029-06-25 | 2029-07-15 |  |  |  |  |  |  |  |  |  |  |  |  |  |  |  |  |
| NQR-T1010 |  | Pre-commissioning and loop checks - Al Qurayyat |  | 6d | 2029-06-25 | 2029-07-02 | NQR-C2100 | 22d | 0d | Contract cost (BOQ x payment milestones) [135957 SAR]; Progress weight (fair EPC distribution, SAR value) [97960 SAR] | 97,960 | NSR | NQR | NSR | Standard | TC | ETECHS | COM | - | - | COM | MS6 |
| NQR-T1020 |  | Site acceptance test (SAT) and commissioning - Al Qurayyat |  | 9d | 2029-07-03 | 2029-07-15 | NQR-T1010 | 22d | 0d | Contract cost (BOQ x payment milestones) [203935 SAR]; Progress weight (fair EPC distribution, SAR value) [130820 SAR] | 130,820 | NSR | NQR | NSR | Standard | TC | ETECHS | COM | - | - | COM | MS6 |
|  | TRN | **Training** |  |  | 2029-07-16 | 2029-07-29 |  |  |  |  |  |  |  |  |  |  |  |  |  |  |  |  |
| NQR-T2010 |  | Operator and maintenance training - Al Qurayyat |  | 10d | 2029-07-16 | 2029-07-29 | NQR-T1020 | 42d | 20d | Contract cost (BOQ x payment milestones) [50984 SAR]; Progress weight (fair EPC distribution, SAR value) [65100 SAR] | 65,100 | NSR | NQR | NSR | Standard | TC | ETECHS | COM | - | - | COM | MS7 |
|  | TOA | **Trial operation and acceptance** |  |  | 2029-07-16 | 2029-09-16 |  |  |  |  |  |  |  |  |  |  |  |  |  |  |  |  |
| NQR-T2020 |  | Trial operation (maximum 45 days) - Al Qurayyat |  | 30d | 2029-07-16 | 2029-08-26 | NQR-T1020 | 22d | 0d | Contract cost (BOQ x payment milestones) [118962 SAR]; Progress weight (fair EPC distribution, SAR value) [97960 SAR] | 97,960 | NSR | NQR | NSR | Standard | TC | SAR | COM | - | - | COM | MS7 |
| NQR-T3010 |  | Taking-over application, SAR review and handover - Al Qurayyat |  | 15d | 2029-08-27 | 2029-09-16 | NQR-T1100, NQR-T2010, NQR-T2020, NQR-E1140 | 22d | 0d | Contract cost (BOQ x payment milestones) [101967 SAR]; Progress weight (fair EPC distribution, SAR value) [97960 SAR] | 97,960 | NSR | NQR | NSR | Standard | TC | SAR | COM | - | - | COM | MS7 |

## Activity codes

| Code | Value | Meaning |
| --- | --- | --- |
| Area | PRJ | Project level |
| Design stage | - | Not a design stage |
| Design stage | As-built | As-built and O&M |
| Design stage | Concept | Concept design |
| Design stage | Detailed | Detailed design |
| Design stage | HCIS | HCIS documentation |
| Design stage | IFC | IFC and shop drawings |
| Design stage | POC | Proof of concept |
| Design stage | Preliminary | Preliminary design |
| Design stage | Survey | Site survey |
| Discipline | ACC | Access control and intercom |
| Discipline | CCTV | CCTV system |
| Discipline | CIVIL | Civil works |
| Discipline | DOCS | Design documentation |
| Discipline | PM | Project management and logistics |
| Discipline | TC | Testing, commissioning and handover |
| Discipline | UPSNET | UPS, network and cabinets |
| Discipline | VMS | Video management and wall |
| EPC phase | COM | Commissioning and handover |
| EPC phase | CON | Construction |
| EPC phase | ENG | Engineering |
| EPC phase | MS | Milestone |
| EPC phase | PMG | Project management |
| EPC phase | PRO | Procurement |
| Payment milestone | - | Not a payment milestone |
| Payment milestone | MS1 | MS1 Mobilization |
| Payment milestone | MS2 | MS2 Engineering submittal |
| Payment milestone | MS3 | MS3 SAR approval of engineering |
| Payment milestone | MS4 | MS4 Material delivery |
| Payment milestone | MS5 | MS5 Installation |
| Payment milestone | MS6 | MS6 Testing and commissioning (SAT) |
| Payment milestone | MS7 | MS7 Final acceptance and handover |
| Priority | Priority 1 | Priority 1 - Makkah and Riyadh (Thumamah) |
| Priority | Priority 2 | Priority 2 - Riyadh (Malaz) |
| Programme phase | COM | Testing, commissioning and handover |
| Programme phase | CON | Construction and installation |
| Programme phase | DES | Design (months 3-6) |
| Programme phase | ENA | Enabling works |
| Programme phase | MOB | Mobilization and site survey (months 1-2) |
| Programme phase | MS | Milestones |
| Programme phase | PMG | Project management and closeout |
| Programme phase | POC | Proof of concept - Riyadh (Thumamah) |
| Programme phase | PRO | Procurement and supply |
| Railway | ALL | All railways |
| Responsibility | SAR/HCIS | SAR and HCIS |
| Station | EAB | Abqaiq (EWR) |
| Station | EDM | Dammam (EWR) |
| Station | EHF | Hufuf (EWR) |
| Station | ERY | Riyadh (Malaz) (EWR) |
| Station | HJD | Jeddah (HHR) |
| Station | HKA | KAEC (HHR) |
| Station | HMD | Madinah (HHR) |
| Station | HMK | Makkah (HHR) |
| Station | NHL | Hail (NSR) |
| Station | NJF | Al Jouf (NSR) |
| Station | NMJ | Al Majma'ah (NSR) |
| Station | NQR | Al Qurayyat (NSR) |
| Station | NQS | Al Qassim (NSR) |
| Station | NRY | Riyadh (Thumamah) (NSR) |
| Station | PRJ | Project level |
| Submittal or approval | - | Not applicable |
